Schedule from MS Project, 2016-03-01 to 2016-05-16.
Microsoft

## Calendars

- 标准: Mon-Fri 08:00-12:00, 13:00-17:00; Sat-Sun off.

## Resources

| Resource |
| --- |
| 部门领导 |
| 项目经理 |
| PMO |
| 商务经理 |
| 产品经理 |
| 研发经理 |
| 项目团队 |
| 客户 |
| 销售经理 |
| 采购专员 |
| 供应商 |
| 研发项目经理 |
| 测试经理 |
| 运维经理 |
| 运维 |
| 产品 |
| 实施 |
| 实施项目经理 |

## Schedule

| ID | WBS | Task | Type | Duration | Start | Finish | Predecessors | Total slack | Resources | Work |
| --- | --- | --- | --- | --- | --- | --- | --- | --- | --- | --- |
| 1 | 1 | 【重要，请看备注】填写规范 |  | 1d? | 2016-03-01 | 2016-03-02 |  | 53d |  |  |
| 2 | 2 | **项目启动** |  | 2d | 2016-03-01 | 2016-03-03 |  | 0d |  | 40h |
| 3 | 2.1 | 项目经理任命 |  | 1d | 2016-03-01 | 2016-03-02 |  | 0d | 部门领导 | 8h |
| 4 | 2.2 | 项目交底会 | milestone | 1d | 2016-03-02 | 2016-03-03 | 3 | 0d | 项目经理; 商务经理; 产品经理; 研发经理 | 32h |
| 5 | 3 | **项目策划** |  | 5d | 2016-03-03 | 2016-03-10 | 2 | 0d |  | 40h |
| 6 | 3.1 | 编制实施进度计划表 |  | 1d | 2016-03-03 | 2016-03-04 |  | 0d | 实施项目经理 | 8h |
| 7 | 3.2 | 干系人一览表更新 |  | 1d | 2016-03-04 | 2016-03-07 | 6 | 0d | 实施项目经理 | 8h |
| 8 | 3.3 | 编制项目风险识别与跟踪表 |  | 1d | 2016-03-07 | 2016-03-08 | 7 | 0d | 实施项目经理 | 8h |
| 9 | 3.4 | 编制项目预算 |  | 1d | 2016-03-08 | 2016-03-09 | 8 | 0d | 实施项目经理 | 8h |
| 10 | 3.5 | 项目实施进度计划审核 |  | 1d | 2016-03-09 | 2016-03-10 | 9 | 0d | PMO | 8h |
| 11 | 4 | **项目执行** |  | 40d | 2016-03-10 | 2016-05-05 | 5 | 0d |  | 448h |
| 12 | 4.1 | 项目现场启动会 | milestone | 1d | 2016-03-10 | 2016-03-11 |  | 0d | 项目团队; 客户; 销售经理 | 24h |
| 13 | 4.2 | **项目现场需求调研** |  | 2d | 2016-03-11 | 2016-03-15 | 12 |  |  | 24h |
| 14 | 4.2.1 | 需求调研计划 |  | 1d | 2016-03-11 | 2016-03-14 |  | 0d | 项目团队; 客户 | 16h |
| 15 | 4.2.2 | 需求调研总结 | milestone | 1d | 2016-03-14 | 2016-03-15 | 14 | 0d | 项目经理 | 8h |
| 16 | 4.3 | **项目采购** |  | 4d | 2016-03-15 | 2016-03-21 | 13 | 0d |  | 32h |
| 17 | 4.3.1 | 编制项目采购预算表 |  | 1d | 2016-03-15 | 2016-03-16 |  | 0d | 实施项目经理 | 8h |
| 18 | 4.3.2 | 编写项目申购单 |  | 1d | 2016-03-16 | 2016-03-17 | 17 | 0d | 实施项目经理 | 8h |
| 19 | 4.3.3 | 采购执行过程 |  | 1d | 2016-03-17 | 2016-03-18 | 18 | 0d | 采购专员 | 8h |
| 20 | 4.3.4 | 货到签收 | milestone | 1d | 2016-03-18 | 2016-03-21 | 19 | 0d | 实施项目经理 | 8h |
| 21 | 4.4 | **硬件实施** |  | 3d | 2016-03-21 | 2016-03-24 | 16 | 0d |  | 40h |
| 22 | 4.4.1 | 硬件安装、调试 |  | 1d | 2016-03-21 | 2016-03-22 |  | 0d | 实施项目经理; 供应商 | 16h |
| 23 | 4.4.2 | 硬件培训 |  | 1d | 2016-03-22 | 2016-03-23 | 22 | 0d | 供应商 | 8h |
| 24 | 4.4.3 | 硬件资料移交 |  | 1d | 2016-03-23 | 2016-03-24 | 23 | 0d | 实施项目经理; 客户 | 16h |

Notes:
- 1: 里程碑设计规则，从连个维度设置： / （1）时间维度：一个月项目不少于3个里程碑，两个月项目不少6个里程碑，三个月项目不少于9个里程碑，以此类推。 / （2）重要性维度：阶段性任务、项目交底会、结项、验收等关键性任务设置为里程碑。
- 4: 售前方案、投标方案、客户干系人信息、合同、GTA_QD_04-项目内部启动会议纪要
- 6: GTA_CH_01-项目实施进度计划表
- 7: GTA_CH_03-项目干系人一览表
- 8: GTA_CH_03-项目风险识别与跟踪表
- 9: 在财务在线编写
- 12: GTA_SS_01-项目启动会议纪要
- 13: GTA_SS_13-需求调研计划、GTA_SS_14-需求调研总结报告
- 14: GTA_SS_13-需求调研计划
- 15: GTA_SS_14-需求调研总结报告
- 17: GTA_CH_05-采购项目预算表
- 20: GTA_SS_03-项目货到签收确认单
- 23: GTA_SS_05-培训方案、GTA_SS_06-培训总结报告
- 24: 用户手册、质保书、硬件IP清单

| ID | WBS | Task | Type | Duration | Start | Finish | Predecessors | Total slack | Resources | Work |
| --- | --- | --- | --- | --- | --- | --- | --- | --- | --- | --- |
| 25 | 4.5 | **软件实施** |  | 30d | 2016-03-24 | 2016-05-05 | 21 | 0d |  | 328h |
| 26 | 4.5.1 | 学校基础硬件环境准备 |  | 1d | 2016-03-24 | 2016-03-25 |  | 0d | 实施项目经理 | 8h |
| 27 | 4.5.2 | **基础数据收集** |  | 3d | 2016-03-25 | 2016-03-30 | 26 |  |  | 40h |
| 28 | 4.5.2.1 | log\版权信息\友情链接 |  | 1d | 2016-03-25 | 2016-03-28 |  | 0d | 实施项目经理 | 8h |
| 29 | 4.5.2.2 | 软件基础数据收集 |  | 1d | 2016-03-28 | 2016-03-29 | 28 | 0d | 客户; 实施项目经理 | 16h |
| 30 | 4.5.2.3 | 软件业务数据收集 |  | 1d | 2016-03-29 | 2016-03-30 | 29 | 0d | 客户; 实施项目经理 | 16h |
| 31 | 4.5.3 | **软件出库** |  | 4d | 2016-03-30 | 2016-04-05 | 27 | 0d |  | 48h |
| 32 | 4.5.3.1 | 软件测试 |  | 1d | 2016-03-30 | 2016-03-31 |  | 0d | 测试经理 | 8h |
| 33 | 4.5.3.2 | 测试准出 |  | 1d | 2016-03-31 | 2016-04-01 | 32 | 0d | 测试经理 | 8h |
| 34 | 4.5.3.3 | 运维QA部署及检查 |  | 1d | 2016-04-01 | 2016-04-04 | 33 | 0d | 运维经理 | 8h |
| 35 | 4.5.3.4 | QA准出,运维提供安装包 |  | 1d | 2016-04-04 | 2016-04-05 | 34 | 0d | 运维经理; 产品经理; 实施项目经理 | 24h |
| 36 | 4.5.4 | **软件部署** |  | 5d | 2016-04-05 | 2016-04-12 | 31 | 0d |  | 40h |
| 37 | 4.5.4.1 | 部署服务器基础环境安装 |  | 1d | 2016-04-05 | 2016-04-06 |  | 0d | 实施项目经理 | 8h |
| 38 | 4.5.4.2 | 软件部署 |  | 1d | 2016-04-06 | 2016-04-07 | 37 | 0d | 实施项目经理 | 8h |
| 39 | 4.5.4.3 | 基础数据初始化 |  | 1d | 2016-04-07 | 2016-04-08 | 38 | 0d | 实施项目经理 | 8h |
| 40 | 4.5.4.4 | 业务数据初始化 |  | 1d | 2016-04-08 | 2016-04-11 | 39 | 0d | 实施项目经理 | 8h |
| 41 | 4.5.4.5 | 软件调试 |  | 1d | 2016-04-11 | 2016-04-12 | 40 | 0d | 实施项目经理 | 8h |
| 42 | 4.5.5 | **软件培训** |  | 4d | 2016-04-12 | 2016-04-18 | 36 | 0d |  | 48h |
| 43 | 4.5.5.1 | 编写培训方案 |  | 1d | 2016-04-12 | 2016-04-13 |  | 0d | 实施项目经理 | 8h |
| 44 | 4.5.5.2 | 培训方案交予客户确认 |  | 1d | 2016-04-13 | 2016-04-14 | 43 | 0d | 实施项目经理; 客户 | 16h |
| 45 | 4.5.5.3 | 培训开展 |  | 1d | 2016-04-14 | 2016-04-15 | 44 | 0d | 实施项目经理 | 8h |
| 46 | 4.5.5.4 | 培训总结 | milestone | 1d | 2016-04-15 | 2016-04-18 | 45 | 0d | 实施项目经理; 客户 | 16h |
| 47 | 4.5.6 | **软件个性化开发** |  | 13d | 2016-04-18 | 2016-05-05 | 42 | 0d |  | 144h |
| 48 | 4.5.6.1 | 个性化需求收集、整理、签字确认 |  | 1d | 2016-04-18 | 2016-04-19 |  | 0d | 项目经理; 产品经理 | 16h |
| 49 | 4.5.6.2 | 产品需求梳理、原型设计 |  | 1d | 2016-04-19 | 2016-04-20 | 48 | 0d | 产品经理 | 8h |
| 50 | 4.5.6.3 | 需求、开发时间评审 |  | 1d | 2016-04-20 | 2016-04-21 | 49 | 0d | 研发项目经理 | 8h |
| 51 | 4.5.6.4 | 个性化功能开发 |  | 1d | 2016-04-21 | 2016-04-22 | 50 | 0d | 研发项目经理 | 8h |
| 52 | 4.5.6.5 | 个性化功能测试 |  | 1d | 2016-04-22 | 2016-04-25 | 51 | 0d | 测试经理 | 8h |
| 53 | 4.5.6.6 | 个性化功能测试准出 |  | 1d | 2016-04-25 | 2016-04-26 | 52 | 0d | 测试经理 | 8h |
| 54 | 4.5.6.7 | QA准出,运维提供更新安装包 |  | 1d | 2016-04-26 | 2016-04-27 | 53 | 0d | 运维经理; 产品经理; 实施项目经理 | 24h |
| 55 | 4.5.6.8 | 更新补丁包至现场环境 |  | 1d | 2016-04-27 | 2016-04-28 | 54 | 0d | 实施项目经理 | 8h |
| 56 | 4.5.6.9 | 个性化功能验收确认 |  | 1d | 2016-04-28 | 2016-04-29 | 55 | 0d | 实施项目经理; 客户 | 16h |
| 57 | 4.5.6.10 | 编写培训方案 |  | 1d | 2016-04-29 | 2016-05-02 | 56 | 0d | 实施项目经理 | 8h |
| 58 | 4.5.6.11 | 培训方案交予客户确认 |  | 1d | 2016-05-02 | 2016-05-03 | 57 | 0d | 实施项目经理 | 8h |
| 59 | 4.5.6.12 | 培训开展 |  | 1d | 2016-05-03 | 2016-05-04 | 58 | 0d | 实施项目经理; 客户 | 16h |
| 60 | 4.5.6.13 | 培训总结 |  | 1d | 2016-05-04 | 2016-05-05 | 59 | 0d | 实施项目经理 | 8h |

Notes:
- 26: 服务器信息、网络信息
- 28: log版权信息友情链接
- 29: 组织架构、教师、学生、专业等
- 30: 子系统业务数据：OA工作流、课程、宿舍、教室信息等
- 33: 测试准出报告
- 34: QA访问地址
- 35: QA准出报告
- 37: IIS
- 38: 软件部署清单
- 41: 基础信息检查、业务系统调试
- 43: GTA_SS_05-培训方案
- 45: 培训签到表
- 46: GTA_SS_06-培训总结报告
- 48: 需求文档
- 49: 产品需求说明书、原型设计
- 50: 开发、测试时间计划表
- 53: 测试准出报告
- 54: QA准出报告
- 57: GTA_SS_05-培训方案
- 59: 培训签到表
- 60: GTA_SS_06-培训总结报告

| ID | WBS | Task | Type | Duration | Start | Finish | Predecessors | Total slack | Resources | Work |
| --- | --- | --- | --- | --- | --- | --- | --- | --- | --- | --- |
| 61 | 5 | **项目验收** |  | 7d | 2016-05-05 | 2016-05-16 | 11 | 0d |  | 56h |
| 62 | 5.1 | 项目自检 |  | 1d | 2016-05-05 | 2016-05-06 |  | 0d | 实施项目经理 | 8h |
| 63 | 5.2 | 编写验收议程 |  | 1d | 2016-05-06 | 2016-05-09 | 62 | 0d | 实施项目经理 | 8h |
| 64 | 5.3 | 验收议程客户确认 |  | 1d | 2016-05-09 | 2016-05-10 | 63 | 0d | 实施项目经理; 客户 | 16h |
| 65 | 5.4 | 项目资料整理、装订 |  | 1d | 2016-05-10 | 2016-05-11 | 64 | 0d | 实施项目经理 | 8h |
| 66 | 5.5 | 验收报告签署 | milestone | 1d | 2016-05-11 | 2016-05-12 | 65 | 0d |  |  |
| 67 | 5.6 | **项目内部结项** |  | 2d | 2016-05-12 | 2016-05-16 | 66 | 0d |  | 16h |
| 68 | 5.6.1 | 编写项目总结报告 |  | 1d | 2016-05-12 | 2016-05-13 |  | 0d | 实施项目经理 | 8h |
| 69 | 5.6.2 | 项目管理过程文档、交付资料上传SVN库 |  | 1d | 2016-05-13 | 2016-05-16 | 68 | 0d | 实施项目经理 | 8h |

Notes:
- 63: GTA_SW_01-验收会议议程表
- 65: 需要交付的物料参考：项目交付佐证物料清单
- 66: GTA_SW_03-验收报告
- 68: GTA_SW_05-项目内部结项总结汇报
