# 国泰安高校智慧教务管理平台V1.0R3_项目日程表

Schedule from MS Project, 2018-03-30 to 2018-09-28, status date 2018-09-30, costs in ¥, A marks actual dates.

## Calendars

- 标准: Mon-Fri 08:00-12:00, 13:00-17:00; Sat-Sun off. Exceptions (off unless hours are given): 2018-04-05 to 2018-04-07 (清明放假), 2018-04-08 08:00-12:00, 13:00-17:00 (清明工作日调整), 2018-04-28 08:00-12:00, 13:00-17:00 (五一工作日调整), 2018-04-29 to 2018-05-01 (五一放假), 2018-06-16 to 2018-06-18 (端午节放假), 2018-09-22 to 2018-09-24 (中秋节放假).

## Resources

| Resource | Rate |
| --- | --- |
| 章景 | 50 |
| 潘文彬 | 50 |
| 张银 | 50 |
| 吴赛清 | 50 |
| 丁迅 | 50 |
| 甘旺 | 50 |
| 李淑贞 | 50 |
| 陈敏兰 | 50 |
| 刘康平 | 50 |
| 黄荣 | 50 |
| 陈新添 | 50 |
| 张莉 | 50 |
| 王煜卿 | 50 |
| 金灼 | 50 |
| 伍斌 | 50 |
| 王平刚 | 50 |
| 张伍超 | 50 |
| 何鑫华 | 50 |
| 郑益涛 | 50 |
| 黄玲俐 | 50 |
| 刘雄 | 50 |
| 陈巧美 | 50 |
| 陈冬冬 | 50 |
| 袁小明 | 50 |
| 张建宇 | 50 |
| 李宇 | 50 |
| 苏希 | 50 |
| 让小侠 | 50 |
| 梁新飞 | 50 |
| 阳杰 | 50 |
| 易程亮 | 50 |
| 欧鹏 | 50 |
| 陈李好 | 50 |
| 郑建锋 | 50 |
| 罗群 | 50 |
| 曹翔 | 50 |
| 彭绍娣 | 50 |
| 黄少莲 | 50 |

## Schedule

| ID | WBS | Task | Duration | Start | Finish | Predecessors | Complete | Baseline start | Baseline finish | Baseline duration | Constraint | Resources | Work | Actual work | Cost | Baseline cost | Actual cost |
| --- | --- | --- | --- | --- | --- | --- | --- | --- | --- | --- | --- | --- | --- | --- | --- | --- | --- |
| 1 | 1 | **国泰安智慧教务管理平台V1.5** | 126.5d | 2018-03-30 08:00 A | 2018-09-28 12:00 A |  | 100% | 2018-03-30 08:00 | 2018-09-28 12:00 | 126.5d |  |  | 8232h | 8232h | 411,600 | 411,600 | 411,600 |
| 2 | 1.1 | **项目立项阶段** | 14d | 2018-03-30 08:00 A | 2018-04-19 17:00 A |  | 100% | 2018-03-30 08:00 | 2018-04-19 17:00 | 14d |  |  | 368h | 368h | 18,400 | 18,400 | 18,400 |
| 3 | 1.1.1 | 提交研发立项 | 1d | 2018-03-30 08:00 A | 2018-03-30 17:00 A |  | 100% | 2018-03-30 08:00 | 2018-03-30 17:00 | 1d |  | 张银 | 8h | 8h | 400 | 400 | 400 |
| 4 | 1.1.2 | 项目立项审批 | 3d | 2018-04-02 08:00 A | 2018-04-04 17:00 A | 3 | 100% | 2018-04-02 08:00 | 2018-04-04 17:00 | 3d |  | 张银 | 24h | 24h | 1,200 | 1,200 | 1,200 |
| 5 | 1.1.3 | 组建项目团队 | 1d | 2018-04-08 08:00 A | 2018-04-08 17:00 A | 4 | 100% | 2018-04-08 08:00 | 2018-04-08 17:00 | 1d |  | 张银 | 8h | 8h | 400 | 400 | 400 |
| 6 | 1.1.4 | 《流程配置表》编制、评审 | 2d | 2018-04-09 08:00 A | 2018-04-10 17:00 A | 5 | 100% | 2018-04-09 08:00 | 2018-04-10 17:00 | 2d |  | 张银; 金灼 | 32h | 32h | 1,600 | 1,600 | 1,600 |
| 7 | 1.1.5 | 度量目标预测 | 1d | 2018-04-10 08:00 A | 2018-04-10 17:00 A |  | 100% | 2018-04-10 08:00 | 2018-04-10 17:00 | 1d |  | 张银 | 8h | 8h | 400 | 400 | 400 |
| 8 | 1.1.6 | 初始化项目配置库 | 1d | 2018-04-10 08:00 A | 2018-04-10 17:00 A | 6 | 100% | 2018-04-10 08:00 | 2018-04-10 17:00 | 1d |  | 吴赛清 | 8h | 8h | 400 | 400 | 400 |
| 9 | 1.1.7 | 编写《配置项识别表》 | 1d | 2018-04-11 08:00 A | 2018-04-11 17:00 A | 8 | 100% | 2018-04-11 08:00 | 2018-04-11 17:00 | 1d |  | 吴赛清 | 8h | 8h | 400 | 400 | 400 |
| 10 | 1.1.8 | 编写《项目启动会PPT》 | 1d | 2018-04-11 08:00 A | 2018-04-11 17:00 A | 6 | 100% | 2018-04-11 08:00 | 2018-04-11 17:00 | 1d |  | 张银 | 8h | 8h | 400 | 400 | 400 |
| 11 | 1.1.9 | 编写《项目计划书》 | 1d | 2018-04-12 08:00 A | 2018-04-12 17:00 A | 10 | 100% | 2018-04-12 08:00 | 2018-04-12 17:00 | 1d |  | 张银 | 8h | 8h | 400 | 400 | 400 |
| 12 | 1.1.10 | 召开项目启动会 | 0.5d | 2018-04-13 08:00 A | 2018-04-13 12:00 A | 11 | 100% | 2018-04-13 08:00 | 2018-04-13 12:00 | 0.5d |  | 陈敏兰; 陈新添; 丁迅; 甘旺; 何鑫华; 黄荣; 金灼; 刘康平; 潘文彬; 王平刚; 王煜卿; 伍斌; 张莉; 张伍超; 张银; 章景; 郑益涛 | 68h | 68h | 3,400 | 3,400 | 3,400 |
| 13 | 1.1.11 | 项目管理培训 | 0.5d | 2018-04-13 08:00 A | 2018-04-13 12:00 A | 12 | 100% | 2018-04-13 08:00 | 2018-04-13 12:00 | 0.5d |  | 陈敏兰; 陈新添; 丁迅; 甘旺; 何鑫华; 黄荣; 金灼; 刘康平; 潘文彬; 王平刚; 王煜卿; 伍斌; 张莉; 张伍超; 张银; 章景; 郑益涛 | 68h | 68h | 3,400 | 3,400 | 3,400 |
| 14 | 1.1.12 | 编写《项目日程表》初始化 | 2d | 2018-04-16 08:00 A | 2018-04-17 17:00 A | 13 | 100% | 2018-04-16 08:00 | 2018-04-17 17:00 | 2d |  | 张银 | 16h | 16h | 800 | 800 | 800 |
| 15 | 1.1.13 | 《需求跟踪矩阵》初始化 | 1d | 2018-04-16 08:00 A | 2018-04-16 17:00 A | 13 | 100% | 2018-04-16 08:00 | 2018-04-16 17:00 | 1d |  | 王煜卿 | 8h | 8h | 400 | 400 | 400 |
| 16 | 1.1.14 | 《项目计划书》评审 | 1d | 2018-04-18 08:00 A | 2018-04-18 17:00 A | 15, 14, 126, 293, 365, 470, 484 | 100% | 2018-04-18 08:00 | 2018-04-18 17:00 | 1d |  | 陈敏兰; 黄荣; 刘康平; 潘文彬; 张银; 甘旺; 王煜卿; 金灼; 章景 | 72h | 72h | 3,600 | 3,600 | 3,600 |
| 17 | 1.1.15 | 过程资料归档 | 1d | 2018-04-19 08:00 A | 2018-04-19 17:00 A | 16 | 100% | 2018-04-19 08:00 | 2018-04-19 17:00 | 1d |  | 陈敏兰; 王煜卿; 张银 | 24h | 24h | 1,200 | 1,200 | 1,200 |
| 18 | 1.2 | **迭代一(成绩、排课)** | 32d | 2018-04-20 08:00 A | 2018-06-05 17:00 A |  | 100% | 2018-04-20 08:00 | 2018-06-05 17:00 | 32d |  |  | 2878h | 2878h | 143,900 | 143,900 | 143,900 |
| 19 | 1.2.1 | **需求阶段** | 4d | 2018-04-20 08:00 A | 2018-04-25 17:00 A |  | 100% | 2018-04-20 08:00 | 2018-04-25 17:00 | 4d |  |  | 96h | 96h | 4,800 | 4,800 | 4,800 |
| 20 | 1.2.1.1 | WBS分解 | 2d | 2018-04-20 08:00 A | 2018-04-23 17:00 A |  | 100% | 2018-04-20 08:00 | 2018-04-23 17:00 | 2d | start no earlier than 2018-04-20 08:00 | 黄荣; 潘文彬; 张银 | 48h | 48h | 2,400 | 2,400 | 2,400 |
| 21 | 1.2.1.2 | 工作量估算 | 2d | 2018-04-24 08:00 A | 2018-04-25 17:00 A | 20 | 100% | 2018-04-24 08:00 | 2018-04-25 17:00 | 2d |  | 黄荣; 潘文彬; 张银 | 48h | 48h | 2,400 | 2,400 | 2,400 |
| 22 | 1.2.2 | **设计阶段** | 8d | 2018-04-25 08:00 A | 2018-05-07 17:00 A |  | 100% | 2018-04-25 08:00 | 2018-05-07 17:00 | 8d |  |  | 224h | 224h | 11,200 | 11,200 | 11,200 |
| 23 | 1.2.2.1 | 数据库设计（成绩） | 2d | 2018-04-25 08:00 A | 2018-04-26 17:00 A |  | 100% | 2018-04-25 08:00 | 2018-04-26 17:00 | 2d | start no earlier than 2018-04-25 08:00 | 章景 | 16h | 16h | 800 | 800 | 800 |
| 24 | 1.2.2.2 | 数据库设计评审及修改（成绩） | 1d | 2018-04-27 08:00 A | 2018-04-27 17:00 A | 23 | 100% | 2018-04-27 08:00 | 2018-04-27 17:00 | 1d |  | 甘旺; 张银; 章景; 陈新添 | 32h | 32h | 1,600 | 1,600 | 1,600 |
| 25 | 1.2.2.3 | 测试思维导图编写、修改（成绩） | 2d | 2018-04-26 08:00 A | 2018-04-27 17:00 A | 21 | 100% | 2018-04-26 08:00 | 2018-04-27 17:00 | 2d |  | 黄玲俐; 李淑贞 | 32h | 32h | 1,600 | 1,600 | 1,600 |
| 26 | 1.2.2.4 | 数据库设计（排课） | 2d | 2018-04-26 08:00 A | 2018-04-27 17:00 A | 21 | 100% | 2018-04-26 08:00 | 2018-04-27 17:00 | 2d |  | 陈冬冬; 袁小明; 张莉; 黄荣 | 64h | 64h | 3,200 | 3,200 | 3,200 |

| ID | WBS | Task | Type | Duration | Start | Finish | Predecessors | Complete | Baseline start | Baseline finish | Baseline duration | Constraint | Resources | Work | Actual work | Cost | Baseline cost | Actual cost |
| --- | --- | --- | --- | --- | --- | --- | --- | --- | --- | --- | --- | --- | --- | --- | --- | --- | --- | --- |
| 27 | 1.2.2.5 | **测试需求分析（排课）** |  | 5d | 2018-04-28 08:00 A | 2018-05-07 17:00 A |  | 100% | 2018-04-28 08:00 | 2018-05-07 17:00 | 5d |  |  | 80h | 80h | 4,000 | 4,000 | 4,000 |
| 28 | 1.2.2.5.1 | 测试需求分析编写 | manual | 3d | 2018-04-28 08:00 A | 2018-05-03 17:00 A | 25 | 100% | 2018-04-28 08:00 | 2018-05-03 17:00 | 3d |  | 张建宇 | 24h | 24h | 1,200 | 1,200 | 1,200 |
| 29 | 1.2.2.5.2 | 测试需求分析预评审 |  | 0.5d | 2018-05-04 08:00 A | 2018-05-04 12:00 A | 28 | 100% | 2018-05-04 08:00 | 2018-05-04 12:00 | 0.5d |  | 张建宇; 陈冬冬; 丁迅; 黄荣; 袁小明; 张莉 | 24h | 24h | 1,200 | 1,200 | 1,200 |
| 30 | 1.2.2.5.3 | 测试需求分析正式评审 |  | 0.5d | 2018-05-04 13:00 A | 2018-05-04 17:00 A | 29 | 100% | 2018-05-04 13:00 | 2018-05-04 17:00 | 0.5d |  | 张建宇; 陈冬冬; 丁迅; 黄荣; 袁小明; 张莉 | 24h | 24h | 1,200 | 1,200 | 1,200 |
| 31 | 1.2.2.5.4 | 测试需求分析修改 |  | 1d | 2018-05-07 08:00 A | 2018-05-07 17:00 A | 30 | 100% | 2018-05-07 08:00 | 2018-05-07 17:00 | 1d |  | 张建宇 | 8h | 8h | 400 | 400 | 400 |
| 32 | 1.2.3 | **编码阶段** |  | 19d | 2018-04-25 08:00 A | 2018-05-22 17:00 A |  | 100% | 2018-04-25 08:00 | 2018-05-22 17:00 | 19d |  |  | 1602h | 1602h | 80,100 | 80,100 | 80,100 |
| 33 | 1.2.3.1 | **成绩系统** |  | 17.5d | 2018-04-25 08:00 A | 2018-05-21 12:00 A |  | 100% | 2018-04-25 08:00 | 2018-05-21 12:00 | 17.5d |  |  | 348h | 348h | 17,400 | 17,400 | 17,400 |
| 34 | 1.2.3.1.1 | 数据库对象创建、菜单创建、权限码创建、数据字典创建、数据库脚本整理 |  | 1d | 2018-04-25 08:00 A | 2018-04-25 17:00 A |  | 100% | 2018-04-25 08:00 | 2018-04-25 17:00 | 1d | start no earlier than 2018-04-25 08:00 | 章景 | 8h | 8h | 400 | 400 | 400 |
| 35 | 1.2.3.1.2 | 公用性调整：包结构调整 |  | 1d | 2018-04-26 08:00 A | 2018-04-26 17:00 A | 34 | 100% | 2018-04-26 08:00 | 2018-04-26 17:00 | 1d |  | 章景 | 8h | 8h | 400 | 400 | 400 |
| 36 | 1.2.3.1.3 | 前端静态页面 |  | 4d | 2018-04-25 08:00 A | 2018-04-28 17:00 A |  | 100% | 2018-04-25 08:00 | 2018-04-28 17:00 | 4d | start no earlier than 2018-04-25 08:00 | 丁迅 | 32h | 32h | 1,600 | 1,600 | 1,600 |
| 37 | 1.2.3.1.4 | **参数设置-绩点计算方法设置** |  | 3.5d | 2018-04-25 08:00 A | 2018-04-28 12:00 A |  | 100% | 2018-04-25 08:00 | 2018-04-28 12:00 | 3.5d |  |  | 28h | 28h | 1,400 | 1,400 | 1,400 |
| 38 | 1.2.3.1.4.1 | 公式计算：页面加载，保存操作 | manual | 1d | 2018-04-25 08:00 A | 2018-04-25 17:00 A |  | 100% | 2018-04-25 08:00 | 2018-04-25 17:00 | 1d |  | 伍斌 | 8h | 8h | 400 | 400 | 400 |
| 39 | 1.2.3.1.4.2 | 分段计算：分制列表切换加载、行内编辑、新增行、删除行，保存操作 |  | 2.5d | 2018-04-26 08:00 A | 2018-04-28 12:00 A | 38 | 100% | 2018-04-26 08:00 | 2018-04-28 12:00 | 2.5d |  | 伍斌 | 20h | 20h | 1,000 | 1,000 | 1,000 |
| 40 | 1.2.3.1.5 | **参数设置-补考成绩审核方法** |  | 1.5d | 2018-04-28 13:00 A | 2018-05-02 17:00 A |  | 100% | 2018-04-28 13:00 | 2018-05-02 17:00 | 1.5d |  |  | 12h | 12h | 600 | 600 | 600 |
| 41 | 1.2.3.1.5.1 | 页面初始化加载、保存操作 |  | 1.5d | 2018-04-28 13:00 A | 2018-05-02 17:00 A | 39 | 100% | 2018-04-28 13:00 | 2018-05-02 17:00 | 1.5d |  | 伍斌 | 12h | 12h | 600 | 600 | 600 |
| 42 | 1.2.3.1.6 | **成绩录入-理论课程成绩录入** |  | 1.5d | 2018-04-27 08:00 A | 2018-04-28 12:00 A |  | 100% | 2018-04-27 08:00 | 2018-04-28 12:00 | 1.5d |  |  | 12h | 12h | 600 | 600 | 600 |
| 43 | 1.2.3.1.6.1 | 课程成绩录入：调整录入逻辑至行控制 |  | 1.5d | 2018-04-27 08:00 A | 2018-04-28 12:00 A | 35 | 100% | 2018-04-27 08:00 | 2018-04-28 12:00 | 1.5d |  | 章景 | 12h | 12h | 600 | 600 | 600 |
| 44 | 1.2.3.1.7 | **成绩录入-实践环节成绩录入** |  | 2.5d | 2018-04-28 13:00 A | 2018-05-03 17:00 A |  | 100% | 2018-04-28 13:00 | 2018-05-03 17:00 | 2.5d |  |  | 20h | 20h | 1,000 | 1,000 | 1,000 |
| 45 | 1.2.3.1.7.1 | 环节成绩录入：调整录入逻辑至行控制 |  | 1d | 2018-04-28 13:00 A | 2018-05-02 12:00 A | 43 | 100% | 2018-04-28 13:00 | 2018-05-02 12:00 | 1d |  | 章景 | 8h | 8h | 400 | 400 | 400 |
| 46 | 1.2.3.1.7.2 | 环节成绩录入：环节题目调整 |  | 1d | 2018-05-02 13:00 A | 2018-05-03 12:00 A | 45 | 100% | 2018-05-02 13:00 | 2018-05-03 12:00 | 1d |  | 章景 | 8h | 8h | 400 | 400 | 400 |
| 47 | 1.2.3.1.7.3 | 环节成绩录入：设置成绩分制逻辑调整 |  | 0.5d | 2018-05-03 13:00 A | 2018-05-03 17:00 A | 46 | 100% | 2018-05-03 13:00 | 2018-05-03 17:00 | 0.5d |  | 章景 | 4h | 4h | 200 | 200 | 200 |
| 48 | 1.2.3.1.8 | **成绩录入-补考成绩录入** |  | 1d | 2018-05-04 08:00 A | 2018-05-04 17:00 A |  | 100% | 2018-05-04 08:00 | 2018-05-04 17:00 | 1d |  |  | 8h | 8h | 400 | 400 | 400 |
| 49 | 1.2.3.1.8.1 | 补考成绩录入：调整录入逻辑至行控制、行内编辑显示逻辑调整 |  | 1d | 2018-05-04 08:00 A | 2018-05-04 17:00 A | 47 | 100% | 2018-05-04 08:00 | 2018-05-04 17:00 | 1d |  | 章景 | 8h | 8h | 400 | 400 | 400 |
| 50 | 1.2.3.1.9 | **成绩录入-成绩补录** |  | 2.5d | 2018-05-07 08:00 A | 2018-05-09 12:00 A |  | 100% | 2018-05-07 08:00 | 2018-05-09 12:00 | 2.5d |  |  | 20h | 20h | 1,000 | 1,000 | 1,000 |
| 51 | 1.2.3.1.9.1 | 成绩补录：加载保存逻辑调整（7条） |  | 2.5d | 2018-05-07 08:00 A | 2018-05-09 12:00 A | 49 | 100% | 2018-05-07 08:00 | 2018-05-09 12:00 | 2.5d | start no earlier than 2018-04-18 08:00 | 章景 | 20h | 20h | 1,000 | 1,000 | 1,000 |

| ID | WBS | Task | Type | Duration | Start | Finish | Predecessors | Complete | Baseline start | Baseline finish | Baseline duration | Constraint | Resources | Work | Actual work | Cost | Baseline cost | Actual cost |
| --- | --- | --- | --- | --- | --- | --- | --- | --- | --- | --- | --- | --- | --- | --- | --- | --- | --- | --- |
| 52 | 1.2.3.1.10 | **成绩录入-成绩修改** |  | 1d | 2018-05-09 13:00 A | 2018-05-10 12:00 A |  | 100% | 2018-05-09 13:00 | 2018-05-10 12:00 | 1d |  |  | 8h | 8h | 400 | 400 | 400 |
| 53 | 1.2.3.1.10.1 | 成绩修改：修改逻辑调整 |  | 1d | 2018-05-09 13:00 A | 2018-05-10 12:00 A | 51 | 100% | 2018-05-09 13:00 | 2018-05-10 12:00 | 1d |  | 章景 | 8h | 8h | 400 | 400 | 400 |
| 54 | 1.2.3.1.11 | **成绩审核认定** |  | 1d | 2018-05-10 13:00 A | 2018-05-11 12:00 A |  | 100% | 2018-05-10 13:00 | 2018-05-11 12:00 | 1d |  |  | 8h | 8h | 400 | 400 | 400 |
| 55 | 1.2.3.1.11.1 | 成绩审核：最终成绩计算方法调整 |  | 1d | 2018-05-10 13:00 A | 2018-05-11 12:00 A | 53 | 100% | 2018-05-10 13:00 | 2018-05-11 12:00 | 1d |  | 章景 | 8h | 8h | 400 | 400 | 400 |
| 56 | 1.2.3.1.12 | **教师服务端-成绩** |  | 4d | 2018-05-11 13:00 A | 2018-05-17 12:00 A |  | 100% | 2018-05-11 13:00 | 2018-05-17 12:00 | 4d |  |  | 32h | 32h | 1,600 | 1,600 | 1,600 |
| 57 | 1.2.3.1.12.1 | 录入成绩（课程）：调整录入逻辑至行控制 |  | 1d | 2018-05-11 13:00 A | 2018-05-14 12:00 A | 55 | 100% | 2018-05-11 13:00 | 2018-05-14 12:00 | 1d |  | 章景 | 8h | 8h | 400 | 400 | 400 |
| 58 | 1.2.3.1.12.2 | 录入成绩（环节）：调整录入逻辑至行控制、环节题目调整、设置成绩分制逻辑调整 |  | 2d | 2018-05-14 13:00 A | 2018-05-16 12:00 A | 57 | 100% | 2018-05-14 13:00 | 2018-05-16 12:00 | 2d |  | 章景 | 16h | 16h | 800 | 800 | 800 |
| 59 | 1.2.3.1.12.3 | 录入成绩（补考）：调整录入逻辑至行控制、行内编辑显示逻辑调整 |  | 1d | 2018-05-16 13:00 A | 2018-05-17 12:00 A | 58 | 100% | 2018-05-16 13:00 | 2018-05-17 12:00 | 1d |  | 章景 | 8h | 8h | 400 | 400 | 400 |
| 60 | 1.2.3.1.13 | 第一轮测试部署包&数据库脚本 |  | 1d | 2018-05-17 13:00 A | 2018-05-18 12:00 A | 59 | 100% | 2018-05-17 13:00 | 2018-05-18 12:00 | 1d |  | 章景 | 8h | 8h | 400 | 400 | 400 |
| 61 | 1.2.3.1.14 | **准出测试** |  | 1d | 2018-05-18 13:00 A | 2018-05-21 12:00 A |  | 100% | 2018-05-18 13:00 | 2018-05-21 12:00 | 1d |  |  | 16h | 16h | 800 | 800 | 800 |
| 62 | 1.2.3.1.14.1 | 迭代一第一轮准出测试 |  | 1d | 2018-05-18 13:00 A | 2018-05-21 12:00 A | 60 | 100% | 2018-05-18 13:00 | 2018-05-21 12:00 | 1d | start no earlier than 2018-04-13 08:00 | 章景; 刘康平 | 16h | 16h | 800 | 800 | 800 |
| 63 | 1.2.3.1.15 | **《测试用例》编写** |  | 5d | 2018-04-26 08:00 A | 2018-05-03 17:00 A |  | 100% | 2018-04-26 08:00 | 2018-05-03 17:00 | 5d |  |  | 120h | 120h | 6,000 | 6,000 | 6,000 |
| 64 | 1.2.3.1.15.1 | 测试用例初稿编写 |  | 4d | 2018-04-26 08:00 A | 2018-05-02 17:00 A |  | 100% | 2018-04-26 08:00 | 2018-05-02 17:00 | 4d | start no earlier than 2018-04-26 08:00 | 李淑贞; 黄玲俐 | 64h | 64h | 3,200 | 3,200 | 3,200 |
| 65 | 1.2.3.1.15.2 | 测试用例预评审 |  | 1d | 2018-05-03 08:00 A | 2018-05-03 17:00 A | 64 | 100% | 2018-05-03 08:00 | 2018-05-03 17:00 | 1d | start no earlier than 2017-11-02 08:00 | 黄玲俐; 章景; 李淑贞; 刘雄; 陈巧美 | 40h | 40h | 2,000 | 2,000 | 2,000 |
| 66 | 1.2.3.1.15.3 | 测试用例评审及修改 |  | 1d | 2018-05-03 08:00 A | 2018-05-03 17:00 A | 64 | 100% | 2018-05-03 08:00 | 2018-05-03 17:00 | 1d |  | 黄玲俐; 李淑贞 | 16h | 16h | 800 | 800 | 800 |
| 67 | 1.2.3.1.16 | 搭建测试环境 |  | 1d | 2018-05-18 13:00 A | 2018-05-21 12:00 A | 60 | 100% | 2018-05-18 13:00 | 2018-05-21 12:00 | 1d | start no earlier than 2018-01-08 08:00 | 李淑贞 | 8h | 8h | 400 | 400 | 400 |
| 68 | 1.2.3.2 | **排课系统** |  | 19d | 2018-04-25 08:00 A | 2018-05-22 17:00 A |  | 100% | 2018-04-25 08:00 | 2018-05-22 17:00 | 19d |  |  | 1254h | 1254h | 62,700 | 62,700 | 62,700 |
| 69 | 1.2.3.2.1 | 前端UI | manual | 2d | 2018-04-25 08:00 A | 2018-04-26 17:00 A |  | 100% | 2018-04-25 08:00 | 2018-04-26 17:00 | 2d |  | 丁迅 | 16h | 16h | 800 | 800 | 800 |
| 70 | 1.2.3.2.2 | **理论任务-理论任务设置** |  | 6d | 2018-04-25 08:00 A | 2018-05-03 17:00 A |  | 100% | 2018-04-25 08:00 | 2018-05-03 17:00 | 6d |  |  | 48h | 48h | 2,400 | 2,400 | 2,400 |
| 71 | 1.2.3.2.2.1 | 理论任务设置页-管理教学组（若教学组已关联教学任务，则此记录的教学组名不能为空）、列表中选择教学组同步更新数据 |  | 4d | 2018-04-25 08:00 A | 2018-04-28 17:00 A |  | 100% | 2018-04-25 08:00 | 2018-04-28 17:00 | 4d | start no earlier than 2018-04-25 08:00 | 袁小明 | 32h | 32h | 1,600 | 1,600 | 1,600 |
| 72 | 1.2.3.2.2.2 | 理论任务设置页-选择教学组 |  | 2d | 2018-05-02 08:00 A | 2018-05-03 17:00 A | 71 | 100% | 2018-05-02 08:00 | 2018-05-03 17:00 | 2d |  | 袁小明 | 16h | 16h | 800 | 800 | 800 |
| 73 | 1.2.3.2.3 | **课表编排-专业禁排设置** |  | 6d | 2018-05-04 08:00 A | 2018-05-11 17:00 A |  | 100% | 2018-05-04 08:00 | 2018-05-11 17:00 | 6d |  |  | 48h | 48h | 2,400 | 2,400 | 2,400 |
| 74 | 1.2.3.2.3.1 | 列表功能（查询所有有开课计划的年级专业数据、列表关联设置信息、分页） |  | 4d | 2018-05-04 08:00 A | 2018-05-09 17:00 A | 72 | 100% | 2018-05-04 08:00 | 2018-05-09 17:00 | 4d |  | 袁小明 | 32h | 32h | 1,600 | 1,600 | 1,600 |
| 75 | 1.2.3.2.3.2 | 设置、批量设置 |  | 2d | 2018-05-10 08:00 A | 2018-05-11 17:00 A | 74 | 100% | 2018-05-10 08:00 | 2018-05-11 17:00 | 2d |  | 袁小明 | 16h | 16h | 800 | 800 | 800 |

Notes:
- 71: 38节日放假半天，且调休半天，日程由8号开始调9号开始

| ID | WBS | Task | Type | Duration | Start | Finish | Predecessors | Complete | Baseline start | Baseline finish | Baseline duration | Constraint | Resources | Work | Actual work | Cost | Baseline cost | Actual cost |
| --- | --- | --- | --- | --- | --- | --- | --- | --- | --- | --- | --- | --- | --- | --- | --- | --- | --- | --- |
| 76 | 1.2.3.2.4 | **课表编排-场地禁排设置** |  | 5d | 2018-05-14 08:00 A | 2018-05-18 17:00 A |  | 100% | 2018-05-14 08:00 | 2018-05-18 17:00 | 5d |  |  | 72h | 72h | 3,600 | 3,600 | 3,600 |
| 77 | 1.2.3.2.4.1 | 列表功能（查询所有启用的场地、列表关联设置信息、分页） |  | 5d | 2018-05-14 08:00 A | 2018-05-18 17:00 A | 75 | 100% | 2018-05-14 08:00 | 2018-05-18 17:00 | 5d |  | 袁小明 | 40h | 40h | 2,000 | 2,000 | 2,000 |
| 78 | 1.2.3.2.4.2 | 设置、批量设置 |  | 2d | 2018-05-16 08:00 A | 2018-05-17 17:00 A | 84 | 100% | 2018-05-16 08:00 | 2018-05-17 17:00 | 2d |  | 黄荣; 丁迅 | 32h | 32h | 1,600 | 1,600 | 1,600 |
| 79 | 1.2.3.2.5 | **课表编排-课程固排禁排设置** |  | 6d | 2018-04-25 08:00 A | 2018-05-03 17:00 A |  | 100% | 2018-04-25 08:00 | 2018-05-03 17:00 | 6d |  |  | 96h | 96h | 4,800 | 4,800 | 4,800 |
| 80 | 1.2.3.2.5.1 | 列表功能（查询学年学期开设的课程、列表关联设置信息、分页） | manual | 4d | 2018-04-25 08:00 A | 2018-04-28 17:00 A |  | 100% | 2018-04-25 08:00 | 2018-04-28 17:00 | 4d | start no earlier than 2018-04-25 08:00 | 黄荣; 丁迅 | 64h | 64h | 3,200 | 3,200 | 3,200 |
| 81 | 1.2.3.2.5.2 | 设置、批量设置 |  | 2d | 2018-05-02 08:00 A | 2018-05-03 17:00 A | 80 | 100% | 2018-05-02 08:00 | 2018-05-03 17:00 | 2d |  | 黄荣; 丁迅 | 32h | 32h | 1,600 | 1,600 | 1,600 |
| 82 | 1.2.3.2.6 | **课表编排-教师固排禁排设置** |  | 8d | 2018-05-04 08:00 A | 2018-05-15 17:00 A |  | 100% | 2018-05-04 08:00 | 2018-05-15 17:00 | 8d |  |  | 128h | 128h | 6,400 | 6,400 | 6,400 |
| 83 | 1.2.3.2.6.1 | 列表功能（查询所有教师、列表关联设置信息、分页） |  | 6d | 2018-05-04 08:00 A | 2018-05-11 17:00 A | 81 | 100% | 2018-05-04 08:00 | 2018-05-11 17:00 | 6d |  | 黄荣; 丁迅 | 96h | 96h | 4,800 | 4,800 | 4,800 |
| 84 | 1.2.3.2.6.2 | 设置、批量设置 |  | 2d | 2018-05-14 08:00 A | 2018-05-15 17:00 A | 83 | 100% | 2018-05-14 08:00 | 2018-05-15 17:00 | 2d |  | 黄荣; 丁迅 | 32h | 32h | 1,600 | 1,600 | 1,600 |
| 85 | 1.2.3.2.7 | **课表编排-自动排课** |  | 19d | 2018-04-25 08:00 A | 2018-05-22 17:00 A |  | 100% | 2018-04-25 08:00 | 2018-05-22 17:00 | 19d |  |  | 380h | 380h | 19,000 | 19,000 | 19,000 |
| 86 | 1.2.3.2.7.1 | 熟悉需求 | manual | 2d | 2018-04-25 08:00 A | 2018-04-26 17:00 A |  | 100% | 2018-04-25 08:00 | 2018-04-26 17:00 | 2d |  | 潘文彬 | 16h | 16h | 800 | 800 | 800 |
| 87 | 1.2.3.2.7.2 | 汇总条件功能（汇总保存条件、清空设置）、关联登录人保存设置的条件 |  | 2.5d | 2018-04-27 08:00 A | 2018-05-02 12:00 A | 86 | 100% | 2018-04-27 08:00 | 2018-05-02 12:00 | 2.5d |  | 潘文彬 | 20h | 20h | 1,000 | 1,000 | 1,000 |
| 88 | 1.2.3.2.7.3 | 课程选择（左侧只显示没有添加到已设置中的课程数据、右侧默认加载以前已设置的数据） |  | 4d | 2018-05-02 13:00 A | 2018-05-08 12:00 A | 87 | 100% | 2018-05-02 13:00 | 2018-05-08 12:00 | 4d |  | 潘文彬 | 32h | 32h | 1,600 | 1,600 | 1,600 |
| 89 | 1.2.3.2.7.4 | 教室选择（左侧只显示没有添加到已设置中的教室数据、右侧默认加载以前已设置的数据） |  | 3d | 2018-05-08 13:00 A | 2018-05-11 12:00 A | 88 | 100% | 2018-05-08 13:00 | 2018-05-11 12:00 | 3d |  | 潘文彬; 丁迅 | 48h | 48h | 2,400 | 2,400 | 2,400 |
| 90 | 1.2.3.2.7.5 | 排课结果显示弹窗（显示此次所有已排课程的排课情况） |  | 2d | 2018-05-08 13:00 A | 2018-05-10 12:00 A | 88 | 100% | 2018-05-08 13:00 | 2018-05-10 12:00 | 2d |  | 潘文彬 | 16h | 16h | 800 | 800 | 800 |
| 91 | 1.2.3.2.7.6 | 看自动排课需求 |  | 2d | 2018-04-26 08:00 A | 2018-04-27 17:00 A | 21 | 100% | 2018-04-26 08:00 | 2018-04-27 17:00 | 2d |  | 张莉 | 16h | 16h | 800 | 800 | 800 |
| 92 | 1.2.3.2.7.7 | 自动排课算法-筛选教学任务&排序及其他初始化数据 |  | 4d | 2018-04-28 08:00 A | 2018-05-04 17:00 A | 91 | 100% | 2018-04-28 08:00 | 2018-05-04 17:00 | 4d |  | 张莉 | 32h | 32h | 1,600 | 1,600 | 1,600 |
| 93 | 1.2.3.2.7.8 | **自动排课算法-固排禁排预处理** |  | 8d | 2018-05-07 08:00 A | 2018-05-16 17:00 A |  | 100% | 2018-05-07 08:00 | 2018-05-16 17:00 | 8d |  |  | 64h | 64h | 3,200 | 3,200 | 3,200 |
| 94 | 1.2.3.2.7.8.1 | 专业禁排预处理 |  | 2d | 2018-05-07 08:00 A | 2018-05-08 17:00 A | 92 | 100% | 2018-05-07 08:00 | 2018-05-08 17:00 | 2d |  | 张莉 | 16h | 16h | 800 | 800 | 800 |
| 95 | 1.2.3.2.7.8.2 | 课程固排禁排预处理 |  | 2d | 2018-05-09 08:00 A | 2018-05-10 17:00 A | 94 | 100% | 2018-05-09 08:00 | 2018-05-10 17:00 | 2d |  | 张莉 | 16h | 16h | 800 | 800 | 800 |
| 96 | 1.2.3.2.7.8.3 | 教师固排禁排预处理 |  | 2d | 2018-05-11 08:00 A | 2018-05-14 17:00 A | 95 | 100% | 2018-05-11 08:00 | 2018-05-14 17:00 | 2d |  | 张莉 | 16h | 16h | 800 | 800 | 800 |
| 97 | 1.2.3.2.7.8.4 | 教室禁排预处理 |  | 2d | 2018-05-15 08:00 A | 2018-05-16 17:00 A | 96 | 100% | 2018-05-15 08:00 | 2018-05-16 17:00 | 2d |  | 张莉 | 16h | 16h | 800 | 800 | 800 |
| 98 | 1.2.3.2.7.9 | 自动排课算法-筛选可排节次&排序（考虑教师、班级冲突等） |  | 4d | 2018-05-17 08:00 A | 2018-05-22 17:00 A | 93 | 100% | 2018-05-17 08:00 | 2018-05-22 17:00 | 4d |  | 张莉 | 32h | 32h | 1,600 | 1,600 | 1,600 |
| 99 | 1.2.3.2.7.10 | 自动排课算法-筛选可排教室&排序 |  | 3d | 2018-05-04 08:00 A | 2018-05-08 17:00 A | 81 | 100% | 2018-05-04 08:00 | 2018-05-08 17:00 | 3d |  | 黄荣 | 24h | 24h | 1,200 | 1,200 | 1,200 |
| 100 | 1.2.3.2.7.11 | 排课结果数据保存 |  | 1d | 2018-05-09 08:00 A | 2018-05-09 17:00 A | 99 | 100% | 2018-05-09 08:00 | 2018-05-09 17:00 | 1d |  | 黄荣 | 8h | 8h | 400 | 400 | 400 |
| 101 | 1.2.3.2.7.12 | 教学组排课 |  | 3d | 2018-05-10 08:00 A | 2018-05-14 17:00 A | 100 | 100% | 2018-05-10 08:00 | 2018-05-14 17:00 | 3d |  | 黄荣 | 24h | 24h | 1,200 | 1,200 | 1,200 |

Notes:
- 91: 根据项目参与人员情况，调整自动排课算法由张莉开发
- 94: 专业日排课上限还未做
- 96: 教师日排课上限还未做
- 99: 1课程对应开课单位自有的教室a.若教学任务中上课地点要求未设置任何要求，则系统自动分配教室； 【场地类型分配规则】 1、场地中有所属单位==课程对应开课单位 根据教学任务中的授课类型及场地的场地类型关系优先匹配： 2、优先分配教学班下行政班所在校区的场地（场地校区==行政班校区） 1.若教学任务的上课地点要求中设置了场地类型，则按设置的场地类型匹配场地； 3、分配的教室容量大于等于教学班人数 2.若教学任务的上课地点中没有场地类型要求： 4、【场地类型分配规则】根据教学任务中的授课类型及场地的场地类型关系优先匹配 ~ ~ ~ a.授课类型为讲授的优先匹配场地类型为多媒体的场地；没有合适场地则随机分配； ~b.若教学任务中上课地点要求有设置要求，但未设置固定要求且未屏蔽要求，则在要求范围内自动分配教室； ~ ~ ~ b.授课类型为上机的优先匹配场地类型为计算机房的场地；没有合适场地则随机分配； 同上1-4 ~ ~ ~ c.授课类型为实验的优先匹配场地类型为实验室的场地；没有合适场地则随机分配； ~c.若教学任务中上课地点要求有设置固定的教室且未屏蔽要求且是课程对应开课单位管理的场地，则直接分配此固定教室； ~ ~ ~ d.授课类型为多媒体的优先匹配场地类型为多媒体的场地；没有合适场地则随机分配； d.若已没有合适的教室，则不排此教学任务； ~ ~ ~~e.课程大类为体育课的优先匹配场地类型为体育场馆的场地；没有合适场地则不排； 0不安排教室排课时不排教室信息 3使用行政班设置的教室满足教学班班级数为1且无教室要求的教学任务，按行政班级所在的固定教室安排上课地点，若没有设置固定教室，则不排此教学任务； 不满足（教学班班级数为1且无教室要求的教学任务）的教学任务则不排； 【教室选择规则】 2选择教室范围将教学任务排到已选择的教室范围内，按【教室选择规则】分配 ~a.若教学任务中上课地点要求未设置任何要求，则系统自动分配教室； ~ ~ ~ ~~ a1.优先分配课程对应开课单位管理的场地（根据场地信息中所属单位判断）； 4全部教室按【教室选择规则】分配 ~ ~ ~ ~~ a2.若开课单位管理的场地不匹配，则在范围内随机分配场地； ~ ~ ~ ~~~a3.优先分配教学班下行政班所在校区的场地，若如何无合适场地，再分配其他场地； ~ ~ ~ ~~ a4.分配的教室容量大于等于教学班人数； ~ ~ ~ ~~ a5.满足【场地类型分配规则】； ~~ b.若教学任务中上课地点要求有设置要求，但未设置固定要求且未屏蔽要求，则在要求范围内自动分配教室； ~ ~ ~ ~~ b1.优先分配课程对应开课单位管理的场地（根据场地信息中所属单位判断）； ~ ~ ~ ~~ b2.若院系管理的场地不匹配，则随机分配范围下的场地； ~ ~ ~ ~~~b3.优先分配教学班下行政班所在校区的场地，若如何无合适场地，再分配其他场地； ~ ~ ~ ~~ b4.分配的教室容量大于等于教学班人数； ~ ~ ~ ~~ b5.满足【场地类型分配规则】； ~~ c.若教学任务中上课地点要求有设置固定的教室且未屏蔽要求且在设定的范围内，则直接分配此固定教室； ~~ d.若已没有可排的教室，则不排此教学任务； 1课程对应开课单位自有的教室a.若教学任务中上课地点要求未设置任何要求，则系统自动分配教室； 【场地类型分配规则】 1、场地中有所属单位==课程对应开课单位 根据教学任务中的授课类型及场地的场地类型关系优先匹配： 2、优先分配教学班下行政班所在校区的场地（场地校区==行政班校区） 1.若教学任务的上课地点要求中设置了场地类型，则按设置的场地类型匹配场地； 3、分配的教室容量大于等于教学班人数 2.若教学任务的上课地点中没有场地类型要求： 4、【场地类型分配规则】根据教学任务中的授课类型及场地的场地类型关系优先匹配 ~ ~ ~ a.授课类型为讲授的优先匹配场地类型为多媒体的场地；没有合适场地则随机分配； ~b.若教学任务中上课地点要求有设置要求，但未设置固定要求且未屏蔽要求，则在要求范围内自动分配教室； ~ ~ ~ b.授课类型为上机的优先匹配场地类型为计算机房的场地；没有合适场地则随机分配； 同上1-4 ~ ~ ~ c.授课类型为实验的优先匹配场地类型为实验室的场地；没有合适场地则随机分配； ~c.若教学任务中上课地点要求有设置固定的教室且未屏蔽要求且是课程对应开课单位管理的场地，则直接分配此固定教室； ~ ~ ~ d.授课类型为多媒体的优先匹配场地类型为多媒体的场地；没有合适场地则随机分配； d.若已没有合适的教室，则不排此教学任务； ~ ~ ~~e.课程大类为体育课的优先匹配场地类型为体育场馆的场地；没有合适场地则不排； 0不安排教室排课时不排教室信息 3使用行政班设置的教室满足教学班班级数为1且无教室要求的教学任务，按行政班级所在的固定教室安排上课地点，若没有设置固定教室，则不排此教学任务； 不满足（教学班班级数为1且无教室要求的教学任务）的教学任务则不排； 【教室选择规则】 2选择教室范围将教学任务排到已选择的教室范围内，按【教室选择规则】分配 ~a.若教学任务中上课地点要求未设置任何要求，则系统自动分配教室； ~ ~ ~ ~~ a1.优先分配课程对应开课单位管理的场地（根据场地信息中所属单位判断）； 4全部教室按【教室选择规则】分配 ~ ~ ~ ~~ a2.若开课单位管理的场地不匹配，则在范围内随机分配场地； ~ ~ ~ ~~~a3.优先分配教学班下行政班所在校区的场地，若如何无合适场地，再分配其他场地； ~ ~ ~ ~~ a4.分配的教室容量大于等于教学班人数； ~ ~ ~ ~~ a5.满足【场地类型分配规则】； ~~ b.若教学任务中上课地点要求有设置要求，但未设置固定要求且未屏蔽要求，则在要求范围内自动分配教室； ~ ~ ~ ~~ b1.优先分配课程对应开课单位管理的场地（根据场地信息中所属单位判断）； ~ ~ ~ ~~ b2.若院系管理的场地不匹配，则随机分配范围下的场地； ~ ~ ~ ~~~b3.优先分配教学班下行政班所在校区的场地，若如何无合适场地，再分配其他场地； ~ ~ ~ ~~ b4.分配的教室容量大于等于教学班人数； ~ ~ ~ ~~ b5.满足【场地类型分配规则】； ~~ c.若教学任务中上课地点要求有设置固定的教室且未屏蔽要求且在设定的范围内，则直接分配此固定教室； ~~ d.若已没有可排的教室，则不排此教学任务；

| ID | WBS | Task | Type | Duration | Start | Finish | Predecessors | Complete | Baseline start | Baseline finish | Baseline duration | Constraint | Resources | Work | Actual work | Cost | Baseline cost | Actual cost |
| --- | --- | --- | --- | --- | --- | --- | --- | --- | --- | --- | --- | --- | --- | --- | --- | --- | --- | --- |
| 102 | 1.2.3.2.7.13 | **重新排课（删除已锁定数据或所有数据）、关联数据权限** |  | 5d | 2018-05-15 08:00 A | 2018-05-21 17:00 A | 100 | 100% | 2018-05-15 08:00 | 2018-05-21 17:00 | 5d |  |  | 40h | 40h | 2,000 | 2,000 | 2,000 |
| 103 | 1.2.3.2.7.13.1 | 删除已排未锁定数据 |  | 2d | 2018-05-15 08:00 A | 2018-05-16 17:00 A | 101 | 100% | 2018-05-15 08:00 | 2018-05-16 17:00 | 2d |  | 黄荣 | 16h | 16h | 800 | 800 | 800 |
| 104 | 1.2.3.2.7.13.2 | 删除已排已锁定数据 |  | 1d | 2018-05-17 08:00 A | 2018-05-17 17:00 A | 103 | 100% | 2018-05-17 08:00 | 2018-05-17 17:00 | 1d |  | 黄荣 | 8h | 8h | 400 | 400 | 400 |
| 105 | 1.2.3.2.7.13.3 | 排课重排、事务控制 |  | 2d | 2018-05-18 08:00 A | 2018-05-21 17:00 A | 104 | 100% | 2018-05-18 08:00 | 2018-05-21 17:00 | 2d |  | 黄荣 | 16h | 16h | 800 | 800 | 800 |
| 106 | 1.2.3.2.7.14 | 清空设置 |  | 1d | 2018-05-10 13:00 A | 2018-05-11 12:00 A | 90 | 100% | 2018-05-10 13:00 | 2018-05-11 12:00 | 1d |  | 潘文彬 | 8h | 8h | 400 | 400 | 400 |
| 107 | 1.2.3.2.8 | **课表编排-排课结果管理** |  | 1d | 2018-05-02 08:00 A | 2018-05-02 17:00 A |  | 100% | 2018-05-02 08:00 | 2018-05-02 17:00 | 1d |  |  | 16h | 16h | 800 | 800 | 800 |
| 108 | 1.2.3.2.8.1 | 锁定（批量）、解锁（批量） |  | 1d | 2018-05-02 08:00 A | 2018-05-02 17:00 A |  | 100% | 2018-05-02 08:00 | 2018-05-02 17:00 | 1d | start no earlier than 2018-05-02 08:00 | 黄荣; 丁迅 | 16h | 16h | 800 | 800 | 800 |
| 109 | 1.2.3.2.9 | 角色权限编码及脚本 |  | 2d | 2018-05-11 13:00 A | 2018-05-15 12:00 A | 106 | 100% | 2018-05-11 13:00 | 2018-05-15 12:00 | 2d |  | 潘文彬 | 16h | 16h | 800 | 800 | 800 |
| 110 | 1.2.3.2.10 | 自测 |  | 5d | 2018-05-15 13:00 A | 2018-05-22 12:00 A | 109 | 100% | 2018-05-15 13:00 | 2018-05-22 12:00 | 5d |  | 丁迅; 黄荣; 袁小明; 张莉; 潘文彬; 章景 | 240h | 240h | 12,000 | 12,000 | 12,000 |
| 111 | 1.2.3.2.11 | **测试用例** |  | 13d | 2018-04-26 08:00 A | 2018-05-15 17:00 A |  | 100% | 2018-04-26 08:00 | 2018-05-15 17:00 | 13d |  |  | 184h | 184h | 9,200 | 9,200 | 9,200 |
| 112 | 1.2.3.2.11.1 | 测试用例编写 |  | 10d | 2018-04-26 08:00 A | 2018-05-10 17:00 A |  | 100% | 2018-04-26 08:00 | 2018-05-10 17:00 | 10d | start no earlier than 2018-04-26 08:00 | 陈敏兰 | 80h | 80h | 4,000 | 4,000 | 4,000 |
| 113 | 1.2.3.2.11.2 | 测试用例预评审 |  | 1d | 2018-05-11 08:00 A | 2018-05-11 17:00 A | 112 | 100% | 2018-05-11 08:00 | 2018-05-11 17:00 | 1d |  | 丁迅; 黄荣; 张莉; 陈敏兰; 潘文彬; 章景 | 48h | 48h | 2,400 | 2,400 | 2,400 |
| 114 | 1.2.3.2.11.3 | 测试用例正式评审 |  | 1d | 2018-05-14 08:00 A | 2018-05-14 17:00 A | 113 | 100% | 2018-05-14 08:00 | 2018-05-14 17:00 | 1d |  | 丁迅; 黄荣; 张莉; 陈敏兰; 潘文彬; 章景 | 48h | 48h | 2,400 | 2,400 | 2,400 |
| 115 | 1.2.3.2.11.4 | 测试用例修改 |  | 1d | 2018-05-15 08:00 A | 2018-05-15 17:00 A | 114 | 100% | 2018-05-15 08:00 | 2018-05-15 17:00 | 1d |  | 陈敏兰 | 8h | 8h | 400 | 400 | 400 |
| 116 | 1.2.3.2.12 | **代码走查** |  | 0.25d | 2018-05-18 08:00 A | 2018-05-18 10:00 A |  | 100% | 2018-05-18 08:00 | 2018-05-18 10:00 | 0.25d |  |  | 10h | 10h | 500 | 500 | 500 |
| 117 | 1.2.3.2.12.1 | 代码走查（排课） | manual | 0.25d | 2018-05-18 08:00 A | 2018-05-18 10:00 A |  | 100% | 2018-05-18 08:00 | 2018-05-18 10:00 | 0.25d |  | 黄荣; 张银; 甘旺; 潘文彬; 张莉 | 10h | 10h | 500 | 500 | 500 |
| 118 | 1.2.4 | **测试阶段** |  | 17d | 2018-05-14 08:00 A | 2018-06-05 17:00 A |  | 100% | 2018-05-14 08:00 | 2018-06-05 17:00 | 17d |  |  | 956h | 956h | 47,800 | 47,800 | 47,800 |
| 119 | 1.2.4.1 | 第一轮测试（培养方案、数据权限、成绩） | milestone | 2d | 2018-05-14 08:00 A | 2018-05-15 17:00 A |  | 100% | 2018-05-14 08:00 | 2018-05-15 17:00 | 2d | start no earlier than 2018-05-14 08:00 | 陈敏兰; 李淑贞 | 32h | 32h | 1,600 | 1,600 | 1,600 |
| 120 | 1.2.4.2 | 第二轮测试（测禁排固排&教学组+第一轮回归） |  | 3d | 2018-05-16 08:00 A | 2018-05-18 17:00 A | 119 | 100% | 2018-05-16 08:00 | 2018-05-18 17:00 | 3d |  | 陈敏兰; 李淑贞 | 48h | 48h | 2,400 | 2,400 | 2,400 |
| 121 | 1.2.4.3 | 第三轮测试（排课算法） |  | 4d | 2018-05-21 08:00 A | 2018-05-24 17:00 A | 120 | 100% | 2018-05-21 08:00 | 2018-05-24 17:00 | 4d | start no earlier than 2018-05-08 08:00 | 陈敏兰; 李淑贞 | 64h | 64h | 3,200 | 3,200 | 3,200 |
| 122 | 1.2.4.4 | 第四轮测试 |  | 3d | 2018-05-25 08:00 A | 2018-05-29 17:00 A | 121 | 100% | 2018-05-25 08:00 | 2018-05-29 17:00 | 3d |  | 陈敏兰; 李淑贞 | 48h | 48h | 2,400 | 2,400 | 2,400 |
| 123 | 1.2.4.5 | 第五轮测试（回归测试） |  | 2d | 2018-05-30 08:00 A | 2018-05-31 17:00 A | 122 | 100% | 2018-05-30 08:00 | 2018-05-31 17:00 | 2d |  | 陈敏兰; 李淑贞 | 32h | 32h | 1,600 | 1,600 | 1,600 |
| 124 | 1.2.4.6 | bug修复 |  | 12d | 2018-05-15 08:00 A | 2018-05-30 17:00 A |  | 100% | 2018-05-15 08:00 | 2018-05-30 17:00 | 12d | start no earlier than 2018-05-15 08:00 | 丁迅; 张莉; 潘文彬; 章景; 黄荣; 刘康平; 伍斌 | 672h | 672h | 33,600 | 33,600 | 33,600 |
| 125 | 1.2.4.7 | 测试报告 |  | 1d | 2018-06-01 08:00 A | 2018-06-01 17:00 A | 123 | 100% | 2018-06-01 08:00 | 2018-06-01 17:00 | 1d |  | 陈敏兰 | 8h | 8h | 400 | 400 | 400 |
| 126 | 1.2.4.8 | 《需求跟踪矩阵》《需求跟踪矩阵》需求完成度检查与更新 |  | 0.5d | 2018-05-29 08:00 A | 2018-05-29 12:00 A | 124 | 100% | 2018-05-29 08:00 | 2018-05-29 12:00 | 0.5d |  | 王煜卿 | 4h | 4h | 200 | 200 | 200 |
| 127 | 1.2.4.9 | 产品验收（主流程验收） | manual | 5d | 2018-05-29 08:00 A | 2018-06-04 17:00 A | 124 | 100% | 2018-05-29 08:00 | 2018-06-04 17:00 | 5d |  | 王煜卿 | 40h | 40h | 2,000 | 2,000 | 2,000 |
| 128 | 1.2.4.10 | 申请迭代里程碑 |  | 0.5d | 2018-06-05 08:00 A | 2018-06-05 12:00 A | 127 | 100% | 2018-06-05 08:00 | 2018-06-05 12:00 | 0.5d |  | 张银 | 4h | 4h | 200 | 200 | 200 |
| 129 | 1.2.4.11 | 建立阶段基线 |  | 0.5d | 2018-06-05 13:00 A | 2018-06-05 17:00 A | 128 | 100% | 2018-06-05 13:00 | 2018-06-05 17:00 | 0.5d |  | 吴赛清 | 4h | 4h | 200 | 200 | 200 |

| ID | WBS | Task | Type | Duration | Start | Finish | Predecessors | Complete | Baseline start | Baseline finish | Baseline duration | Constraint | Resources | Work | Actual work | Cost | Baseline cost | Actual cost |
| --- | --- | --- | --- | --- | --- | --- | --- | --- | --- | --- | --- | --- | --- | --- | --- | --- | --- | --- |
| 130 | 1.3 | **迭代二(考务系统)** |  | 49.5d | 2018-04-20 08:00 A | 2018-07-02 12:00 A |  | 100% | 2018-04-20 08:00 | 2018-07-02 12:00 | 49.5d |  |  | 2612h | 2612h | 130,600 | 130,600 | 130,600 |
| 131 | 1.3.1 | **需求阶段** |  | 3d | 2018-04-20 08:00 A | 2018-04-24 17:00 A |  | 100% | 2018-04-20 08:00 | 2018-04-24 17:00 | 3d |  |  | 128h | 128h | 6,400 | 6,400 | 6,400 |
| 132 | 1.3.1.1 | WBS分解 | manual | 2d | 2018-04-20 08:00 A | 2018-04-23 17:00 A |  | 100% | 2018-04-20 08:00 | 2018-04-23 17:00 | 2d | start no earlier than 2018-04-20 08:00 | 张银 | 16h | 16h | 800 | 800 | 800 |
| 133 | 1.3.1.2 | 工作量预估算 |  | 2d | 2018-04-23 08:00 A | 2018-04-24 17:00 A | 132 | 100% | 2018-04-23 08:00 | 2018-04-24 17:00 | 2d |  | 张银; 何鑫华; 让小侠; 王平刚; 伍斌; 张伍超; 章景 | 112h | 112h | 5,600 | 5,600 | 5,600 |
| 134 | 1.3.2 | **设计阶段** |  | 10d | 2018-04-24 08:00 A | 2018-05-08 17:00 A |  | 100% | 2018-04-24 08:00 | 2018-05-08 17:00 | 10d |  |  | 408h | 408h | 20,400 | 20,400 | 20,400 |
| 135 | 1.3.2.1 | 项目工作环境搭建 |  | 1d | 2018-04-24 08:00 A | 2018-04-24 17:00 A | 133 | 100% | 2018-04-24 08:00 | 2018-04-24 17:00 | 1d |  | 张银 | 8h | 8h | 400 | 400 | 400 |
| 136 | 1.3.2.2 | **日程表** |  | 3d | 2018-04-27 08:00 A | 2018-05-02 17:00 A |  | 100% | 2018-04-27 08:00 | 2018-05-02 17:00 | 3d |  |  | 96h | 96h | 4,800 | 4,800 | 4,800 |
| 137 | 1.3.2.2.1 | 日程表初稿 | manual | 1d | 2018-04-27 08:00 A | 2018-04-27 17:00 A | 135 | 100% | 2018-04-27 08:00 | 2018-04-27 17:00 | 1d |  | 张银 | 8h | 8h | 400 | 400 | 400 |
| 138 | 1.3.2.2.2 | 日程表讲解、讨论 |  | 0.5d | 2018-04-28 08:00 A | 2018-04-28 12:00 A | 137 | 100% | 2018-04-28 08:00 | 2018-04-28 12:00 | 0.5d |  | 张银; 何鑫华; 梁新飞; 让小侠; 王平刚; 阳杰; 张伍超; 郑益涛; 章景; 伍斌; 王煜卿 | 44h | 44h | 2,200 | 2,200 | 2,200 |
| 139 | 1.3.2.2.3 | 日程表评审、修改 |  | 0.5d | 2018-05-02 13:00 A | 2018-05-02 17:00 A | 138FS+1d | 100% | 2018-05-02 13:00 | 2018-05-02 17:00 | 0.5d |  | 张银; 何鑫华; 梁新飞; 让小侠; 王平刚; 阳杰; 张伍超; 郑益涛; 章景; 伍斌; 王煜卿 | 44h | 44h | 2,200 | 2,200 | 2,200 |
| 140 | 1.3.2.3 | **数据库设计** |  | 6d | 2018-04-25 08:00 A | 2018-05-03 17:00 A |  | 100% | 2018-04-25 08:00 | 2018-05-03 17:00 | 6d |  |  | 96h | 96h | 4,800 | 4,800 | 4,800 |
| 141 | 1.3.2.3.1 | 数据库设计初稿 | manual | 1d | 2018-04-25 08:00 A | 2018-04-25 17:00 A | 135 | 100% | 2018-04-25 08:00 | 2018-04-25 17:00 | 1d |  | 张银 | 8h | 8h | 400 | 400 | 400 |
| 142 | 1.3.2.3.2 | 数据库设计讲解与讨论 |  | 1d | 2018-04-26 08:00 A | 2018-04-26 17:00 A | 141 | 100% | 2018-04-26 08:00 | 2018-04-26 17:00 | 1d |  | 张银; 何鑫华; 让小侠; 王平刚; 张伍超; 章景; 伍斌 | 56h | 56h | 2,800 | 2,800 | 2,800 |
| 143 | 1.3.2.3.3 | 数据库设计正式评审会议 |  | 0.5d | 2018-05-03 08:00 A | 2018-05-03 12:00 A | 142FS+3d | 100% | 2018-05-03 08:00 | 2018-05-03 12:00 | 0.5d |  | 张银; 何鑫华; 让小侠; 王平刚; 张伍超; 章景; 伍斌 | 28h | 28h | 1,400 | 1,400 | 1,400 |
| 144 | 1.3.2.3.4 | 数据库设计修改 |  | 0.5d | 2018-05-03 13:00 A | 2018-05-03 17:00 A | 143 | 100% | 2018-05-03 13:00 | 2018-05-03 17:00 | 0.5d |  | 张银 | 4h | 4h | 200 | 200 | 200 |
| 145 | 1.3.2.4 | **测试需求分析** |  | 9d | 2018-04-25 08:00 A | 2018-05-08 17:00 A |  | 100% | 2018-04-25 08:00 | 2018-05-08 17:00 | 9d |  |  | 208h | 208h | 10,400 | 10,400 | 10,400 |
| 146 | 1.3.2.4.1 | 测试需求分析编写 | manual | 7d | 2018-04-25 08:00 A | 2018-05-04 17:00 A | 135 | 100% | 2018-04-25 08:00 | 2018-05-04 17:00 | 7d |  | 梁新飞; 阳杰 | 112h | 112h | 5,600 | 5,600 | 5,600 |
| 147 | 1.3.2.4.2 | 测试需求分析预评审 |  | 0.5d | 2018-05-07 08:00 A | 2018-05-07 12:00 A | 146 | 100% | 2018-05-07 08:00 | 2018-05-07 12:00 | 0.5d |  | 梁新飞; 阳杰; 何鑫华; 让小侠; 王平刚; 伍斌; 张伍超; 张银; 章景; 郑益涛 | 40h | 40h | 2,000 | 2,000 | 2,000 |
| 148 | 1.3.2.4.3 | 测试需求分析正式评审 |  | 0.5d | 2018-05-07 13:00 A | 2018-05-07 17:00 A | 147 | 100% | 2018-05-07 13:00 | 2018-05-07 17:00 | 0.5d |  | 梁新飞; 阳杰; 何鑫华; 让小侠; 王平刚; 伍斌; 张伍超; 张银; 章景; 郑益涛 | 40h | 40h | 2,000 | 2,000 | 2,000 |
| 149 | 1.3.2.4.4 | 测试需求分析修改 |  | 1d | 2018-05-08 08:00 A | 2018-05-08 17:00 A | 148 | 100% | 2018-05-08 08:00 | 2018-05-08 17:00 | 1d |  | 梁新飞; 阳杰 | 16h | 16h | 800 | 800 | 800 |
| 150 | 1.3.3 | **编码阶段** |  | 30d | 2018-04-27 08:00 A | 2018-06-08 17:00 A |  | 100% | 2018-04-27 08:00 | 2018-06-08 17:00 | 30d |  |  | 1124h | 1124h | 56,200 | 56,200 | 56,200 |
| 151 | 1.3.3.1 | 前端目录、后端类结构划分 | manual | 1d | 2018-04-27 08:00 A | 2018-04-27 17:00 A |  | 100% | 2018-04-27 08:00 | 2018-04-27 17:00 | 1d |  | 王平刚 | 8h | 8h | 400 | 400 | 400 |
| 152 | 1.3.3.2 | 数据字典创建、枚举类创建 | manual | 0.5d | 2018-04-27 08:00 A | 2018-04-27 15:00 A |  | 100% | 2018-04-27 08:00 | 2018-04-27 15:00 | 0.5d |  | 让小侠 | 4h | 4h | 200 | 200 | 200 |
| 153 | 1.3.3.3 | 权限码创建、菜单创建 |  | 0.5d | 2018-04-28 08:00 A | 2018-04-28 15:00 A | 151 | 100% | 2018-04-28 08:00 | 2018-04-28 15:00 | 0.5d |  | 王平刚 | 4h | 4h | 200 | 200 | 200 |
| 154 | 1.3.3.4 | 数据库初始化、脚本、po类创建 |  | 0.5d | 2018-04-28 15:00 A | 2018-05-02 10:00 A | 153 | 100% | 2018-04-28 15:00 | 2018-05-02 10:00 | 0.5d |  | 王平刚 | 4h | 4h | 200 | 200 | 200 |

| ID | WBS | Task | Type | Duration | Start | Finish | Predecessors | Complete | Baseline start | Baseline finish | Baseline duration | Resources | Work | Actual work | Cost | Baseline cost | Actual cost |
| --- | --- | --- | --- | --- | --- | --- | --- | --- | --- | --- | --- | --- | --- | --- | --- | --- | --- |
| 155 | 1.3.3.5 | **参数设置** |  | 9d | 2018-05-02 10:00 A | 2018-05-15 10:00 A |  | 100% | 2018-05-02 10:00 | 2018-05-15 10:00 | 9d |  | 140h | 140h | 7,000 | 7,000 | 7,000 |
| 156 | 1.3.3.5.1 | **考试批次设置** |  | 3.5d | 2018-05-02 10:00 A | 2018-05-07 15:00 A |  | 100% | 2018-05-02 10:00 | 2018-05-07 15:00 | 3.5d |  | 28h | 28h | 1,400 | 1,400 | 1,400 |
| 157 | 1.3.3.5.1.1 | 列表功能（查询、列表、删除） |  | 2d | 2018-05-02 10:00 A | 2018-05-04 10:00 A | 154 | 100% | 2018-05-02 10:00 | 2018-05-04 10:00 | 2d | 何鑫华 | 16h | 16h | 800 | 800 | 800 |
| 158 | 1.3.3.5.1.2 | 新增（选择校历） |  | 1d | 2018-05-04 10:00 A | 2018-05-07 10:00 A | 157 | 100% | 2018-05-04 10:00 | 2018-05-07 10:00 | 1d | 何鑫华 | 8h | 8h | 400 | 400 | 400 |
| 159 | 1.3.3.5.1.3 | 修改（选择校历） |  | 0.5d | 2018-05-07 10:00 A | 2018-05-07 15:00 A | 158 | 100% | 2018-05-07 10:00 | 2018-05-07 15:00 | 0.5d | 何鑫华 | 4h | 4h | 200 | 200 | 200 |
| 160 | 1.3.3.5.2 | **考试时间设置** |  | 5d | 2018-05-07 15:00 A | 2018-05-14 15:00 A |  | 100% | 2018-05-07 15:00 | 2018-05-14 15:00 | 5d |  | 40h | 40h | 2,000 | 2,000 | 2,000 |
| 161 | 1.3.3.5.2.1 | 列表功能（查询、列表） |  | 1.5d | 2018-05-07 15:00 A | 2018-05-09 10:00 A | 159 | 100% | 2018-05-07 15:00 | 2018-05-09 10:00 | 1.5d | 何鑫华 | 12h | 12h | 600 | 600 | 600 |
| 162 | 1.3.3.5.2.2 | 生成场次时间（时间冲突判断，批量增加多个场次） |  | 1.5d | 2018-05-09 10:00 A | 2018-05-10 15:00 A | 161 | 100% | 2018-05-09 10:00 | 2018-05-10 15:00 | 1.5d | 何鑫华 | 12h | 12h | 600 | 600 | 600 |
| 163 | 1.3.3.5.2.3 | 设置禁考（批量设置，被引用的场次不能禁考） |  | 0.5d | 2018-05-10 15:00 A | 2018-05-11 10:00 A | 162 | 100% | 2018-05-10 15:00 | 2018-05-11 10:00 | 0.5d | 何鑫华 | 4h | 4h | 200 | 200 | 200 |
| 164 | 1.3.3.5.2.4 | 清除场次时间；取消禁考设置 |  | 0.5d | 2018-05-11 10:00 A | 2018-05-11 15:00 A | 163 | 100% | 2018-05-11 10:00 | 2018-05-11 15:00 | 0.5d | 何鑫华 | 4h | 4h | 200 | 200 | 200 |
| 165 | 1.3.3.5.2.5 | 修改（时间冲突判断） |  | 1d | 2018-05-11 15:00 A | 2018-05-14 15:00 A | 164 | 100% | 2018-05-11 15:00 | 2018-05-14 15:00 | 1d | 何鑫华 | 8h | 8h | 400 | 400 | 400 |
| 166 | 1.3.3.5.3 | **考场及容量设置** |  | 5.5d | 2018-05-02 10:00 A | 2018-05-09 15:00 A |  | 100% | 2018-05-02 10:00 | 2018-05-09 15:00 | 5.5d |  | 44h | 44h | 2,200 | 2,200 | 2,200 |
| 167 | 1.3.3.5.3.1 | 列表功能（查询、列表、查询条件级联） |  | 2d | 2018-05-02 10:00 A | 2018-05-04 10:00 A | 154 | 100% | 2018-05-02 10:00 | 2018-05-04 10:00 | 2d | 张伍超 | 16h | 16h | 800 | 800 | 800 |
| 168 | 1.3.3.5.3.2 | 添加考场（查询、条件级联、列表数据加载） |  | 1.5d | 2018-05-04 10:00 A | 2018-05-07 15:00 A | 167 | 100% | 2018-05-04 10:00 | 2018-05-07 15:00 | 1.5d | 张伍超 | 12h | 12h | 600 | 600 | 600 |
| 169 | 1.3.3.5.3.3 | 添加考场（左右两列数据交换、保存） |  | 1d | 2018-05-07 15:00 A | 2018-05-08 15:00 A | 168 | 100% | 2018-05-07 15:00 | 2018-05-08 15:00 | 1d | 张伍超 | 8h | 8h | 400 | 400 | 400 |
| 170 | 1.3.3.5.3.4 | 设置考场容量（按三种条件设置考场容量） |  | 0.5d | 2018-05-08 15:00 A | 2018-05-09 10:00 A | 169 | 100% | 2018-05-08 15:00 | 2018-05-09 10:00 | 0.5d | 张伍超 | 4h | 4h | 200 | 200 | 200 |
| 171 | 1.3.3.5.3.5 | 删除（批量删除，被引用的考场不能删除） |  | 0.5d | 2018-05-09 10:00 A | 2018-05-09 15:00 A | 170 | 100% | 2018-05-09 10:00 | 2018-05-09 15:00 | 0.5d | 张伍超 | 4h | 4h | 200 | 200 | 200 |
| 172 | 1.3.3.5.4 | **监考人员设置** |  | 3.5d | 2018-05-09 15:00 A | 2018-05-15 10:00 A |  | 100% | 2018-05-09 15:00 | 2018-05-15 10:00 | 3.5d |  | 28h | 28h | 1,400 | 1,400 | 1,400 |
| 173 | 1.3.3.5.4.1 | 列表功能（查询、列表、查询条件级联） |  | 1.5d | 2018-05-09 15:00 A | 2018-05-11 10:00 A | 171 | 100% | 2018-05-09 15:00 | 2018-05-11 10:00 | 1.5d | 张伍超 | 12h | 12h | 600 | 600 | 600 |
| 174 | 1.3.3.5.4.2 | 添加监考人员（查询、条件级联、列表数据加载） |  | 1d | 2018-05-11 10:00 A | 2018-05-14 10:00 A | 173 | 100% | 2018-05-11 10:00 | 2018-05-14 10:00 | 1d | 张伍超 | 8h | 8h | 400 | 400 | 400 |
| 175 | 1.3.3.5.4.3 | 添加监考人员（左右两列数据交换、保存） |  | 0.5d | 2018-05-14 10:00 A | 2018-05-14 15:00 A | 174 | 100% | 2018-05-14 10:00 | 2018-05-14 15:00 | 0.5d | 张伍超 | 4h | 4h | 200 | 200 | 200 |
| 176 | 1.3.3.5.4.4 | 删除（批量删除，被引用的监考人员不能删除） |  | 0.5d | 2018-05-14 15:00 A | 2018-05-15 10:00 A | 175 | 100% | 2018-05-14 15:00 | 2018-05-15 10:00 | 0.5d | 张伍超 | 4h | 4h | 200 | 200 | 200 |
| 177 | 1.3.3.6 | **考试数据** |  | 15d | 2018-05-02 10:00 A | 2018-05-23 10:00 A |  | 100% | 2018-05-02 10:00 | 2018-05-23 10:00 | 15d |  | 168h | 168h | 8,400 | 8,400 | 8,400 |
| 178 | 1.3.3.6.1 | **确认考试课程** |  | 14.25d | 2018-05-03 08:00 A | 2018-05-23 10:00 A |  | 100% | 2018-05-03 08:00 | 2018-05-23 10:00 | 14.25d |  | 68h | 68h | 3,400 | 3,400 | 3,400 |
| 179 | 1.3.3.6.1.1 | 提供选课数据源视图（考试课程和缓考学生数据源） | manual | 2d | 2018-05-03 08:00 A | 2018-05-04 17:00 A |  | 100% | 2018-05-03 08:00 | 2018-05-04 17:00 | 2d | 张莉 | 16h | 16h | 800 | 800 | 800 |
| 180 | 1.3.3.6.1.2 | 列表功能（查询、列表、查询条件级联） |  | 2d | 2018-05-14 15:00 A | 2018-05-16 15:00 A | 165 | 100% | 2018-05-14 15:00 | 2018-05-16 15:00 | 2d | 何鑫华 | 16h | 16h | 800 | 800 | 800 |
| 181 | 1.3.3.6.1.3 | 添加课程（查询、列表数据加载） |  | 1.5d | 2018-05-16 15:00 A | 2018-05-18 10:00 A | 180 | 100% | 2018-05-16 15:00 | 2018-05-18 10:00 | 1.5d | 何鑫华 | 12h | 12h | 600 | 600 | 600 |
| 182 | 1.3.3.6.1.4 | 添加课程（随堂考设置、左右两列数据交换、保存） |  | 1d | 2018-05-18 10:00 A | 2018-05-21 10:00 A | 181 | 100% | 2018-05-18 10:00 | 2018-05-21 10:00 | 1d | 何鑫华 | 8h | 8h | 400 | 400 | 400 |
| 183 | 1.3.3.6.1.5 | 删除课程（单个和批量删除，被引用的课程教学班不能删除） |  | 0.5d | 2018-05-21 10:00 A | 2018-05-21 15:00 A | 182 | 100% | 2018-05-21 10:00 | 2018-05-21 15:00 | 0.5d | 何鑫华 | 4h | 4h | 200 | 200 | 200 |
| 184 | 1.3.3.6.1.6 | 设置考试方式（批量设置考试方式） |  | 0.5d | 2018-05-21 15:00 A | 2018-05-22 10:00 A | 183 | 100% | 2018-05-21 15:00 | 2018-05-22 10:00 | 0.5d | 何鑫华 | 4h | 4h | 200 | 200 | 200 |
| 185 | 1.3.3.6.1.7 | 导出 |  | 1d | 2018-05-22 10:00 A | 2018-05-23 10:00 A | 184 | 100% | 2018-05-22 10:00 | 2018-05-23 10:00 | 1d | 何鑫华 | 8h | 8h | 400 | 400 | 400 |

| ID | WBS | Task | Type | Duration | Start | Finish | Predecessors | Complete | Baseline start | Baseline finish | Baseline duration | Resources | Work | Actual work | Cost | Baseline cost | Actual cost |
| --- | --- | --- | --- | --- | --- | --- | --- | --- | --- | --- | --- | --- | --- | --- | --- | --- | --- |
| 186 | 1.3.3.6.2 | **学生申请缓考时间控制** |  | 1.5d | 2018-05-02 10:00 A | 2018-05-03 15:00 A |  | 100% | 2018-05-02 10:00 | 2018-05-03 15:00 | 1.5d |  | 12h | 12h | 600 | 600 | 600 |
| 187 | 1.3.3.6.2.1 | 设置功能（判断缓考时间与考试开始时间、系统时间） |  | 1.5d | 2018-05-02 10:00 A | 2018-05-03 15:00 A | 154 | 100% | 2018-05-02 10:00 | 2018-05-03 15:00 | 1.5d | 王平刚 | 12h | 12h | 600 | 600 | 600 |
| 188 | 1.3.3.6.3 | **确认缓考学生** |  | 4.5d | 2018-05-02 10:00 A | 2018-05-08 15:00 A |  | 100% | 2018-05-02 10:00 | 2018-05-08 15:00 | 4.5d |  | 36h | 36h | 1,800 | 1,800 | 1,800 |
| 189 | 1.3.3.6.3.1 | 列表功能（查询、列表、查询条件级联） |  | 2.5d | 2018-05-02 10:00 A | 2018-05-04 15:00 A | 154 | 100% | 2018-05-02 10:00 | 2018-05-04 15:00 | 2.5d | 让小侠 | 20h | 20h | 1,000 | 1,000 | 1,000 |
| 190 | 1.3.3.6.3.2 | 确认（确认为缓考学生） |  | 0.5d | 2018-05-04 15:00 A | 2018-05-07 10:00 A | 189 | 100% | 2018-05-04 15:00 | 2018-05-07 10:00 | 0.5d | 让小侠 | 4h | 4h | 200 | 200 | 200 |
| 191 | 1.3.3.6.3.3 | 取消 |  | 0.5d | 2018-05-07 10:00 A | 2018-05-07 15:00 A | 190 | 100% | 2018-05-07 10:00 | 2018-05-07 15:00 | 0.5d | 让小侠 | 4h | 4h | 200 | 200 | 200 |
| 192 | 1.3.3.6.3.4 | 导出 |  | 1d | 2018-05-07 15:00 A | 2018-05-08 15:00 A | 191 | 100% | 2018-05-07 15:00 | 2018-05-08 15:00 | 1d | 让小侠 | 8h | 8h | 400 | 400 | 400 |
| 193 | 1.3.3.6.4 | 补考规定设置 |  | 1.5d | 2018-05-03 15:00 A | 2018-05-07 10:00 A | 187 | 100% | 2018-05-03 15:00 | 2018-05-07 10:00 | 1.5d | 王平刚 | 12h | 12h | 600 | 600 | 600 |
| 194 | 1.3.3.6.5 | **确认课程补考学生** |  | 5.75d | 2018-05-07 08:00 A | 2018-05-14 15:00 A |  | 100% | 2018-05-07 08:00 | 2018-05-14 15:00 | 5.75d |  | 40h | 40h | 2,000 | 2,000 | 2,000 |
| 195 | 1.3.3.6.5.1 | 提供成绩数据源（成绩不合格的学生数据） | manual | 1d | 2018-05-07 08:00 A | 2018-05-07 17:00 A |  | 100% | 2018-05-07 08:00 | 2018-05-07 17:00 | 1d | 章景 | 8h | 8h | 400 | 400 | 400 |
| 196 | 1.3.3.6.5.2 | 列表功能（查询、列表、查询条件级联） |  | 2d | 2018-05-08 15:00 A | 2018-05-10 15:00 A | 192 | 100% | 2018-05-08 15:00 | 2018-05-10 15:00 | 2d | 让小侠 | 16h | 16h | 800 | 800 | 800 |
| 197 | 1.3.3.6.5.3 | 确认（确认为补考学生） |  | 0.5d | 2018-05-10 15:00 A | 2018-05-11 10:00 A | 196 | 100% | 2018-05-10 15:00 | 2018-05-11 10:00 | 0.5d | 让小侠 | 4h | 4h | 200 | 200 | 200 |
| 198 | 1.3.3.6.5.4 | 取消（单个和批量取消，被引用的学生不能取消） |  | 0.5d | 2018-05-11 10:00 A | 2018-05-11 15:00 A | 197 | 100% | 2018-05-11 10:00 | 2018-05-11 15:00 | 0.5d | 让小侠 | 4h | 4h | 200 | 200 | 200 |
| 199 | 1.3.3.6.5.5 | 导出 |  | 1d | 2018-05-11 15:00 A | 2018-05-14 15:00 A | 198 | 100% | 2018-05-11 15:00 | 2018-05-14 15:00 | 1d | 让小侠 | 8h | 8h | 400 | 400 | 400 |
| 200 | 1.3.3.7 | **考试安排** |  | 24.75d | 2018-05-07 10:00 A | 2018-06-08 17:00 A |  | 100% | 2018-05-07 10:00 | 2018-06-08 17:00 | 24.75d |  | 308h | 308h | 15,400 | 15,400 | 15,400 |
| 201 | 1.3.3.7.1 | **课程特殊要求设置** |  | 4.5d | 2018-05-07 10:00 A | 2018-05-11 15:00 A |  | 100% | 2018-05-07 10:00 | 2018-05-11 15:00 | 4.5d |  | 36h | 36h | 1,800 | 1,800 | 1,800 |
| 202 | 1.3.3.7.1.1 | 列表功能（查询、列表、查询条件级联） |  | 2d | 2018-05-07 10:00 A | 2018-05-09 10:00 A | 193 | 100% | 2018-05-07 10:00 | 2018-05-09 10:00 | 2d | 王平刚 | 16h | 16h | 800 | 800 | 800 |
| 203 | 1.3.3.7.1.2 | 设置教室类型 |  | 0.5d | 2018-05-09 10:00 A | 2018-05-09 15:00 A | 202 | 100% | 2018-05-09 10:00 | 2018-05-09 15:00 | 0.5d | 王平刚 | 4h | 4h | 200 | 200 | 200 |
| 204 | 1.3.3.7.1.3 | 设置场次要求；查看 |  | 2d | 2018-05-09 15:00 A | 2018-05-11 15:00 A | 203 | 100% | 2018-05-09 15:00 | 2018-05-11 15:00 | 2d | 王平刚 | 16h | 16h | 800 | 800 | 800 |
| 205 | 1.3.3.7.2 | **监考人员特殊要求设置** |  | 3d | 2018-05-11 15:00 A | 2018-05-16 15:00 A |  | 100% | 2018-05-11 15:00 | 2018-05-16 15:00 | 3d |  | 24h | 24h | 1,200 | 1,200 | 1,200 |
| 206 | 1.3.3.7.2.1 | 列表功能（查询、列表、查询条件级联） |  | 2d | 2018-05-11 15:00 A | 2018-05-15 15:00 A | 204 | 100% | 2018-05-11 15:00 | 2018-05-15 15:00 | 2d | 王平刚 | 16h | 16h | 800 | 800 | 800 |
| 207 | 1.3.3.7.2.2 | 设置监考要求；查看 |  | 1d | 2018-05-15 15:00 A | 2018-05-16 15:00 A | 206 | 100% | 2018-05-15 15:00 | 2018-05-16 15:00 | 1d | 王平刚 | 8h | 8h | 400 | 400 | 400 |
| 208 | 1.3.3.7.3 | **手动排考** |  | 23d | 2018-05-09 08:00 A | 2018-06-08 17:00 A |  | 100% | 2018-05-09 08:00 | 2018-06-08 17:00 | 23d |  | 232h | 232h | 11,600 | 11,600 | 11,600 |
| 209 | 1.3.3.7.3.1 | 列表功能（查询、列表、查询条件级联、列表统计），数据来源由末考课程、补考课程、已排课程组合，根据开课单位、统一考试过滤列表 | manual | 3d | 2018-05-09 08:00 A | 2018-05-11 17:00 A |  | 100% | 2018-05-09 08:00 | 2018-05-11 17:00 | 3d | 伍斌 | 24h | 24h | 1,200 | 1,200 | 1,200 |
| 210 | 1.3.3.7.3.2 | 取消安排 |  | 1d | 2018-05-14 08:00 A | 2018-05-14 17:00 A | 209 | 100% | 2018-05-14 08:00 | 2018-05-14 17:00 | 1d | 伍斌 | 8h | 8h | 400 | 400 | 400 |

| ID | WBS | Task | Type | Duration | Start | Finish | Predecessors | Complete | Baseline start | Baseline finish | Baseline duration | Resources | Work | Actual work | Cost | Baseline cost | Actual cost |
| --- | --- | --- | --- | --- | --- | --- | --- | --- | --- | --- | --- | --- | --- | --- | --- | --- | --- |
| 211 | 1.3.3.7.3.3 | **安排时间** |  | 8d | 2018-05-22 08:00 A | 2018-05-31 17:00 A |  | 100% | 2018-05-22 08:00 | 2018-05-31 17:00 | 8d |  | 56h | 56h | 2,800 | 2,800 | 2,800 |
| 212 | 1.3.3.7.3.3.1 | 安排-安排时间-列表（根据禁考时段、课程特殊要求过滤列表） | manual | 1d | 2018-05-22 08:00 A | 2018-05-22 17:00 A |  | 100% | 2018-05-22 08:00 | 2018-05-22 17:00 | 1d | 章景 | 8h | 8h | 400 | 400 | 400 |
| 213 | 1.3.3.7.3.3.2 | 安排-安排时间（勾选学生时间安排，学生当天隔开场次安排过滤列表） | manual | 2d | 2018-05-28 08:00 A | 2018-05-29 17:00 A |  | 100% | 2018-05-28 08:00 | 2018-05-29 17:00 | 2d | 伍斌 | 16h | 16h | 800 | 800 | 800 |
| 214 | 1.3.3.7.3.3.3 | 安排-安排时间（勾选学生时间安排，学生一天最多安排一门过滤列表） | manual | 2d | 2018-05-30 08:00 A | 2018-05-31 17:00 A |  | 100% | 2018-05-30 08:00 | 2018-05-31 17:00 | 2d | 伍斌 | 16h | 16h | 800 | 800 | 800 |
| 215 | 1.3.3.7.3.3.4 | 安排-安排时间（计算空闲容量，过滤掉未排人数大于空闲容量的场次） |  | 1d | 2018-05-23 08:00 A | 2018-05-23 17:00 A | 212 | 100% | 2018-05-23 08:00 | 2018-05-23 17:00 | 1d | 章景 | 8h | 8h | 400 | 400 | 400 |
| 216 | 1.3.3.7.3.3.5 | 安排-安排时间（确认时间及传递数据） |  | 0.5d | 2018-05-24 08:00 A | 2018-05-24 12:00 A | 215 | 100% | 2018-05-24 08:00 | 2018-05-24 12:00 | 0.5d | 章景 | 4h | 4h | 200 | 200 | 200 |
| 217 | 1.3.3.7.3.3.6 | 安排-安排时间（编辑时，只显示一行已安排的时间数据；已有考场或监考人员不能修改，需删除监考人员、考场后才能修改） |  | 0.5d | 2018-05-24 13:00 A | 2018-05-24 17:00 A | 216 | 100% | 2018-05-24 13:00 | 2018-05-24 17:00 | 0.5d | 章景 | 4h | 4h | 200 | 200 | 200 |
| 218 | 1.3.3.7.3.4 | **安排考场** |  | 17d | 2018-05-17 08:00 A | 2018-06-08 17:00 A |  | 100% | 2018-05-17 08:00 | 2018-06-08 17:00 | 17d |  | 104h | 104h | 5,200 | 5,200 | 5,200 |
| 219 | 1.3.3.7.3.4.1 | 安排考场-按教学班-教学班列表（末考、补考） |  | 1d | 2018-06-01 08:00 A | 2018-06-01 17:00 A | 214 | 100% | 2018-06-01 08:00 | 2018-06-01 17:00 | 1d | 伍斌 | 8h | 8h | 400 | 400 | 400 |
| 220 | 1.3.3.7.3.4.2 | 安排考场-按教学班-教学班列表统计： 1、（末考）应排人数（教学班学生-缓考学生），已排人数（已安排教学班考生）； 2、（补考）应排人数（教学班补考学生），已排人数（已安排教学班补考考生）； 3、未排人数为0的教学班不显示； |  | 2d | 2018-06-04 08:00 A | 2018-06-05 17:00 A | 219 | 100% | 2018-06-04 08:00 | 2018-06-05 17:00 | 2d | 伍斌 | 16h | 16h | 800 | 800 | 800 |
| 221 | 1.3.3.7.3.4.3 | 安排考场-按教学班-场地列表 （查询，过滤禁考的场地，过滤课程特殊要求的场地，过程剩余容量为0的场地） | manual | 1d | 2018-06-01 08:00 A | 2018-06-01 17:00 A |  | 100% | 2018-06-01 08:00 | 2018-06-01 17:00 | 1d | 章景 | 8h | 8h | 400 | 400 | 400 |
| 222 | 1.3.3.7.3.4.4 | 安排考场-按教学班-场地列表-安排考场14种情况 （多个考场时平均分布；随机生成座位号；安排人数；冲突判断） |  | 2d | 2018-06-04 08:00 A | 2018-06-05 17:00 A | 221 | 100% | 2018-06-04 08:00 | 2018-06-05 17:00 | 2d | 章景 | 16h | 16h | 800 | 800 | 800 |
| 223 | 1.3.3.7.3.4.5 | 安排考场-按教学班、行政班-考场安排情况列表、删除 |  | 1d | 2018-05-17 08:00 A | 2018-05-17 17:00 A | 234 | 100% | 2018-05-17 08:00 | 2018-05-17 17:00 | 1d | 伍斌 | 8h | 8h | 400 | 400 | 400 |
| 224 | 1.3.3.7.3.4.6 | 安排考场-按教学班、行政班-考场安排情况-查看考生 |  | 1d | 2018-05-18 08:00 A | 2018-05-18 17:00 A | 223 | 100% | 2018-05-18 08:00 | 2018-05-18 17:00 | 1d | 伍斌 | 8h | 8h | 400 | 400 | 400 |
| 225 | 1.3.3.7.3.4.7 | 安排考场-按行政班-行政班列表（末考、补考） |  | 1d | 2018-06-06 08:00 A | 2018-06-06 17:00 A | 220 | 100% | 2018-06-06 08:00 | 2018-06-06 17:00 | 1d | 伍斌 | 8h | 8h | 400 | 400 | 400 |
| 226 | 1.3.3.7.3.4.8 | 安排-安排考场-按行政班-行政班列表统计： 1、（末考）应排人数（行政班学生-缓考学生），已排人数（已安排行政班考生）； 2、（补考）应排人数（行政班补考学生），已排人数（已安排行政班补考考生）； 3、未排人数为0的行政班不显示； |  | 2d | 2018-06-07 08:00 A | 2018-06-08 17:00 A | 225 | 100% | 2018-06-07 08:00 | 2018-06-08 17:00 | 2d | 伍斌 | 16h | 16h | 800 | 800 | 800 |
| 227 | 1.3.3.7.3.4.9 | 安排考场-按行政班-场地列表-安排考场14种情况 （多个考场时平均分布；随机生成座位号；安排人数；冲突判断） |  | 2d | 2018-06-06 08:00 A | 2018-06-07 17:00 A | 222 | 100% | 2018-06-06 08:00 | 2018-06-07 17:00 | 2d | 章景 | 16h | 16h | 800 | 800 | 800 |
| 228 | 1.3.3.7.3.5 | **安排监考人员** |  | 6.8d | 2018-05-17 08:00 A | 2018-05-25 15:24 A |  | 100% | 2018-05-17 08:00 | 2018-05-25 15:24 | 6.8d |  | 40h | 40h | 2,000 | 2,000 | 2,000 |
| 229 | 1.3.3.7.3.5.1 | 安排-安排监考人员-考场列表（列表、撤销） |  | 2d | 2018-05-17 08:00 A | 2018-05-22 15:24 A | 224 | 100% | 2018-05-17 08:00 | 2018-05-22 15:24 | 2d | 伍斌 | 16h | 16h | 800 | 800 | 800 |
| 230 | 1.3.3.7.3.5.2 | 安排-安排监考人员-监考人员列表 （查询，根据监考人员特殊时间要求过滤列表，已监考的不显示） |  | 2d | 2018-05-22 15:24 A | 2018-05-24 15:24 A | 229 | 100% | 2018-05-22 15:24 | 2018-05-24 15:24 | 2d | 伍斌 | 16h | 16h | 800 | 800 | 800 |
| 231 | 1.3.3.7.3.5.3 | 安排-安排监考人员-设置主监考、设置辅监考（冲突判断） |  | 1d | 2018-05-24 15:24 A | 2018-05-25 15:24 A | 230 | 100% | 2018-05-24 15:24 | 2018-05-25 15:24 | 1d | 伍斌 | 8h | 8h | 400 | 400 | 400 |
| 232 | 1.3.3.7.4 | **发布考试安排** |  | 2d | 2018-05-15 08:00 A | 2018-05-16 17:00 A |  | 100% | 2018-05-15 08:00 | 2018-05-16 17:00 | 2d |  | 16h | 16h | 800 | 800 | 800 |
| 233 | 1.3.3.7.4.1 | 列表功能（查询、列表） |  | 1d | 2018-05-15 08:00 A | 2018-05-15 17:00 A | 210 | 100% | 2018-05-15 08:00 | 2018-05-15 17:00 | 1d | 伍斌 | 8h | 8h | 400 | 400 | 400 |
| 234 | 1.3.3.7.4.2 | 发布、取消发布 |  | 1d | 2018-05-16 08:00 A | 2018-05-16 17:00 A | 233 | 100% | 2018-05-16 08:00 | 2018-05-16 17:00 | 1d | 伍斌 | 8h | 8h | 400 | 400 | 400 |

Notes:
- 213: 优先级低
- 214: 优先级低

| ID | WBS | Task | Duration | Start | Finish | Predecessors | Complete | Baseline start | Baseline finish | Baseline duration | Resources | Work | Actual work | Cost | Baseline cost | Actual cost |
| --- | --- | --- | --- | --- | --- | --- | --- | --- | --- | --- | --- | --- | --- | --- | --- | --- |
| 235 | 1.3.3.8 | **考试查询** | 8d | 2018-05-15 10:00 A | 2018-05-25 10:00 A |  | 100% | 2018-05-15 10:00 | 2018-05-25 10:00 | 8d |  | 72h | 72h | 3,600 | 3,600 | 3,600 |
| 236 | 1.3.3.8.1 | **按时间区段查看** | 3d | 2018-05-15 10:00 A | 2018-05-18 10:00 A |  | 100% | 2018-05-15 10:00 | 2018-05-18 10:00 | 3d |  | 24h | 24h | 1,200 | 1,200 | 1,200 |
| 237 | 1.3.3.8.1.1 | 列表功能（查询、列表、查询条件级联） | 1.5d | 2018-05-15 10:00 A | 2018-05-16 15:00 A | 176 | 100% | 2018-05-15 10:00 | 2018-05-16 15:00 | 1.5d | 张伍超 | 12h | 12h | 600 | 600 | 600 |
| 238 | 1.3.3.8.1.2 | 导出 | 1d | 2018-05-16 15:00 A | 2018-05-17 15:00 A | 237 | 100% | 2018-05-16 15:00 | 2018-05-17 15:00 | 1d | 张伍超 | 8h | 8h | 400 | 400 | 400 |
| 239 | 1.3.3.8.1.3 | 查看考场考生名单 | 0.5d | 2018-05-17 15:00 A | 2018-05-18 10:00 A | 238 | 100% | 2018-05-17 15:00 | 2018-05-18 10:00 | 0.5d | 张伍超 | 4h | 4h | 200 | 200 | 200 |
| 240 | 1.3.3.8.2 | **查看考场安排** | 2d | 2018-05-18 10:00 A | 2018-05-22 10:00 A |  | 100% | 2018-05-18 10:00 | 2018-05-22 10:00 | 2d |  | 16h | 16h | 800 | 800 | 800 |
| 241 | 1.3.3.8.2.1 | 列表功能（查询、列表、查询条件级联、 查看考场考生名单（链接到按时间区段查看考生名单页面）） | 1.5d | 2018-05-18 10:00 A | 2018-05-21 15:00 A | 239 | 100% | 2018-05-18 10:00 | 2018-05-21 15:00 | 1.5d | 张伍超 | 12h | 12h | 600 | 600 | 600 |
| 242 | 1.3.3.8.2.2 | 导出 | 0.5d | 2018-05-21 15:00 A | 2018-05-22 10:00 A | 241 | 100% | 2018-05-21 15:00 | 2018-05-22 10:00 | 0.5d | 张伍超 | 4h | 4h | 200 | 200 | 200 |
| 243 | 1.3.3.8.3 | **查看监考安排** | 2d | 2018-05-22 10:00 A | 2018-05-24 10:00 A |  | 100% | 2018-05-22 10:00 | 2018-05-24 10:00 | 2d |  | 16h | 16h | 800 | 800 | 800 |
| 244 | 1.3.3.8.3.1 | 列表功能（查询、列表、查询条件级联、 查看考场考生名单（链接到按时间区段查看考生名单页面）） | 1.5d | 2018-05-22 10:00 A | 2018-05-23 15:00 A | 242 | 100% | 2018-05-22 10:00 | 2018-05-23 15:00 | 1.5d | 张伍超 | 12h | 12h | 600 | 600 | 600 |
| 245 | 1.3.3.8.3.2 | 导出 | 0.5d | 2018-05-23 15:00 A | 2018-05-24 10:00 A | 244 | 100% | 2018-05-23 15:00 | 2018-05-24 10:00 | 0.5d | 张伍超 | 4h | 4h | 200 | 200 | 200 |
| 246 | 1.3.3.8.4 | **查看考生名单** | 2d | 2018-05-23 10:00 A | 2018-05-25 10:00 A |  | 100% | 2018-05-23 10:00 | 2018-05-25 10:00 | 2d |  | 16h | 16h | 800 | 800 | 800 |
| 247 | 1.3.3.8.4.1 | 列表功能（查询、列表、查询条件级联） | 1.5d | 2018-05-23 10:00 A | 2018-05-24 15:00 A | 185 | 100% | 2018-05-23 10:00 | 2018-05-24 15:00 | 1.5d | 何鑫华 | 12h | 12h | 600 | 600 | 600 |
| 248 | 1.3.3.8.4.2 | 导出 | 0.5d | 2018-05-24 15:00 A | 2018-05-25 10:00 A | 247 | 100% | 2018-05-24 15:00 | 2018-05-25 10:00 | 0.5d | 何鑫华 | 4h | 4h | 200 | 200 | 200 |
| 249 | 1.3.3.9 | **教师服务** | 4d | 2018-05-16 15:00 A | 2018-05-22 15:00 A |  | 100% | 2018-05-16 15:00 | 2018-05-22 15:00 | 4d |  | 32h | 32h | 1,600 | 1,600 | 1,600 |
| 250 | 1.3.3.9.1 | **考试安排表** | 2d | 2018-05-16 15:00 A | 2018-05-18 15:00 A |  | 100% | 2018-05-16 15:00 | 2018-05-18 15:00 | 2d |  | 16h | 16h | 800 | 800 | 800 |
| 251 | 1.3.3.9.1.1 | 列表功能（查询、列表） | 1.5d | 2018-05-16 15:00 A | 2018-05-18 10:00 A | 207 | 100% | 2018-05-16 15:00 | 2018-05-18 10:00 | 1.5d | 王平刚 | 12h | 12h | 600 | 600 | 600 |
| 252 | 1.3.3.9.1.2 | 导出 | 0.5d | 2018-05-18 10:00 A | 2018-05-18 15:00 A | 251 | 100% | 2018-05-18 10:00 | 2018-05-18 15:00 | 0.5d | 王平刚 | 4h | 4h | 200 | 200 | 200 |
| 253 | 1.3.3.9.2 | **监考安排表** | 2d | 2018-05-18 15:00 A | 2018-05-22 15:00 A |  | 100% | 2018-05-18 15:00 | 2018-05-22 15:00 | 2d |  | 16h | 16h | 800 | 800 | 800 |
| 254 | 1.3.3.9.2.1 | 列表功能（查询、列表） | 1.5d | 2018-05-18 15:00 A | 2018-05-22 10:00 A | 252 | 100% | 2018-05-18 15:00 | 2018-05-22 10:00 | 1.5d | 王平刚 | 12h | 12h | 600 | 600 | 600 |
| 255 | 1.3.3.9.2.2 | 导出 | 0.5d | 2018-05-22 10:00 A | 2018-05-22 15:00 A | 254 | 100% | 2018-05-22 10:00 | 2018-05-22 15:00 | 0.5d | 王平刚 | 4h | 4h | 200 | 200 | 200 |
| 256 | 1.3.3.10 | **学生服务** | 5d | 2018-05-14 15:00 A | 2018-05-21 15:00 A |  | 100% | 2018-05-14 15:00 | 2018-05-21 15:00 | 5d |  | 40h | 40h | 2,000 | 2,000 | 2,000 |
| 257 | 1.3.3.10.1 | **缓考申请** | 3d | 2018-05-14 15:00 A | 2018-05-17 15:00 A |  | 100% | 2018-05-14 15:00 | 2018-05-17 15:00 | 3d |  | 24h | 24h | 1,200 | 1,200 | 1,200 |
| 258 | 1.3.3.10.1.1 | 列表功能（查询、列表） | 1.5d | 2018-05-14 15:00 A | 2018-05-16 10:00 A | 199 | 100% | 2018-05-14 15:00 | 2018-05-16 10:00 | 1.5d | 让小侠 | 12h | 12h | 600 | 600 | 600 |
| 259 | 1.3.3.10.1.2 | 新增、 | 1d | 2018-05-16 10:00 A | 2018-05-17 10:00 A | 258 | 100% | 2018-05-16 10:00 | 2018-05-17 10:00 | 1d | 让小侠 | 8h | 8h | 400 | 400 | 400 |
| 260 | 1.3.3.10.1.3 | 修改、删除 | 0.5d | 2018-05-17 10:00 A | 2018-05-17 15:00 A | 259 | 100% | 2018-05-17 10:00 | 2018-05-17 15:00 | 0.5d | 让小侠 | 4h | 4h | 200 | 200 | 200 |

| ID | WBS | Task | Type | Duration | Start | Finish | Predecessors | Complete | Baseline start | Baseline finish | Baseline duration | Constraint | Resources | Work | Actual work | Cost | Baseline cost | Actual cost |
| --- | --- | --- | --- | --- | --- | --- | --- | --- | --- | --- | --- | --- | --- | --- | --- | --- | --- | --- |
| 261 | 1.3.3.10.2 | **考试安排表** |  | 2d | 2018-05-17 15:00 A | 2018-05-21 15:00 A |  | 100% | 2018-05-17 15:00 | 2018-05-21 15:00 | 2d |  |  | 16h | 16h | 800 | 800 | 800 |
| 262 | 1.3.3.10.2.1 | 列表功能（查询、列表） |  | 1.5d | 2018-05-17 15:00 A | 2018-05-21 10:00 A | 260 | 100% | 2018-05-17 15:00 | 2018-05-21 10:00 | 1.5d |  | 让小侠 | 12h | 12h | 600 | 600 | 600 |
| 263 | 1.3.3.10.2.2 | 导出 |  | 0.5d | 2018-05-21 10:00 A | 2018-05-21 15:00 A | 262 | 100% | 2018-05-21 10:00 | 2018-05-21 15:00 | 0.5d |  | 让小侠 | 4h | 4h | 200 | 200 | 200 |
| 264 | 1.3.3.11 | **测试用例** |  | 9d | 2018-05-09 08:00 A | 2018-05-21 17:00 A |  | 100% | 2018-05-09 08:00 | 2018-05-21 17:00 | 9d |  |  | 216h | 216h | 10,800 | 10,800 | 10,800 |
| 265 | 1.3.3.11.1 | 测试用例编写 |  | 7d | 2018-05-09 08:00 A | 2018-05-17 17:00 A | 149 | 100% | 2018-05-09 08:00 | 2018-05-17 17:00 | 7d |  | 梁新飞; 阳杰; 郑益涛 | 168h | 168h | 8,400 | 8,400 | 8,400 |
| 266 | 1.3.3.11.2 | 测试用例预评审 |  | 0.5d | 2018-05-18 08:00 A | 2018-05-18 12:00 A | 265 | 100% | 2018-05-18 08:00 | 2018-05-18 12:00 | 0.5d |  | 梁新飞; 阳杰; 郑益涛 | 12h | 12h | 600 | 600 | 600 |
| 267 | 1.3.3.11.3 | 测试用例正式评审 |  | 0.5d | 2018-05-18 13:00 A | 2018-05-18 17:00 A | 266 | 100% | 2018-05-18 13:00 | 2018-05-18 17:00 | 0.5d |  | 梁新飞; 阳杰; 郑益涛 | 12h | 12h | 600 | 600 | 600 |
| 268 | 1.3.3.11.4 | 测试用例修改 |  | 1d | 2018-05-21 08:00 A | 2018-05-21 17:00 A | 267 | 100% | 2018-05-21 08:00 | 2018-05-21 17:00 | 1d |  | 梁新飞; 阳杰; 郑益涛 | 24h | 24h | 1,200 | 1,200 | 1,200 |
| 269 | 1.3.3.12 | **第一轮准出测试** |  | 4d | 2018-05-28 08:00 A | 2018-05-31 17:00 A |  | 100% | 2018-05-28 08:00 | 2018-05-31 17:00 | 4d |  |  | 112h | 112h | 5,600 | 5,600 | 5,600 |
| 270 | 1.3.3.12.1 | 系统自测、执行准出用例 | manual | 2d | 2018-05-28 08:00 A | 2018-05-29 17:00 A |  | 100% | 2018-05-28 08:00 | 2018-05-29 17:00 | 2d |  | 何鑫华; 让小侠; 王平刚; 伍斌; 张伍超; 章景 | 96h | 96h | 4,800 | 4,800 | 4,800 |
| 271 | 1.3.3.12.2 | 准备部署包、整理数据库脚本 |  | 1d | 2018-05-30 08:00 A | 2018-05-30 17:00 A | 270 | 100% | 2018-05-30 08:00 | 2018-05-30 17:00 | 1d |  | 章景 | 8h | 8h | 400 | 400 | 400 |
| 272 | 1.3.3.12.3 | 搭建测试环境 |  | 1d | 2018-05-31 08:00 A | 2018-05-31 17:00 A | 271 | 100% | 2018-05-31 08:00 | 2018-05-31 17:00 | 1d |  | 阳杰 | 8h | 8h | 400 | 400 | 400 |
| 273 | 1.3.3.13 | **代码走查** |  | 1d | 2018-05-07 08:00 A | 2018-05-07 17:00 A |  | 100% | 2018-05-07 08:00 | 2018-05-07 17:00 | 1d |  |  | 16h | 16h | 800 | 800 | 800 |
| 274 | 1.3.3.13.1 | 代码走查 1 | manual | 1d | 2018-05-07 08:00 A | 2018-05-07 17:00 A |  | 100% | 2018-05-07 08:00 | 2018-05-07 17:00 | 1d | start no earlier than 2018-05-07 08:00 | 甘旺; 张银 | 16h | 16h | 800 | 800 | 800 |
| 275 | 1.3.4 | **测试阶段** |  | 20.5d | 2018-06-01 08:00 A | 2018-07-02 12:00 A |  | 100% | 2018-06-01 08:00 | 2018-07-02 12:00 | 20.5d |  |  | 952h | 952h | 47,600 | 47,600 | 47,600 |
| 276 | 1.3.4.1 | **第一轮测试** |  | 5d | 2018-06-01 08:00 A | 2018-06-07 17:00 A |  | 100% | 2018-06-01 08:00 | 2018-06-07 17:00 | 5d |  |  | 312h | 312h | 15,600 | 15,600 | 15,600 |
| 277 | 1.3.4.1.1 | 准入测试 |  | 1d | 2018-06-01 08:00 A | 2018-06-01 17:00 A | 269 | 100% | 2018-06-01 08:00 | 2018-06-01 17:00 | 1d |  | 梁新飞; 阳杰; 郑益涛 | 24h | 24h | 1,200 | 1,200 | 1,200 |
| 278 | 1.3.4.1.2 | 功能测试 |  | 4d | 2018-06-04 08:00 A | 2018-06-07 17:00 A | 277 | 100% | 2018-06-04 08:00 | 2018-06-07 17:00 | 4d |  | 梁新飞; 阳杰; 郑益涛 | 96h | 96h | 4,800 | 4,800 | 4,800 |
| 279 | 1.3.4.1.3 | bug修改 |  | 4d | 2018-06-04 08:00 A | 2018-06-07 17:00 A | 277 | 100% | 2018-06-04 08:00 | 2018-06-07 17:00 | 4d |  | 何鑫华; 让小侠; 王平刚; 伍斌; 张伍超; 章景 | 192h | 192h | 9,600 | 9,600 | 9,600 |
| 280 | 1.3.4.2 | **第二轮测试** |  | 5d | 2018-06-08 08:00 A | 2018-06-14 17:00 A |  | 100% | 2018-06-08 08:00 | 2018-06-14 17:00 | 5d |  |  | 288h | 288h | 14,400 | 14,400 | 14,400 |
| 281 | 1.3.4.2.1 | 准出测试 |  | 1d | 2018-06-08 08:00 A | 2018-06-08 17:00 A | 276 | 100% | 2018-06-08 08:00 | 2018-06-08 17:00 | 1d |  | 何鑫华; 让小侠; 王平刚; 伍斌; 张伍超; 章景 | 48h | 48h | 2,400 | 2,400 | 2,400 |
| 282 | 1.3.4.2.2 | 准入测试 |  | 1d | 2018-06-11 08:00 A | 2018-06-11 17:00 A | 281 | 100% | 2018-06-11 08:00 | 2018-06-11 17:00 | 1d |  | 梁新飞; 阳杰; 郑益涛 | 24h | 24h | 1,200 | 1,200 | 1,200 |
| 283 | 1.3.4.2.3 | 功能测试 |  | 3d | 2018-06-12 08:00 A | 2018-06-14 17:00 A | 282 | 100% | 2018-06-12 08:00 | 2018-06-14 17:00 | 3d |  | 梁新飞; 阳杰; 郑益涛 | 72h | 72h | 3,600 | 3,600 | 3,600 |
| 284 | 1.3.4.2.4 | bug修改 |  | 3d | 2018-06-12 08:00 A | 2018-06-14 17:00 A | 282 | 100% | 2018-06-12 08:00 | 2018-06-14 17:00 | 3d |  | 何鑫华; 让小侠; 王平刚; 伍斌; 张伍超; 章景 | 144h | 144h | 7,200 | 7,200 | 7,200 |

| ID | WBS | Task | Type | Duration | Start | Finish | Predecessors | Complete | Baseline start | Baseline finish | Baseline duration | Constraint | Resources | Work | Actual work | Cost | Baseline cost | Actual cost |
| --- | --- | --- | --- | --- | --- | --- | --- | --- | --- | --- | --- | --- | --- | --- | --- | --- | --- | --- |
| 285 | 1.3.4.3 | **第三轮测试** |  | 5d | 2018-06-15 08:00 A | 2018-06-22 17:00 A |  | 100% | 2018-06-15 08:00 | 2018-06-22 17:00 | 5d |  |  | 288h | 288h | 14,400 | 14,400 | 14,400 |
| 286 | 1.3.4.3.1 | 准出测试 |  | 1d | 2018-06-15 08:00 A | 2018-06-15 17:00 A | 280 | 100% | 2018-06-15 08:00 | 2018-06-15 17:00 | 1d |  | 何鑫华; 让小侠; 王平刚; 伍斌; 张伍超; 章景 | 48h | 48h | 2,400 | 2,400 | 2,400 |
| 287 | 1.3.4.3.2 | 准入测试 |  | 1d | 2018-06-19 08:00 A | 2018-06-19 17:00 A | 286 | 100% | 2018-06-19 08:00 | 2018-06-19 17:00 | 1d |  | 梁新飞; 阳杰; 郑益涛 | 24h | 24h | 1,200 | 1,200 | 1,200 |
| 288 | 1.3.4.3.3 | 功能测试 |  | 3d | 2018-06-20 08:00 A | 2018-06-22 17:00 A | 287 | 100% | 2018-06-20 08:00 | 2018-06-22 17:00 | 3d |  | 梁新飞; 阳杰; 郑益涛 | 72h | 72h | 3,600 | 3,600 | 3,600 |
| 289 | 1.3.4.3.4 | bug修改 |  | 3d | 2018-06-20 08:00 A | 2018-06-22 17:00 A | 287 | 100% | 2018-06-20 08:00 | 2018-06-22 17:00 | 3d |  | 何鑫华; 让小侠; 王平刚; 伍斌; 张伍超; 章景 | 144h | 144h | 7,200 | 7,200 | 7,200 |
| 290 | 1.3.4.4 | **第四轮回归** |  | 1d | 2018-06-25 08:00 A | 2018-06-25 17:00 A |  | 100% | 2018-06-25 08:00 | 2018-06-25 17:00 | 1d |  |  | 24h | 24h | 1,200 | 1,200 | 1,200 |
| 291 | 1.3.4.4.1 | 回归测试 |  | 1d | 2018-06-25 08:00 A | 2018-06-25 17:00 A | 285 | 100% | 2018-06-25 08:00 | 2018-06-25 17:00 | 1d |  | 梁新飞; 阳杰; 郑益涛 | 24h | 24h | 1,200 | 1,200 | 1,200 |
| 292 | 1.3.4.5 | 输出迭代测试结论 |  | 0.5d | 2018-06-26 08:00 A | 2018-06-26 12:00 A | 290 | 100% | 2018-06-26 08:00 | 2018-06-26 12:00 | 0.5d | start no earlier than 2018-01-25 08:00 | 阳杰 | 4h | 4h | 200 | 200 | 200 |
| 293 | 1.3.4.6 | 《需求跟踪矩阵》需求完成度检查与更新 |  | 0.5d | 2018-06-26 08:00 A | 2018-06-26 12:00 A | 292 | 100% | 2018-06-26 08:00 | 2018-06-26 12:00 | 0.5d |  | 王煜卿 | 4h | 4h | 200 | 200 | 200 |
| 294 | 1.3.4.7 | 产品验收（主流程验收） |  | 3d | 2018-06-26 13:00 A | 2018-06-29 12:00 A | 292 | 100% | 2018-06-26 13:00 | 2018-06-29 12:00 | 3d |  | 王煜卿 | 24h | 24h | 1,200 | 1,200 | 1,200 |
| 295 | 1.3.4.8 | 申请迭代里程碑 |  | 0.5d | 2018-06-29 13:00 A | 2018-06-29 17:00 A | 294 | 100% | 2018-06-29 13:00 | 2018-06-29 17:00 | 0.5d |  | 张银 | 4h | 4h | 200 | 200 | 200 |
| 296 | 1.3.4.9 | 建立阶段基线 |  | 0.5d | 2018-07-02 08:00 A | 2018-07-02 12:00 A | 295 | 100% | 2018-07-02 08:00 | 2018-07-02 12:00 | 0.5d |  | 吴赛清 | 4h | 4h | 200 | 200 | 200 |
| 297 | 1.4 | **迭代三(流程管理、培养方案)** |  | 28d | 2018-06-29 08:00 A | 2018-08-07 17:00 A |  | 100% | 2018-06-29 08:00 | 2018-08-07 17:00 | 28d |  |  | 836h | 836h | 41,800 | 41,800 | 41,800 |
| 298 | 1.4.1 | **需求阶段** |  | 2d | 2018-06-29 08:00 A | 2018-07-02 17:00 A |  | 100% | 2018-06-29 08:00 | 2018-07-02 17:00 | 2d |  |  | 16h | 16h | 800 | 800 | 800 |
| 299 | 1.4.1.1 | WBS分解 | manual | 1d | 2018-06-29 08:00 A | 2018-06-29 17:00 A |  | 100% | 2018-06-29 08:00 | 2018-06-29 17:00 | 1d | start no earlier than 2018-06-29 08:00 | 张银 | 8h | 8h | 400 | 400 | 400 |
| 300 | 1.4.1.2 | 工作量预估算 |  | 1d | 2018-06-29 17:00 A | 2018-07-02 17:00 A | 299 | 100% | 2018-06-29 17:00 | 2018-07-02 17:00 | 1d |  | 伍斌; 易程亮; 张银 | 8h | 8h | 400 | 400 | 400 |
| 301 | 1.4.2 | **设计阶段** |  | 7d | 2018-07-03 08:00 A | 2018-07-11 17:00 A |  | 100% | 2018-07-03 08:00 | 2018-07-11 17:00 | 7d |  |  | 224h | 224h | 11,200 | 11,200 | 11,200 |
| 302 | 1.4.2.1 | 项目工作环境搭建 |  | 1d | 2018-07-03 08:00 A | 2018-07-03 17:00 A | 300 | 100% | 2018-07-03 08:00 | 2018-07-03 17:00 | 1d |  | 张银; 伍斌; 易程亮 | 8h | 8h | 400 | 400 | 400 |
| 303 | 1.4.2.2 | **日程表** |  | 3d | 2018-07-04 08:00 A | 2018-07-06 17:00 A |  | 100% | 2018-07-04 08:00 | 2018-07-06 17:00 | 3d |  |  | 48h | 48h | 2,400 | 2,400 | 2,400 |
| 304 | 1.4.2.2.1 | 日程表初稿 |  | 1d | 2018-07-04 08:00 A | 2018-07-04 17:00 A | 302 | 100% | 2018-07-04 08:00 | 2018-07-04 17:00 | 1d |  | 张银 | 8h | 8h | 400 | 400 | 400 |
| 305 | 1.4.2.2.2 | 日程表讲解、讨论 |  | 0.5d | 2018-07-05 08:00 A | 2018-07-05 12:00 A | 304 | 100% | 2018-07-05 08:00 | 2018-07-05 12:00 | 0.5d |  | 张银; 伍斌; 王煜卿; 李淑贞; 易程亮 | 20h | 20h | 1,000 | 1,000 | 1,000 |
| 306 | 1.4.2.2.3 | 日程表评审、修改 |  | 0.5d | 2018-07-06 13:00 A | 2018-07-06 17:00 A | 305FS+1d | 100% | 2018-07-06 13:00 | 2018-07-06 17:00 | 0.5d |  | 张银; 伍斌; 王煜卿; 李淑贞; 易程亮 | 20h | 20h | 1,000 | 1,000 | 1,000 |
| 307 | 1.4.2.3 | **数据库设计** |  | 3d | 2018-07-04 08:00 A | 2018-07-06 17:00 A |  | 100% | 2018-07-04 08:00 | 2018-07-06 17:00 | 3d |  |  | 72h | 72h | 3,600 | 3,600 | 3,600 |
| 308 | 1.4.2.3.1 | 数据库设计初稿 |  | 1d | 2018-07-04 08:00 A | 2018-07-04 17:00 A | 302 | 100% | 2018-07-04 08:00 | 2018-07-04 17:00 | 1d |  | 张银; 伍斌; 易程亮 | 24h | 24h | 1,200 | 1,200 | 1,200 |
| 309 | 1.4.2.3.2 | 数据库设计讲解与讨论 |  | 1d | 2018-07-05 08:00 A | 2018-07-05 17:00 A | 308 | 100% | 2018-07-05 08:00 | 2018-07-05 17:00 | 1d |  | 张银; 伍斌; 易程亮 | 24h | 24h | 1,200 | 1,200 | 1,200 |
| 310 | 1.4.2.3.3 | 数据库设计正式评审会议 |  | 0.5d | 2018-07-06 08:00 A | 2018-07-06 12:00 A | 309 | 100% | 2018-07-06 08:00 | 2018-07-06 12:00 | 0.5d |  | 张银; 伍斌; 易程亮 | 12h | 12h | 600 | 600 | 600 |
| 311 | 1.4.2.3.4 | 数据库设计修改 |  | 0.5d | 2018-07-06 13:00 A | 2018-07-06 17:00 A | 310 | 100% | 2018-07-06 13:00 | 2018-07-06 17:00 | 0.5d |  | 张银; 伍斌; 易程亮 | 12h | 12h | 600 | 600 | 600 |

| ID | WBS | Task | Type | Duration | Start | Finish | Predecessors | Complete | Baseline start | Baseline finish | Baseline duration | Constraint | Resources | Work | Actual work | Cost | Baseline cost | Actual cost |
| --- | --- | --- | --- | --- | --- | --- | --- | --- | --- | --- | --- | --- | --- | --- | --- | --- | --- | --- |
| 312 | 1.4.2.4 | **测试需求分析** |  | 6d | 2018-07-04 08:00 A | 2018-07-11 17:00 A |  | 100% | 2018-07-04 08:00 | 2018-07-11 17:00 | 6d |  |  | 96h | 96h | 4,800 | 4,800 | 4,800 |
| 313 | 1.4.2.4.1 | 测试需求分析编写 |  | 6d | 2018-07-04 08:00 A | 2018-07-11 17:00 A | 302 | 100% | 2018-07-04 08:00 | 2018-07-11 17:00 | 6d |  | 李淑贞 | 48h | 48h | 2,400 | 2,400 | 2,400 |
| 314 | 1.4.2.4.2 | 测试需求分析预评审 |  | 0.5d | 2018-07-09 08:00 A | 2018-07-09 12:00 A | 313 | 100% | 2018-07-09 08:00 | 2018-07-09 12:00 | 0.5d |  | 伍斌; 张银; 王煜卿; 李淑贞; 易程亮 | 20h | 20h | 1,000 | 1,000 | 1,000 |
| 315 | 1.4.2.4.3 | 测试需求分析正式评审 |  | 0.5d | 2018-07-09 13:00 A | 2018-07-09 17:00 A | 314 | 100% | 2018-07-09 13:00 | 2018-07-09 17:00 | 0.5d |  | 伍斌; 张银; 王煜卿; 李淑贞; 易程亮 | 20h | 20h | 1,000 | 1,000 | 1,000 |
| 316 | 1.4.2.4.4 | 测试需求分析修改 |  | 1d | 2018-07-10 08:00 A | 2018-07-10 17:00 A | 315 | 100% | 2018-07-10 08:00 | 2018-07-10 17:00 | 1d |  | 李淑贞 | 8h | 8h | 400 | 400 | 400 |
| 317 | 1.4.3 | **编码阶段** |  | 16.5d | 2018-07-03 08:00 A | 2018-07-25 12:00 A |  | 100% | 2018-07-03 08:00 | 2018-07-25 12:00 | 16.5d |  |  | 324h | 324h | 16,200 | 16,200 | 16,200 |
| 318 | 1.4.3.1 | 数据字典创建、枚举类创建 | manual | 0.5d | 2018-07-03 08:00 A | 2018-07-03 15:00 A |  | 100% | 2018-07-03 08:00 | 2018-07-03 15:00 | 0.5d |  | 伍斌 | 4h | 4h | 200 | 200 | 200 |
| 319 | 1.4.3.2 | 权限码创建、菜单创建 |  | 0.5d | 2018-07-03 15:00 A | 2018-07-04 12:00 A | 318 | 100% | 2018-07-03 15:00 | 2018-07-04 12:00 | 0.5d | start no earlier than 2018-07-02 08:00 | 伍斌 | 4h | 4h | 200 | 200 | 200 |
| 320 | 1.4.3.3 | 数据库初始化、脚本、po类创建 |  | 0.5d | 2018-07-09 08:00 A | 2018-07-09 12:00 A | 311 | 100% | 2018-07-09 08:00 | 2018-07-09 12:00 | 0.5d | start no earlier than 2018-07-02 08:00 | 伍斌 | 4h | 4h | 200 | 200 | 200 |
| 321 | 1.4.3.4 | 前端html | manual | 3d | 2018-07-06 08:00 A | 2018-07-10 17:00 A |  | 100% | 2018-07-06 08:00 | 2018-07-10 17:00 | 3d | start no earlier than 2018-07-06 08:00 | 丁迅 | 24h | 24h | 1,200 | 1,200 | 1,200 |
| 322 | 1.4.3.5 | **流程管理** |  | 6.5d | 2018-07-09 13:00 A | 2018-07-17 17:00 A |  | 100% | 2018-07-09 13:00 | 2018-07-17 17:00 | 6.5d |  |  | 52h | 52h | 2,600 | 2,600 | 2,600 |
| 323 | 1.4.3.5.1 | **流程设置** |  | 3.5d | 2018-07-09 13:00 A | 2018-07-12 17:00 A |  | 100% | 2018-07-09 13:00 | 2018-07-12 17:00 | 3.5d |  |  | 28h | 28h | 1,400 | 1,400 | 1,400 |
| 324 | 1.4.3.5.1.1 | 列表功能（查询、列表） |  | 1d | 2018-07-09 13:00 A | 2018-07-10 12:00 A | 320 | 100% | 2018-07-09 13:00 | 2018-07-10 12:00 | 1d |  | 易程亮 | 8h | 8h | 400 | 400 | 400 |
| 325 | 1.4.3.5.1.2 | 列表功能（启用、禁用） |  | 0.5d | 2018-07-10 13:00 A | 2018-07-10 17:00 A | 324 | 100% | 2018-07-10 13:00 | 2018-07-10 17:00 | 0.5d |  | 易程亮 | 4h | 4h | 200 | 200 | 200 |
| 326 | 1.4.3.5.1.3 | 流程设置（节点设置、角色设置、保存） |  | 2d | 2018-07-11 08:00 A | 2018-07-12 17:00 A | 325 | 100% | 2018-07-11 08:00 | 2018-07-12 17:00 | 2d |  | 易程亮 | 16h | 16h | 800 | 800 | 800 |
| 327 | 1.4.3.5.2 | **流程接口** |  | 3d | 2018-07-13 08:00 A | 2018-07-17 17:00 A |  | 100% | 2018-07-13 08:00 | 2018-07-17 17:00 | 3d |  |  | 24h | 24h | 1,200 | 1,200 | 1,200 |
| 328 | 1.4.3.5.2.1 | 获取下环节接收人 |  | 1d | 2018-07-13 08:00 A | 2018-07-13 17:00 A | 326 | 100% | 2018-07-13 08:00 | 2018-07-13 17:00 | 1d |  | 易程亮 | 8h | 8h | 400 | 400 | 400 |
| 329 | 1.4.3.5.2.2 | 流程送下环节 |  | 1d | 2018-07-16 08:00 A | 2018-07-16 17:00 A | 328 | 100% | 2018-07-16 08:00 | 2018-07-16 17:00 | 1d |  | 易程亮 | 8h | 8h | 400 | 400 | 400 |
| 330 | 1.4.3.5.2.3 | 流程退回发起人 |  | 0.5d | 2018-07-17 08:00 A | 2018-07-17 12:00 A | 329 | 100% | 2018-07-17 08:00 | 2018-07-17 12:00 | 0.5d |  | 易程亮 | 4h | 4h | 200 | 200 | 200 |
| 331 | 1.4.3.5.2.4 | 获取流程审批记录 |  | 0.5d | 2018-07-17 13:00 A | 2018-07-17 17:00 A | 330 | 100% | 2018-07-17 13:00 | 2018-07-17 17:00 | 0.5d |  | 易程亮 | 4h | 4h | 200 | 200 | 200 |
| 332 | 1.4.3.6 | **培养方案** |  | 11d | 2018-07-09 13:00 A | 2018-07-24 12:00 A |  | 100% | 2018-07-09 13:00 | 2018-07-24 12:00 | 11d |  |  | 124h | 124h | 6,200 | 6,200 | 6,200 |
| 333 | 1.4.3.6.1 | 设置专业实践环节（修改原功能） |  | 1d | 2018-07-09 13:00 A | 2018-07-10 12:00 A | 320 | 100% | 2018-07-09 13:00 | 2018-07-10 12:00 | 1d |  | 伍斌 | 8h | 8h | 400 | 400 | 400 |
| 334 | 1.4.3.6.2 | 培养方案提交（查询、列表、导出） |  | 1.5d | 2018-07-10 13:00 A | 2018-07-11 17:00 A | 333 | 100% | 2018-07-10 13:00 | 2018-07-11 17:00 | 1.5d |  | 伍斌 | 12h | 12h | 600 | 600 | 600 |
| 335 | 1.4.3.6.3 | 培养方案提交（送审） |  | 2d | 2018-07-12 08:00 A | 2018-07-13 17:00 A | 334 | 100% | 2018-07-12 08:00 | 2018-07-13 17:00 | 2d |  | 伍斌 | 16h | 16h | 800 | 800 | 800 |
| 336 | 1.4.3.6.4 | 培养方案提交（查看详情） |  | 1d | 2018-07-16 08:00 A | 2018-07-16 17:00 A | 335 | 100% | 2018-07-16 08:00 | 2018-07-16 17:00 | 1d |  | 伍斌 | 8h | 8h | 400 | 400 | 400 |
| 337 | 1.4.3.6.5 | 培养方案审核（查询、列表、导出） |  | 1.5d | 2018-07-17 08:00 A | 2018-07-18 12:00 A | 336 | 100% | 2018-07-17 08:00 | 2018-07-18 12:00 | 1.5d |  | 伍斌 | 12h | 12h | 600 | 600 | 600 |
| 338 | 1.4.3.6.6 | 培养方案审核（审核：查看、保存、选择审核人） |  | 2d | 2018-07-18 13:00 A | 2018-07-20 12:00 A | 337 | 100% | 2018-07-18 13:00 | 2018-07-20 12:00 | 2d |  | 伍斌 | 16h | 16h | 800 | 800 | 800 |
| 339 | 1.4.3.6.7 | 培养方案发布（查询、列表、） |  | 1d | 2018-07-18 08:00 A | 2018-07-18 17:00 A | 331 | 100% | 2018-07-18 08:00 | 2018-07-18 17:00 | 1d |  | 易程亮 | 8h | 8h | 400 | 400 | 400 |
| 340 | 1.4.3.6.8 | 培养方案发布（发布、取消、导出） |  | 1d | 2018-07-19 08:00 A | 2018-07-19 17:00 A | 339 | 100% | 2018-07-19 08:00 | 2018-07-19 17:00 | 1d |  | 易程亮 | 8h | 8h | 400 | 400 | 400 |
| 341 | 1.4.3.6.9 | 培养方案发布（查看） |  | 0.5d | 2018-07-20 08:00 A | 2018-07-20 12:00 A | 340 | 100% | 2018-07-20 08:00 | 2018-07-20 12:00 | 0.5d |  | 易程亮 | 4h | 4h | 200 | 200 | 200 |
| 342 | 1.4.3.6.10 | 查询培养方案-学分（修改原功能） |  | 2d | 2018-07-20 13:00 A | 2018-07-24 12:00 A | 338 | 100% | 2018-07-20 13:00 | 2018-07-24 12:00 | 2d |  | 伍斌 | 16h | 16h | 800 | 800 | 800 |
| 343 | 1.4.3.6.11 | 查询培养方案-学时（修改原功能） |  | 2d | 2018-07-20 13:00 A | 2018-07-24 12:00 A | 341 | 100% | 2018-07-20 13:00 | 2018-07-24 12:00 | 2d |  | 易程亮 | 16h | 16h | 800 | 800 | 800 |

| ID | WBS | Task | Type | Duration | Start | Finish | Predecessors | Complete | Baseline start | Baseline finish | Baseline duration | Constraint | Resources | Work | Actual work | Cost | Baseline cost | Actual cost |
| --- | --- | --- | --- | --- | --- | --- | --- | --- | --- | --- | --- | --- | --- | --- | --- | --- | --- | --- |
| 344 | 1.4.3.7 | **测试用例** |  | 6d | 2018-07-11 08:00 A | 2018-07-18 17:00 A |  | 100% | 2018-07-11 08:00 | 2018-07-18 17:00 | 6d |  |  | 48h | 48h | 2,400 | 2,400 | 2,400 |
| 345 | 1.4.3.7.1 | 测试用例编写 |  | 4d | 2018-07-11 08:00 A | 2018-07-16 17:00 A | 316 | 100% | 2018-07-11 08:00 | 2018-07-16 17:00 | 4d |  | 李淑贞 | 32h | 32h | 1,600 | 1,600 | 1,600 |
| 346 | 1.4.3.7.2 | 测试用例预评审 |  | 0.5d | 2018-07-17 08:00 A | 2018-07-17 12:00 A | 345 | 100% | 2018-07-17 08:00 | 2018-07-17 12:00 | 0.5d |  | 李淑贞 | 4h | 4h | 200 | 200 | 200 |
| 347 | 1.4.3.7.3 | 测试用例正式评审 |  | 0.5d | 2018-07-17 13:00 A | 2018-07-17 17:00 A | 346 | 100% | 2018-07-17 13:00 | 2018-07-17 17:00 | 0.5d |  | 李淑贞 | 4h | 4h | 200 | 200 | 200 |
| 348 | 1.4.3.7.4 | 测试用例修改 |  | 1d | 2018-07-18 08:00 A | 2018-07-18 17:00 A | 347 | 100% | 2018-07-18 08:00 | 2018-07-18 17:00 | 1d |  | 李淑贞 | 8h | 8h | 400 | 400 | 400 |
| 349 | 1.4.3.8 | **第一轮准出测试** |  | 4.5d | 2018-07-19 08:00 A | 2018-07-25 12:00 A |  | 100% | 2018-07-19 08:00 | 2018-07-25 12:00 | 4.5d |  |  | 64h | 64h | 3,200 | 3,200 | 3,200 |
| 350 | 1.4.3.8.1 | 协助单元测试 | manual | 3d | 2018-07-19 08:00 A | 2018-07-23 17:00 A | 348, 449 | 100% | 2018-07-19 08:00 | 2018-07-23 17:00 | 3d |  | 李淑贞 | 24h | 24h | 1,200 | 1,200 | 1,200 |
| 351 | 1.4.3.8.2 | 系统自测、执行准出用例 | manual | 1d | 2018-07-24 08:00 A | 2018-07-24 17:00 A |  | 100% | 2018-07-24 08:00 | 2018-07-24 17:00 | 1d |  | 伍斌; 易程亮; 张银 | 32h | 32h | 1,600 | 1,600 | 1,600 |
| 352 | 1.4.3.8.3 | 准备部署包、整理数据库脚本 |  | 0.5d | 2018-07-25 08:00 A | 2018-07-25 12:00 A | 351 | 100% | 2018-07-25 08:00 | 2018-07-25 12:00 | 0.5d |  | 张银 | 4h | 4h | 200 | 200 | 200 |
| 353 | 1.4.3.8.4 | 搭建测试环境 |  | 0.5d | 2018-07-25 08:00 A | 2018-07-25 12:00 A | 351 | 100% | 2018-07-25 08:00 | 2018-07-25 12:00 | 0.5d |  | 李淑贞 | 4h | 4h | 200 | 200 | 200 |
| 354 | 1.4.4 | **测试阶段** |  | 9.5d | 2018-07-25 13:00 A | 2018-08-07 17:00 A |  | 100% | 2018-07-25 13:00 | 2018-08-07 17:00 | 9.5d |  |  | 272h | 272h | 13,600 | 13,600 | 13,600 |
| 355 | 1.4.4.1 | **第一轮测试** |  | 3d | 2018-07-25 13:00 A | 2018-07-30 12:00 A |  | 100% | 2018-07-25 13:00 | 2018-07-30 12:00 | 3d |  |  | 104h | 104h | 5,200 | 5,200 | 5,200 |
| 356 | 1.4.4.1.1 | 准入测试 |  | 1d | 2018-07-25 13:00 A | 2018-07-26 12:00 A | 349, 450 | 100% | 2018-07-25 13:00 | 2018-07-26 12:00 | 1d |  | 梁新飞; 阳杰; 李淑贞 | 24h | 24h | 1,200 | 1,200 | 1,200 |
| 357 | 1.4.4.1.2 | 功能测试 |  | 2d | 2018-07-26 13:00 A | 2018-07-30 12:00 A | 356 | 100% | 2018-07-26 13:00 | 2018-07-30 12:00 | 2d |  | 梁新飞; 阳杰; 李淑贞 | 48h | 48h | 2,400 | 2,400 | 2,400 |
| 358 | 1.4.4.1.3 | bug修改 |  | 2d | 2018-07-26 13:00 A | 2018-07-30 12:00 A | 356 | 100% | 2018-07-26 13:00 | 2018-07-30 12:00 | 2d |  | 伍斌; 易程亮 | 32h | 32h | 1,600 | 1,600 | 1,600 |
| 359 | 1.4.4.2 | **第二轮测试** |  | 3d | 2018-07-30 13:00 A | 2018-08-02 12:00 A |  | 100% | 2018-07-30 13:00 | 2018-08-02 12:00 | 3d |  |  | 120h | 120h | 6,000 | 6,000 | 6,000 |
| 360 | 1.4.4.2.1 | 功能测试 |  | 3d | 2018-07-30 13:00 A | 2018-08-02 12:00 A | 355 | 100% | 2018-07-30 13:00 | 2018-08-02 12:00 | 3d |  | 梁新飞; 阳杰; 李淑贞 | 72h | 72h | 3,600 | 3,600 | 3,600 |
| 361 | 1.4.4.2.2 | bug修改 |  | 3d | 2018-07-30 13:00 A | 2018-08-02 12:00 A | 355 | 100% | 2018-07-30 13:00 | 2018-08-02 12:00 | 3d |  | 伍斌; 易程亮 | 48h | 48h | 2,400 | 2,400 | 2,400 |
| 362 | 1.4.4.3 | **第三轮回归** |  | 1d | 2018-08-02 13:00 A | 2018-08-03 12:00 A |  | 100% | 2018-08-02 13:00 | 2018-08-03 12:00 | 1d |  |  | 24h | 24h | 1,200 | 1,200 | 1,200 |
| 363 | 1.4.4.3.1 | 回归测试 |  | 1d | 2018-08-02 13:00 A | 2018-08-03 12:00 A | 359 | 100% | 2018-08-02 13:00 | 2018-08-03 12:00 | 1d |  | 梁新飞; 阳杰; 李淑贞 | 24h | 24h | 1,200 | 1,200 | 1,200 |
| 364 | 1.4.4.4 | 输出迭代测试结论 |  | 0.5d | 2018-08-03 13:00 A | 2018-08-03 17:00 A | 362 | 100% | 2018-08-03 13:00 | 2018-08-03 17:00 | 0.5d | start no earlier than 2018-01-25 08:00 | 梁新飞 | 4h | 4h | 200 | 200 | 200 |
| 365 | 1.4.4.5 | 《需求跟踪矩阵》需求完成度检查与更新 |  | 0.5d | 2018-08-06 08:00 A | 2018-08-06 12:00 A | 364 | 100% | 2018-08-06 08:00 | 2018-08-06 12:00 | 0.5d |  | 王煜卿 | 4h | 4h | 200 | 200 | 200 |
| 366 | 1.4.4.6 | 产品验收（主流程验收） |  | 1d | 2018-08-06 08:00 A | 2018-08-06 17:00 A | 364 | 100% | 2018-08-06 08:00 | 2018-08-06 17:00 | 1d |  | 王煜卿 | 8h | 8h | 400 | 400 | 400 |
| 367 | 1.4.4.7 | 申请迭代里程碑 |  | 0.5d | 2018-08-07 08:00 A | 2018-08-07 12:00 A | 366 | 100% | 2018-08-07 08:00 | 2018-08-07 12:00 | 0.5d |  | 张银 | 4h | 4h | 200 | 200 | 200 |
| 368 | 1.4.4.8 | 建立阶段基线 |  | 0.5d | 2018-08-07 13:00 A | 2018-08-07 17:00 A | 367 | 100% | 2018-08-07 13:00 | 2018-08-07 17:00 | 0.5d |  | 吴赛清 | 4h | 4h | 200 | 200 | 200 |

| ID | WBS | Task | Type | Duration | Start | Finish | Predecessors | Complete | Baseline start | Baseline finish | Baseline duration | Constraint | Resources | Work | Actual work | Cost | Baseline cost | Actual cost |
| --- | --- | --- | --- | --- | --- | --- | --- | --- | --- | --- | --- | --- | --- | --- | --- | --- | --- | --- |
| 369 | 1.5 | **迭代四(教材系统)** |  | 22.5d | 2018-08-10 08:00 A | 2018-09-11 12:00 A |  | 100% | 2018-08-10 08:00 | 2018-09-11 12:00 | 22.5d |  |  | 1196h | 1196h | 59,800 | 59,800 | 59,800 |
| 370 | 1.5.1 | **需求阶段** |  | 2.5d | 2018-08-10 08:00 A | 2018-08-14 12:00 A |  | 100% | 2018-08-10 08:00 | 2018-08-14 12:00 | 2.5d |  |  | 32h | 32h | 1,600 | 1,600 | 1,600 |
| 371 | 1.5.1.1 | WBS分解 |  | 1d | 2018-08-10 08:00 A | 2018-08-10 17:00 A |  | 100% | 2018-08-10 08:00 | 2018-08-10 17:00 | 1d |  | 潘文彬 | 8h | 8h | 400 | 400 | 400 |
| 372 | 1.5.1.2 | 工作量预估算 |  | 1d | 2018-08-10 13:00 A | 2018-08-14 12:00 A | 371 | 100% | 2018-08-10 13:00 | 2018-08-14 12:00 | 1d |  | 潘文彬; 欧鹏; 何鑫华 | 24h | 24h | 1,200 | 1,200 | 1,200 |
| 373 | 1.5.2 | **设计阶段** |  | 3d | 2018-08-13 08:00 A | 2018-08-15 17:00 A |  | 100% | 2018-08-13 08:00 | 2018-08-15 17:00 | 3d |  |  | 100h | 100h | 5,000 | 5,000 | 5,000 |
| 374 | 1.5.2.1 | **日程表** |  | 3d | 2018-08-13 08:00 A | 2018-08-15 17:00 A |  | 100% | 2018-08-13 08:00 | 2018-08-15 17:00 | 3d |  |  | 48h | 48h | 2,400 | 2,400 | 2,400 |
| 375 | 1.5.2.1.1 | 日程表初稿 | manual | 2d | 2018-08-13 08:00 A | 2018-08-14 17:00 A |  | 100% | 2018-08-13 08:00 | 2018-08-14 17:00 | 2d |  | 潘文彬 | 16h | 16h | 800 | 800 | 800 |
| 376 | 1.5.2.1.2 | 日程表讲解、讨论 |  | 0.5d | 2018-08-15 08:00 A | 2018-08-15 12:00 A | 375 | 100% | 2018-08-15 08:00 | 2018-08-15 12:00 | 0.5d |  | 欧鹏; 陈李好; 何鑫华; 王平刚; 张伍超; 潘文彬; 张莉 | 28h | 28h | 1,400 | 1,400 | 1,400 |
| 377 | 1.5.2.1.3 | 日程表评审、修改 |  | 0.5d | 2018-08-15 13:00 A | 2018-08-15 17:00 A | 376 | 100% | 2018-08-15 13:00 | 2018-08-15 17:00 | 0.5d |  | 潘文彬 | 4h | 4h | 200 | 200 | 200 |
| 378 | 1.5.2.2 | **数据库设计** |  | 3d | 2018-08-13 08:00 A | 2018-08-15 17:00 A |  | 100% | 2018-08-13 08:00 | 2018-08-15 17:00 | 3d |  |  | 52h | 52h | 2,600 | 2,600 | 2,600 |
| 379 | 1.5.2.2.1 | 数据库设计初稿 | manual | 2d | 2018-08-13 08:00 A | 2018-08-14 17:00 A |  | 100% | 2018-08-13 08:00 | 2018-08-14 17:00 | 2d |  | 欧鹏 | 16h | 16h | 800 | 800 | 800 |
| 380 | 1.5.2.2.2 | 数据库设计讲解与讨论 |  | 0.5d | 2018-08-15 08:00 A | 2018-08-15 12:00 A | 379 | 100% | 2018-08-15 08:00 | 2018-08-15 12:00 | 0.5d |  | 欧鹏; 陈李好; 何鑫华; 王平刚; 张伍超; 潘文彬; 张莉; 易程亮 | 32h | 32h | 1,600 | 1,600 | 1,600 |
| 381 | 1.5.2.2.3 | 数据库设计修改 |  | 0.5d | 2018-08-15 13:00 A | 2018-08-15 17:00 A | 380 | 100% | 2018-08-15 13:00 | 2018-08-15 17:00 | 0.5d |  | 欧鹏 | 4h | 4h | 200 | 200 | 200 |
| 382 | 1.5.3 | **编码阶段** |  | 14d | 2018-08-10 08:00 A | 2018-08-29 17:00 A |  | 100% | 2018-08-10 08:00 | 2018-08-29 17:00 | 14d |  |  | 620h | 620h | 31,000 | 31,000 | 31,000 |
| 383 | 1.5.3.1 | 前端UI |  | 4d | 2018-08-10 08:00 A | 2018-08-15 17:00 A |  | 100% | 2018-08-10 08:00 | 2018-08-15 17:00 | 4d | start no earlier than 2018-08-10 08:00 | 郑建锋 | 32h | 32h | 1,600 | 1,600 | 1,600 |
| 384 | 1.5.3.2 | 数据库初始化 |  | 0.5d | 2018-08-16 08:00 A | 2018-08-16 12:00 A | 381 | 100% | 2018-08-16 08:00 | 2018-08-16 12:00 | 0.5d |  | 欧鹏 | 4h | 4h | 200 | 200 | 200 |
| 385 | 1.5.3.3 | 菜单脚本、数据字典脚本、权限码 |  | 2d | 2018-08-13 08:00 A | 2018-08-14 17:00 A |  | 100% | 2018-08-13 08:00 | 2018-08-14 17:00 | 2d | start no earlier than 2018-08-13 08:00 | 何鑫华 | 16h | 16h | 800 | 800 | 800 |
| 386 | 1.5.3.4 | **供应商管理** |  | 2.5d | 2018-08-16 08:00 A | 2018-08-20 12:00 A |  | 100% | 2018-08-16 08:00 | 2018-08-20 12:00 | 2.5d |  |  | 20h | 20h | 1,000 | 1,000 | 1,000 |
| 387 | 1.5.3.4.1 | 列表功能（查询、删除） |  | 1d | 2018-08-16 08:00 A | 2018-08-16 17:00 A |  | 100% | 2018-08-16 08:00 | 2018-08-16 17:00 | 1d | start no earlier than 2018-08-16 08:00 | 陈李好 | 8h | 8h | 400 | 400 | 400 |
| 388 | 1.5.3.4.2 | 新增&修改 |  | 1d | 2018-08-17 08:00 A | 2018-08-17 17:00 A | 387 | 100% | 2018-08-17 08:00 | 2018-08-17 17:00 | 1d |  | 陈李好 | 8h | 8h | 400 | 400 | 400 |
| 389 | 1.5.3.4.3 | 查看、导出 |  | 0.5d | 2018-08-20 08:00 A | 2018-08-20 12:00 A | 388 | 100% | 2018-08-20 08:00 | 2018-08-20 12:00 | 0.5d |  | 陈李好 | 4h | 4h | 200 | 200 | 200 |
| 390 | 1.5.3.5 | **出版社管理** |  | 2.5d | 2018-08-20 13:00 A | 2018-08-22 17:00 A |  | 100% | 2018-08-20 13:00 | 2018-08-22 17:00 | 2.5d |  |  | 20h | 20h | 1,000 | 1,000 | 1,000 |
| 391 | 1.5.3.5.1 | 列表功能（查询、删除） |  | 1d | 2018-08-20 13:00 A | 2018-08-21 12:00 A | 389 | 100% | 2018-08-20 13:00 | 2018-08-21 12:00 | 1d |  | 易程亮 | 8h | 8h | 400 | 400 | 400 |
| 392 | 1.5.3.5.2 | 新增&修改 |  | 1d | 2018-08-21 13:00 A | 2018-08-22 12:00 A | 391 | 100% | 2018-08-21 13:00 | 2018-08-22 12:00 | 1d |  | 易程亮 | 8h | 8h | 400 | 400 | 400 |
| 393 | 1.5.3.5.3 | 导出 |  | 0.5d | 2018-08-22 13:00 A | 2018-08-22 17:00 A | 392 | 100% | 2018-08-22 13:00 | 2018-08-22 17:00 | 0.5d |  | 易程亮 | 4h | 4h | 200 | 200 | 200 |

| ID | WBS | Task | Duration | Start | Finish | Predecessors | Complete | Baseline start | Baseline finish | Baseline duration | Constraint | Resources | Work | Actual work | Cost | Baseline cost | Actual cost |
| --- | --- | --- | --- | --- | --- | --- | --- | --- | --- | --- | --- | --- | --- | --- | --- | --- | --- |
| 394 | 1.5.3.6 | **教材库** | 3d | 2018-08-23 08:00 A | 2018-08-27 17:00 A |  | 100% | 2018-08-23 08:00 | 2018-08-27 17:00 | 3d |  |  | 24h | 24h | 1,200 | 1,200 | 1,200 |
| 395 | 1.5.3.6.1 | 列表功能（查询、删除、启用、禁用） | 1d | 2018-08-23 08:00 A | 2018-08-23 17:00 A | 393 | 100% | 2018-08-23 08:00 | 2018-08-23 17:00 | 1d | start no earlier than 2018-08-15 08:00 | 易程亮 | 8h | 8h | 400 | 400 | 400 |
| 396 | 1.5.3.6.2 | 新增&修改 | 1d | 2018-08-24 08:00 A | 2018-08-24 17:00 A | 395 | 100% | 2018-08-24 08:00 | 2018-08-24 17:00 | 1d |  | 易程亮 | 8h | 8h | 400 | 400 | 400 |
| 397 | 1.5.3.6.3 | 导入 | 0.5d | 2018-08-27 08:00 A | 2018-08-27 12:00 A | 396 | 100% | 2018-08-27 08:00 | 2018-08-27 12:00 | 0.5d |  | 陈李好 | 4h | 4h | 200 | 200 | 200 |
| 398 | 1.5.3.6.4 | 查看、导出 | 0.5d | 2018-08-27 13:00 A | 2018-08-27 17:00 A | 397 | 100% | 2018-08-27 13:00 | 2018-08-27 17:00 | 0.5d |  | 陈李好 | 4h | 4h | 200 | 200 | 200 |
| 399 | 1.5.3.7 | **教材申报** | 9d | 2018-08-16 08:00 A | 2018-08-28 17:00 A |  | 100% | 2018-08-16 08:00 | 2018-08-28 17:00 | 9d |  |  | 112h | 112h | 5,600 | 5,600 | 5,600 |
| 400 | 1.5.3.7.1 | 教师确认教材时间控制 | 0.5d | 2018-08-16 08:00 A | 2018-08-16 12:00 A |  | 100% | 2018-08-16 08:00 | 2018-08-16 12:00 | 0.5d | start no earlier than 2018-08-16 08:00 | 张伍超 | 4h | 4h | 200 | 200 | 200 |
| 401 | 1.5.3.7.2 | **课程是否需要教材设置** | 3d | 2018-08-16 08:00 A | 2018-08-20 17:00 A |  | 100% | 2018-08-16 08:00 | 2018-08-20 17:00 | 3d |  |  | 24h | 24h | 1,200 | 1,200 | 1,200 |
| 402 | 1.5.3.7.2.1 | 列表功能（查询、删除） | 1.5d | 2018-08-16 08:00 A | 2018-08-17 12:00 A |  | 100% | 2018-08-16 08:00 | 2018-08-17 12:00 | 1.5d | start no earlier than 2018-08-16 08:00 | 欧鹏 | 12h | 12h | 600 | 600 | 600 |
| 403 | 1.5.3.7.2.2 | 添加 | 1.5d | 2018-08-17 13:00 A | 2018-08-20 17:00 A | 402 | 100% | 2018-08-17 13:00 | 2018-08-20 17:00 | 1.5d |  | 欧鹏 | 12h | 12h | 600 | 600 | 600 |
| 404 | 1.5.3.7.3 | **课程可选教材范围设置** | 5.5d | 2018-08-21 08:00 A | 2018-08-28 12:00 A |  | 100% | 2018-08-21 08:00 | 2018-08-28 12:00 | 5.5d |  |  | 32h | 32h | 1,600 | 1,600 | 1,600 |
| 405 | 1.5.3.7.3.1 | 列表功能（查询） | 1.5d | 2018-08-21 08:00 A | 2018-08-22 12:00 A | 403 | 100% | 2018-08-21 08:00 | 2018-08-22 12:00 | 1.5d |  | 欧鹏 | 12h | 12h | 600 | 600 | 600 |
| 406 | 1.5.3.7.3.2 | 设置 | 1.5d | 2018-08-22 13:00 A | 2018-08-23 17:00 A | 405 | 100% | 2018-08-22 13:00 | 2018-08-23 17:00 | 1.5d |  | 欧鹏 | 12h | 12h | 600 | 600 | 600 |
| 407 | 1.5.3.7.3.3 | 查看 | 0.5d | 2018-08-24 08:00 A | 2018-08-24 12:00 A | 406 | 100% | 2018-08-24 08:00 | 2018-08-24 12:00 | 0.5d |  | 欧鹏 | 4h | 4h | 200 | 200 | 200 |
| 408 | 1.5.3.7.3.4 | 导出 | 0.5d | 2018-08-28 08:00 A | 2018-08-28 12:00 A | 398 | 100% | 2018-08-28 08:00 | 2018-08-28 12:00 | 0.5d |  | 陈李好 | 4h | 4h | 200 | 200 | 200 |
| 409 | 1.5.3.7.4 | **确认课程使用教材** | 9d | 2018-08-16 08:00 A | 2018-08-28 17:00 A |  | 100% | 2018-08-16 08:00 | 2018-08-28 17:00 | 9d |  |  | 28h | 28h | 1,400 | 1,400 | 1,400 |
| 410 | 1.5.3.7.4.1 | 列表功能（查询） | 1.5d | 2018-08-16 08:00 A | 2018-08-17 12:00 A |  | 100% | 2018-08-16 08:00 | 2018-08-17 12:00 | 1.5d | start no earlier than 2018-08-16 08:00 | 王平刚 | 12h | 12h | 600 | 600 | 600 |
| 411 | 1.5.3.7.4.2 | 审核、选择教材、查看 | 1.5d | 2018-08-17 13:00 A | 2018-08-20 17:00 A | 410 | 100% | 2018-08-17 13:00 | 2018-08-20 17:00 | 1.5d |  | 王平刚 | 12h | 12h | 600 | 600 | 600 |
| 412 | 1.5.3.7.4.3 | 导出 | 0.5d | 2018-08-28 13:00 A | 2018-08-28 17:00 A | 408 | 100% | 2018-08-28 13:00 | 2018-08-28 17:00 | 0.5d |  | 陈李好 | 4h | 4h | 200 | 200 | 200 |
| 413 | 1.5.3.7.5 | 学生确认订购教材时间设置 | 0.5d | 2018-08-16 13:00 A | 2018-08-16 17:00 A | 400 | 100% | 2018-08-16 13:00 | 2018-08-16 17:00 | 0.5d |  | 张伍超 | 4h | 4h | 200 | 200 | 200 |
| 414 | 1.5.3.7.6 | 调整学生订购教材-列表功能（查询、取消、订购、导出） | 1.5d | 2018-08-21 08:00 A | 2018-08-22 12:00 A | 411 | 100% | 2018-08-21 08:00 | 2018-08-22 12:00 | 1.5d | start no earlier than 2018-08-15 08:00 | 王平刚 | 12h | 12h | 600 | 600 | 600 |
| 415 | 1.5.3.7.7 | 查询申报情况-列表功能（查询、导出） | 1d | 2018-08-27 13:00 A | 2018-08-28 12:00 A | 444 | 100% | 2018-08-27 13:00 | 2018-08-28 12:00 | 1d | start no earlier than 2018-08-15 08:00 | 王平刚 | 8h | 8h | 400 | 400 | 400 |
| 416 | 1.5.3.8 | **教材征订** | 3.5d | 2018-08-23 13:00 A | 2018-08-28 17:00 A |  | 100% | 2018-08-23 13:00 | 2018-08-28 17:00 | 3.5d |  |  | 32h | 32h | 1,600 | 1,600 | 1,600 |
| 417 | 1.5.3.8.1 | 教材征订-列表功能（查询、删除） | 1d | 2018-08-24 13:00 A | 2018-08-27 12:00 A | 407 | 100% | 2018-08-24 13:00 | 2018-08-27 12:00 | 1d | start no earlier than 2018-08-15 08:00 | 欧鹏 | 8h | 8h | 400 | 400 | 400 |
| 418 | 1.5.3.8.2 | 教材征订-添加、修改 | 1.5d | 2018-08-27 13:00 A | 2018-08-28 17:00 A | 417 | 100% | 2018-08-27 13:00 | 2018-08-28 17:00 | 1.5d |  | 欧鹏 | 12h | 12h | 600 | 600 | 600 |
| 419 | 1.5.3.8.3 | 教材征订-导出 | 0.5d | 2018-08-24 13:00 A | 2018-08-24 17:00 A | 420 | 100% | 2018-08-24 13:00 | 2018-08-24 17:00 | 0.5d |  | 张伍超 | 4h | 4h | 200 | 200 | 200 |
| 420 | 1.5.3.8.4 | 教材征订查询-列表功能（查询、导出） | 1d | 2018-08-23 13:00 A | 2018-08-24 12:00 A | 441 | 100% | 2018-08-23 13:00 | 2018-08-24 12:00 | 1d |  | 张伍超 | 8h | 8h | 400 | 400 | 400 |

| ID | WBS | Task | Duration | Start | Finish | Predecessors | Complete | Baseline start | Baseline finish | Baseline duration | Constraint | Resources | Work | Actual work | Cost | Baseline cost | Actual cost |
| --- | --- | --- | --- | --- | --- | --- | --- | --- | --- | --- | --- | --- | --- | --- | --- | --- | --- |
| 421 | 1.5.3.9 | **教材发放** | 8.5d | 2018-08-16 08:00 A | 2018-08-28 12:00 A |  | 100% | 2018-08-16 08:00 | 2018-08-28 12:00 | 8.5d |  |  | 92h | 92h | 4,600 | 4,600 | 4,600 |
| 422 | 1.5.3.9.1 | **学生禁领登记** | 3d | 2018-08-16 08:00 A | 2018-08-20 17:00 A |  | 100% | 2018-08-16 08:00 | 2018-08-20 17:00 | 3d |  |  | 24h | 24h | 1,200 | 1,200 | 1,200 |
| 423 | 1.5.3.9.1.1 | 列表功能（查询、删除） | 1d | 2018-08-16 08:00 A | 2018-08-16 17:00 A |  | 100% | 2018-08-16 08:00 | 2018-08-16 17:00 | 1d | start no earlier than 2018-08-16 08:00 | 何鑫华 | 8h | 8h | 400 | 400 | 400 |
| 424 | 1.5.3.9.1.2 | 禁领登记 | 1.5d | 2018-08-17 08:00 A | 2018-08-20 12:00 A | 423 | 100% | 2018-08-17 08:00 | 2018-08-20 12:00 | 1.5d |  | 何鑫华 | 12h | 12h | 600 | 600 | 600 |
| 425 | 1.5.3.9.1.3 | 修改、导出 | 0.5d | 2018-08-20 13:00 A | 2018-08-20 17:00 A | 424 | 100% | 2018-08-20 13:00 | 2018-08-20 17:00 | 0.5d |  | 何鑫华 | 4h | 4h | 200 | 200 | 200 |
| 426 | 1.5.3.9.2 | **教师用书发放** | 2d | 2018-08-21 08:00 A | 2018-08-22 17:00 A |  | 100% | 2018-08-21 08:00 | 2018-08-22 17:00 | 2d |  |  | 16h | 16h | 800 | 800 | 800 |
| 427 | 1.5.3.9.2.1 | 列表功能（查询、导出） | 1d | 2018-08-21 08:00 A | 2018-08-21 17:00 A | 425 | 100% | 2018-08-21 08:00 | 2018-08-21 17:00 | 1d |  | 何鑫华 | 8h | 8h | 400 | 400 | 400 |
| 428 | 1.5.3.9.2.2 | 领书、查看 | 1d | 2018-08-22 08:00 A | 2018-08-22 17:00 A | 427 | 100% | 2018-08-22 08:00 | 2018-08-22 17:00 | 1d |  | 何鑫华 | 8h | 8h | 400 | 400 | 400 |
| 429 | 1.5.3.9.3 | **学生用书发放** | 7.5d | 2018-08-17 08:00 A | 2018-08-28 12:00 A |  | 100% | 2018-08-17 08:00 | 2018-08-28 12:00 | 7.5d |  |  | 36h | 36h | 1,800 | 1,800 | 1,800 |
| 430 | 1.5.3.9.3.1 | 列表功能（查询、导出） | 1.5d | 2018-08-17 08:00 A | 2018-08-20 12:00 A | 413 | 100% | 2018-08-17 08:00 | 2018-08-20 12:00 | 1.5d |  | 张伍超 | 12h | 12h | 600 | 600 | 600 |
| 431 | 1.5.3.9.3.2 | 领书 | 1d | 2018-08-20 13:00 A | 2018-08-21 12:00 A | 430 | 100% | 2018-08-20 13:00 | 2018-08-21 12:00 | 1d |  | 张伍超 | 8h | 8h | 400 | 400 | 400 |
| 432 | 1.5.3.9.3.3 | 打印领书单 | 1d | 2018-08-24 13:00 A | 2018-08-27 12:00 A | 420 | 100% | 2018-08-24 13:00 | 2018-08-27 12:00 | 1d |  | 易程亮 | 8h | 8h | 400 | 400 | 400 |
| 433 | 1.5.3.9.3.4 | 打印班级领书单 | 1d | 2018-08-27 13:00 A | 2018-08-28 12:00 A | 432 | 100% | 2018-08-27 13:00 | 2018-08-28 12:00 | 1d |  | 易程亮 | 8h | 8h | 400 | 400 | 400 |
| 434 | 1.5.3.9.4 | 教学用书查询（查询、导出） | 1d | 2018-08-23 08:00 A | 2018-08-23 17:00 A | 428 | 100% | 2018-08-23 08:00 | 2018-08-23 17:00 | 1d |  | 何鑫华 | 8h | 8h | 400 | 400 | 400 |
| 435 | 1.5.3.9.5 | 学生用书查询（查询、导出） | 1d | 2018-08-21 13:00 A | 2018-08-22 12:00 A | 431 | 100% | 2018-08-21 13:00 | 2018-08-22 12:00 | 1d |  | 张伍超 | 8h | 8h | 400 | 400 | 400 |
| 436 | 1.5.3.10 | **教材结算** | 3d | 2018-08-24 08:00 A | 2018-08-28 17:00 A |  | 100% | 2018-08-24 08:00 | 2018-08-28 17:00 | 3d |  |  | 24h | 24h | 1,200 | 1,200 | 1,200 |
| 437 | 1.5.3.10.1 | 学生用书结算-列表功能（查询、导出） | 1d | 2018-08-24 08:00 A | 2018-08-24 17:00 A | 434 | 100% | 2018-08-24 08:00 | 2018-08-24 17:00 | 1d |  | 何鑫华 | 8h | 8h | 400 | 400 | 400 |
| 438 | 1.5.3.10.2 | 学生用书明细-列表功能（查询、导出） | 1d | 2018-08-27 08:00 A | 2018-08-27 17:00 A | 437 | 100% | 2018-08-27 08:00 | 2018-08-27 17:00 | 1d |  | 何鑫华 | 8h | 8h | 400 | 400 | 400 |
| 439 | 1.5.3.10.3 | 学期教材汇总（查询、导出） | 1d | 2018-08-28 08:00 A | 2018-08-28 17:00 A | 438 | 100% | 2018-08-28 08:00 | 2018-08-28 17:00 | 1d |  | 何鑫华 | 8h | 8h | 400 | 400 | 400 |
| 440 | 1.5.3.11 | **学生服务** | 1d | 2018-08-22 13:00 A | 2018-08-23 12:00 A |  | 100% | 2018-08-22 13:00 | 2018-08-23 12:00 | 1d |  |  | 16h | 16h | 800 | 800 | 800 |
| 441 | 1.5.3.11.1 | 领取教材信息 | 1d | 2018-08-22 13:00 A | 2018-08-23 12:00 A | 435 | 100% | 2018-08-22 13:00 | 2018-08-23 12:00 | 1d |  | 张伍超 | 8h | 8h | 400 | 400 | 400 |
| 442 | 1.5.3.11.2 | 教材订购 | 1d | 2018-08-22 13:00 A | 2018-08-23 12:00 A | 414 | 100% | 2018-08-22 13:00 | 2018-08-23 12:00 | 1d |  | 王平刚 | 8h | 8h | 400 | 400 | 400 |
| 443 | 1.5.3.12 | **教师服务** | 2d | 2018-08-23 13:00 A | 2018-08-27 12:00 A |  | 100% | 2018-08-23 13:00 | 2018-08-27 12:00 | 2d |  |  | 16h | 16h | 800 | 800 | 800 |
| 444 | 1.5.3.12.1 | 申报教材 | 2d | 2018-08-23 13:00 A | 2018-08-27 12:00 A | 442 | 100% | 2018-08-23 13:00 | 2018-08-27 12:00 | 2d |  | 王平刚 | 16h | 16h | 800 | 800 | 800 |

| ID | WBS | Task | Type | Duration | Start | Finish | Predecessors | Complete | Baseline start | Baseline finish | Baseline duration | Total slack | Free slack | Constraint | Resources | Work | Actual work | Cost | Baseline cost | Actual cost |
| --- | --- | --- | --- | --- | --- | --- | --- | --- | --- | --- | --- | --- | --- | --- | --- | --- | --- | --- | --- | --- |
| 445 | 1.5.3.13 | **测试用例** |  | 8d | 2018-08-15 08:00 A | 2018-08-24 17:00 A |  | 100% | 2018-08-15 08:00 | 2018-08-24 17:00 | 8d |  |  |  |  | 128h | 128h | 6,400 | 6,400 | 6,400 |
| 446 | 1.5.3.13.1 | 测试用例编写 |  | 8d | 2018-08-15 08:00 A | 2018-08-24 17:00 A |  | 100% | 2018-08-15 08:00 | 2018-08-24 17:00 | 8d |  |  | start no earlier than 2018-08-15 08:00 | 梁新飞; 阳杰 | 128h | 128h | 6,400 | 6,400 | 6,400 |
| 447 | 1.5.3.13.2 | 测试用例预评审 | inactive | 0.5d | 2018-08-27 08:00 | 2018-08-27 12:00 | 446 |  |  |  |  | 21.5d | 0d |  | 梁新飞; 阳杰 | 8h |  | 400 | -0 |  |
| 448 | 1.5.3.13.3 | 测试用例正式评审 | inactive | 0.5d | 2018-08-27 13:00 | 2018-08-27 17:00 | 447 |  |  |  |  | 21.5d | 0d |  | 梁新飞; 阳杰 | 8h |  | 400 | -0 |  |
| 449 | 1.5.3.13.4 | 测试用例修改 | inactive | 1d | 2018-08-28 08:00 | 2018-08-28 17:00 | 448 |  |  |  |  | 21.5d |  |  | 梁新飞; 阳杰 | 16h |  | 800 | -0 |  |
| 450 | 1.5.3.14 | **第一轮准出测试** |  | 3d | 2018-08-27 08:00 A | 2018-08-29 17:00 A |  | 100% | 2018-08-27 08:00 | 2018-08-29 17:00 | 3d |  |  |  |  | 84h | 84h | 4,200 | 4,200 | 4,200 |
| 451 | 1.5.3.14.1 | 搭建测试环境 |  | 0.5d | 2018-08-27 08:00 A | 2018-08-27 12:00 A | 449 | 100% | 2018-08-27 08:00 | 2018-08-27 12:00 | 0.5d |  |  |  | 梁新飞; 阳杰 | 8h | 8h | 400 | 400 | 400 |
| 452 | 1.5.3.14.2 | 协助单元测试 |  | 1.5d | 2018-08-27 13:00 A | 2018-08-28 17:00 A | 451 | 100% | 2018-08-27 13:00 | 2018-08-28 17:00 | 1.5d |  |  |  | 梁新飞; 阳杰 | 24h | 24h | 1,200 | 1,200 | 1,200 |
| 453 | 1.5.3.14.3 | 系统自测、执行准出用例 |  | 1d | 2018-08-29 08:00 A | 2018-08-29 17:00 A | 418 | 100% | 2018-08-29 08:00 | 2018-08-29 17:00 | 1d |  |  | start no earlier than 2018-08-14 08:00 | 欧鹏; 王平刚; 张伍超; 何鑫华; 陈李好; 潘文彬 | 48h | 48h | 2,400 | 2,400 | 2,400 |
| 454 | 1.5.3.14.4 | 准备部署包、整理数据库脚本 |  | 0.5d | 2018-08-29 08:00 A | 2018-08-29 12:00 A | 418 | 100% | 2018-08-29 08:00 | 2018-08-29 12:00 | 0.5d |  |  |  | 潘文彬 | 4h | 4h | 200 | 200 | 200 |
| 455 | 1.5.4 | **测试阶段** |  | 8.5d | 2018-08-30 08:00 A | 2018-09-11 12:00 A |  | 100% | 2018-08-30 08:00 | 2018-09-11 12:00 | 8.5d |  |  |  |  | 444h | 444h | 22,200 | 22,200 | 22,200 |
| 456 | 1.5.4.1 | **第一轮测试** |  | 3d | 2018-08-30 08:00 A | 2018-09-03 17:00 A |  | 100% | 2018-08-30 08:00 | 2018-09-03 17:00 | 3d |  |  |  |  | 192h | 192h | 9,600 | 9,600 | 9,600 |
| 457 | 1.5.4.1.1 | 准入测试 | inactive | 1d | 2018-08-30 08:00 | 2018-08-30 17:00 | 453 |  |  |  |  | 19.5d |  |  |  |  |  |  | -0 |  |
| 458 | 1.5.4.1.2 | 功能测试 |  | 3d | 2018-08-30 08:00 A | 2018-09-03 17:00 A | 453 | 100% | 2018-08-30 08:00 | 2018-09-03 17:00 | 3d |  |  |  | 梁新飞; 阳杰 | 48h | 48h | 2,400 | 2,400 | 2,400 |
| 459 | 1.5.4.1.3 | bug修改 |  | 3d | 2018-08-30 08:00 A | 2018-09-03 17:00 A | 453 | 100% | 2018-08-30 08:00 | 2018-09-03 17:00 | 3d |  |  |  | 欧鹏; 王平刚; 张伍超; 何鑫华; 陈李好; 潘文彬 | 144h | 144h | 7,200 | 7,200 | 7,200 |
| 460 | 1.5.4.2 | **第二轮测试** |  | 2d | 2018-09-04 08:00 A | 2018-09-05 17:00 A |  | 100% | 2018-09-04 08:00 | 2018-09-05 17:00 | 2d |  |  |  |  | 128h | 128h | 6,400 | 6,400 | 6,400 |
| 461 | 1.5.4.2.1 | 功能测试 |  | 2d | 2018-09-04 08:00 A | 2018-09-05 17:00 A | 458 | 100% | 2018-09-04 08:00 | 2018-09-05 17:00 | 2d |  |  |  | 梁新飞; 阳杰 | 32h | 32h | 1,600 | 1,600 | 1,600 |
| 462 | 1.5.4.2.2 | bug修改 |  | 2d | 2018-09-04 08:00 A | 2018-09-05 17:00 A | 458 | 100% | 2018-09-04 08:00 | 2018-09-05 17:00 | 2d |  |  |  | 欧鹏; 王平刚; 张伍超; 何鑫华; 陈李好; 潘文彬 | 96h | 96h | 4,800 | 4,800 | 4,800 |
| 463 | 1.5.4.3 | **第三轮测试** |  | 1d | 2018-09-06 08:00 A | 2018-09-06 17:00 A |  | 100% | 2018-09-06 08:00 | 2018-09-06 17:00 | 1d |  |  |  |  | 64h | 64h | 3,200 | 3,200 | 3,200 |
| 464 | 1.5.4.3.1 | 功能测试 |  | 1d | 2018-09-06 08:00 A | 2018-09-06 17:00 A | 461 | 100% | 2018-09-06 08:00 | 2018-09-06 17:00 | 1d |  |  |  | 梁新飞; 阳杰 | 16h | 16h | 800 | 800 | 800 |
| 465 | 1.5.4.3.2 | bug修改 |  | 1d | 2018-09-06 08:00 A | 2018-09-06 17:00 A | 461 | 100% | 2018-09-06 08:00 | 2018-09-06 17:00 | 1d |  |  |  | 欧鹏; 王平刚; 张伍超; 何鑫华; 陈李好; 潘文彬 | 48h | 48h | 2,400 | 2,400 | 2,400 |
| 466 | 1.5.4.4 | **第四轮回归** |  | 1d | 2018-09-07 08:00 A | 2018-09-07 17:00 A |  | 100% | 2018-09-07 08:00 | 2018-09-07 17:00 | 1d |  |  |  |  | 16h | 16h | 800 | 800 | 800 |
| 467 | 1.5.4.4.1 | 回归测试 |  | 1d | 2018-09-07 08:00 A | 2018-09-07 17:00 A | 464 | 100% | 2018-09-07 08:00 | 2018-09-07 17:00 | 1d |  |  |  | 梁新飞; 阳杰 | 16h | 16h | 800 | 800 | 800 |
| 468 | 1.5.4.5 | 测试部署手册 |  | 1d | 2018-09-10 08:00 A | 2018-09-10 17:00 A | 467 | 100% | 2018-09-10 08:00 | 2018-09-10 17:00 | 1d |  |  | start no earlier than 2018-01-25 08:00 | 梁新飞 | 8h | 8h | 400 | 400 | 400 |
| 469 | 1.5.4.6 | 输出迭代测试结论 |  | 1d | 2018-09-10 08:00 A | 2018-09-10 17:00 A | 467 | 100% | 2018-09-10 08:00 | 2018-09-10 17:00 | 1d |  |  | start no earlier than 2018-01-25 08:00 | 阳杰 | 8h | 8h | 400 | 400 | 400 |
| 470 | 1.5.4.7 | 《需求跟踪矩阵》需求完成度检查与更新 |  | 0.5d | 2018-09-06 08:00 A | 2018-09-06 12:00 A | 460 | 100% | 2018-09-06 08:00 | 2018-09-06 12:00 | 0.5d |  |  |  | 王煜卿 | 4h | 4h | 200 | 200 | 200 |
| 471 | 1.5.4.8 | 产品验收（主流程验收） |  | 2d | 2018-09-06 08:00 A | 2018-09-07 17:00 A | 460 | 100% | 2018-09-06 08:00 | 2018-09-07 17:00 | 2d |  |  |  | 王煜卿 | 16h | 16h | 800 | 800 | 800 |
| 472 | 1.5.4.9 | 申请迭代里程碑 |  | 0.5d | 2018-09-11 08:00 A | 2018-09-11 12:00 A | 469, 468 | 100% | 2018-09-11 08:00 | 2018-09-11 12:00 | 0.5d |  |  |  | 潘文彬 | 4h | 4h | 200 | 200 | 200 |
| 473 | 1.5.4.10 | 建立阶段基线 |  | 0.5d | 2018-09-11 08:00 A | 2018-09-11 12:00 A | 469, 468 | 100% | 2018-09-11 08:00 | 2018-09-11 12:00 | 0.5d |  |  |  | 吴赛清 | 4h | 4h | 200 | 200 | 200 |

| ID | WBS | Task | Type | Duration | Start | Finish | Predecessors | Complete | Baseline start | Baseline finish | Baseline duration | Constraint | Resources | Work | Actual work | Cost | Baseline cost | Actual cost |
| --- | --- | --- | --- | --- | --- | --- | --- | --- | --- | --- | --- | --- | --- | --- | --- | --- | --- | --- |
| 474 | 1.6 | **集成、验收结项阶段** |  | 15.5d | 2018-09-06 08:00 A | 2018-09-28 12:00 A |  | 100% | 2018-09-06 08:00 | 2018-09-28 12:00 | 15.5d |  |  | 244h | 244h | 12,200 | 12,200 | 12,200 |
| 475 | 1.6.1 | **用户手册、部署包** |  | 7d | 2018-09-06 08:00 A | 2018-09-14 17:00 A |  | 100% | 2018-09-06 08:00 | 2018-09-14 17:00 | 7d |  |  | 56h | 56h | 2,800 | 2,800 | 2,800 |
| 476 | 1.6.1.1 | 演示数据准备 |  | 4d | 2018-09-06 08:00 A | 2018-09-11 17:00 A |  | 100% | 2018-09-06 08:00 | 2018-09-11 17:00 | 4d | start no earlier than 2018-09-06 08:00 | 王煜卿 | 32h | 32h | 1,600 | 1,600 | 1,600 |
| 477 | 1.6.1.2 | 用户手册编写（教务系统） |  | 3d | 2018-09-12 08:00 A | 2018-09-14 17:00 A | 476 | 100% | 2018-09-12 08:00 | 2018-09-14 17:00 | 3d | start no earlier than 2018-01-02 08:00 | 王煜卿 | 24h | 24h | 1,200 | 1,200 | 1,200 |
| 478 | 1.6.2 | **文档测试** |  | 2d | 2018-09-17 08:00 A | 2018-09-18 17:00 A |  | 100% | 2018-09-17 08:00 | 2018-09-18 17:00 | 2d |  |  | 24h | 24h | 1,200 | 1,200 | 1,200 |
| 479 | 1.6.2.1 | 系统部署、运维手册测试（部署过程测试） |  | 1d | 2018-09-17 08:00 A | 2018-09-17 17:00 A | 477 | 100% | 2018-09-17 08:00 | 2018-09-17 17:00 | 1d | start no earlier than 2018-01-22 08:00 | 陈敏兰; 黄少莲 | 16h | 16h | 800 | 800 | 800 |
| 480 | 1.6.2.2 | 系统部署、运维手册修改 |  | 1d | 2018-09-18 08:00 A | 2018-09-18 17:00 A | 479 | 100% | 2018-09-18 08:00 | 2018-09-18 17:00 | 1d |  | 潘文彬 | 8h | 8h | 400 | 400 | 400 |
| 481 | 1.6.3 | 组织产品验收（教务系统全流程验收） |  | 5d | 2018-09-17 08:00 A | 2018-09-21 17:00 A | 475 | 100% | 2018-09-17 08:00 | 2018-09-21 17:00 | 5d | start no earlier than 2018-01-26 08:00 | 张银; 陈新添; 王煜卿 | 120h | 120h | 6,000 | 6,000 | 6,000 |
| 482 | 1.6.4 | 编写《系统测试报告》 |  | 1d | 2018-09-25 08:00 A | 2018-09-25 17:00 A | 481 | 100% | 2018-09-25 08:00 | 2018-09-25 17:00 | 1d | start no earlier than 2018-01-30 08:00 | 陈敏兰 | 8h | 8h | 400 | 400 | 400 |
| 483 | 1.6.5 | 评审《系统测试报告》 |  | 1d | 2018-09-26 08:00 A | 2018-09-26 17:00 A | 482 | 100% | 2018-09-26 08:00 | 2018-09-26 17:00 | 1d |  | 陈敏兰 [50%] | 4h | 4h | 200 | 200 | 200 |
| 484 | 1.6.6 | 《需求跟踪矩阵》需求完成度检查与更新 |  | 0.5d | 2018-09-25 08:00 A | 2018-09-25 12:00 A | 481 | 100% | 2018-09-25 08:00 | 2018-09-25 12:00 | 0.5d |  | 王煜卿 | 4h | 4h | 200 | 200 | 200 |
| 485 | 1.6.7 | 编写《产品验收报告》 |  | 1d | 2018-09-25 08:00 A | 2018-09-25 17:00 A | 481 | 100% | 2018-09-25 08:00 | 2018-09-25 17:00 | 1d |  | 陈新添 | 8h | 8h | 400 | 400 | 400 |
| 486 | 1.6.8 | 建立产品发布基线 |  | 0.5d | 2018-09-26 08:00 A | 2018-09-26 12:00 A | 485 | 100% | 2018-09-26 08:00 | 2018-09-26 12:00 | 0.5d |  | 吴赛清 | 4h | 4h | 200 | 200 | 200 |
| 487 | 1.6.9 | 项目总结活动 |  | 1d | 2018-09-26 08:00 A | 2018-09-26 17:00 A | 485 | 100% | 2018-09-26 08:00 | 2018-09-26 17:00 | 1d |  | 张银 | 8h | 8h | 400 | 400 | 400 |
| 488 | 1.6.10 | 项目资料归档 |  | 0.5d | 2018-09-27 08:00 A | 2018-09-27 12:00 A | 487 | 100% | 2018-09-27 08:00 | 2018-09-27 12:00 | 0.5d |  | 张银 | 4h | 4h | 200 | 200 | 200 |
| 489 | 1.6.11 | 项目结项申请 |  | 1d | 2018-09-27 13:00 A | 2018-09-28 12:00 A | 488 | 100% | 2018-09-27 13:00 | 2018-09-28 12:00 | 1d |  | 张银 [50%] | 4h | 4h | 200 | 200 | 200 |
| 490 | 1.7 | **项目管理、质量管理、监控与跟踪** |  | 114d | 2018-04-13 08:00 A | 2018-09-24 10:00 A |  | 100% | 2018-04-13 08:00 | 2018-09-24 10:00 | 114d |  |  | 98h | 98h | 4,900 | 4,900 | 4,900 |
| 491 | 1.7.1 | **项目管理、质量管理** |  | 113.25d | 2018-04-13 08:00 A | 2018-09-21 10:00 A |  | 100% | 2018-04-13 08:00 | 2018-09-21 10:00 | 113.25d |  |  | 48h | 48h | 2,400 | 2,400 | 2,400 |
| 492 | 1.7.1.1 | 项目周例会&项目周报&风险管理&进度计划更新 | manual | 0.25d | 2018-04-13 08:00 A | 2018-04-13 10:00 A |  | 100% | 2018-04-13 08:00 | 2018-04-13 10:00 | 0.25d |  | 张银 | 2h | 2h | 100 | 100 | 100 |
| 493 | 1.7.1.2 | 项目周例会&项目周报&风险管理&进度计划更新 | manual | 0.25d | 2018-04-20 08:00 A | 2018-04-20 10:00 A |  | 100% | 2018-04-20 08:00 | 2018-04-20 10:00 | 0.25d | start no earlier than 2018-04-20 08:00 | 张银 | 2h | 2h | 100 | 100 | 100 |
| 494 | 1.7.1.3 | 项目周例会&项目周报&风险管理&进度计划更新 | manual | 0.25d | 2018-04-27 08:00 A | 2018-04-27 10:00 A |  | 100% | 2018-04-27 08:00 | 2018-04-27 10:00 | 0.25d | start no earlier than 2018-04-27 08:00 | 张银 | 2h | 2h | 100 | 100 | 100 |
| 495 | 1.7.1.4 | 项目周例会&项目周报&风险管理&进度计划更新 | manual | 0.25d | 2018-05-04 08:00 A | 2018-05-04 10:00 A |  | 100% | 2018-05-04 08:00 | 2018-05-04 10:00 | 0.25d | start no earlier than 2018-05-04 08:00 | 张银 | 2h | 2h | 100 | 100 | 100 |
| 496 | 1.7.1.5 | 项目周例会&项目周报&风险管理&进度计划更新 | manual | 0.25d | 2018-05-11 08:00 A | 2018-05-11 10:00 A |  | 100% | 2018-05-11 08:00 | 2018-05-11 10:00 | 0.25d | start no earlier than 2018-05-11 08:00 | 张银 | 2h | 2h | 100 | 100 | 100 |
| 497 | 1.7.1.6 | 项目周例会&项目周报&风险管理&进度计划更新 | manual | 0.25d | 2018-05-18 08:00 A | 2018-05-18 10:00 A |  | 100% | 2018-05-18 08:00 | 2018-05-18 10:00 | 0.25d | start no earlier than 2018-05-18 08:00 | 张银 | 2h | 2h | 100 | 100 | 100 |
| 498 | 1.7.1.7 | 项目周例会&项目周报&风险管理&进度计划更新 | manual | 0.25d | 2018-05-25 08:00 A | 2018-05-25 10:00 A |  | 100% | 2018-05-25 08:00 | 2018-05-25 10:00 | 0.25d | start no earlier than 2018-05-25 08:00 | 张银 | 2h | 2h | 100 | 100 | 100 |
| 499 | 1.7.1.8 | 项目周例会&项目周报&风险管理&进度计划更新 | manual | 0.25d | 2018-06-01 08:00 A | 2018-06-01 10:00 A |  | 100% | 2018-06-01 08:00 | 2018-06-01 10:00 | 0.25d | start no earlier than 2018-06-01 08:00 | 张银 | 2h | 2h | 100 | 100 | 100 |
| 500 | 1.7.1.9 | 项目周例会&项目周报&风险管理&进度计划更新 | manual | 0.25d | 2018-06-08 08:00 A | 2018-06-08 10:00 A |  | 100% | 2018-06-08 08:00 | 2018-06-08 10:00 | 0.25d | start no earlier than 2018-06-08 08:00 | 张银 | 2h | 2h | 100 | 100 | 100 |
| 501 | 1.7.1.10 | 项目周例会&项目周报&风险管理&进度计划更新 | manual | 0.25d | 2018-06-15 08:00 A | 2018-06-15 10:00 A |  | 100% | 2018-06-15 08:00 | 2018-06-15 10:00 | 0.25d | start no earlier than 2018-06-15 08:00 | 张银 | 2h | 2h | 100 | 100 | 100 |
| 502 | 1.7.1.11 | 项目周例会&项目周报&风险管理&进度计划更新 | manual | 0.25d | 2018-06-22 08:00 A | 2018-06-22 10:00 A |  | 100% | 2018-06-22 08:00 | 2018-06-22 10:00 | 0.25d | start no earlier than 2018-06-22 08:00 | 张银 | 2h | 2h | 100 | 100 | 100 |
| 503 | 1.7.1.12 | 项目周例会&项目周报&风险管理&进度计划更新 | manual | 0.25d | 2018-06-29 08:00 A | 2018-06-29 10:00 A |  | 100% | 2018-06-29 08:00 | 2018-06-29 10:00 | 0.25d | start no earlier than 2018-06-29 08:00 | 张银 | 2h | 2h | 100 | 100 | 100 |
| 504 | 1.7.1.13 | 项目周例会&项目周报&风险管理&进度计划更新 | manual | 0.25d | 2018-07-06 08:00 A | 2018-07-06 10:00 A |  | 100% | 2018-07-06 08:00 | 2018-07-06 10:00 | 0.25d | start no earlier than 2018-07-06 08:00 | 张银 | 2h | 2h | 100 | 100 | 100 |
| 505 | 1.7.1.14 | 项目周例会&项目周报&风险管理&进度计划更新 | manual | 0.25d | 2018-07-13 08:00 A | 2018-07-13 10:00 A |  | 100% | 2018-07-13 08:00 | 2018-07-13 10:00 | 0.25d | start no earlier than 2018-07-13 08:00 | 张银 | 2h | 2h | 100 | 100 | 100 |
| 506 | 1.7.1.15 | 项目周例会&项目周报&风险管理&进度计划更新 | manual | 0.25d | 2018-07-20 08:00 A | 2018-07-20 10:00 A |  | 100% | 2018-07-20 08:00 | 2018-07-20 10:00 | 0.25d | start no earlier than 2018-07-20 08:00 | 张银 | 2h | 2h | 100 | 100 | 100 |
| 507 | 1.7.1.16 | 项目周例会&项目周报&风险管理&进度计划更新 | manual | 0.25d | 2018-07-27 08:00 A | 2018-07-27 10:00 A |  | 100% | 2018-07-27 08:00 | 2018-07-27 10:00 | 0.25d | start no earlier than 2018-07-27 08:00 | 张银 | 2h | 2h | 100 | 100 | 100 |
| 508 | 1.7.1.17 | 项目周例会&项目周报&风险管理&进度计划更新 | manual | 0.25d | 2018-08-03 08:00 A | 2018-08-03 10:00 A |  | 100% | 2018-08-03 08:00 | 2018-08-03 10:00 | 0.25d | start no earlier than 2018-08-03 08:00 | 张银 | 2h | 2h | 100 | 100 | 100 |
| 509 | 1.7.1.18 | 项目周例会&项目周报&风险管理&进度计划更新 | manual | 0.25d | 2018-08-10 08:00 A | 2018-08-10 10:00 A |  | 100% | 2018-08-10 08:00 | 2018-08-10 10:00 | 0.25d | start no earlier than 2018-08-10 08:00 | 张银 | 2h | 2h | 100 | 100 | 100 |
| 510 | 1.7.1.19 | 项目周例会&项目周报&风险管理&进度计划更新 | manual | 0.25d | 2018-08-17 08:00 A | 2018-08-17 10:00 A |  | 100% | 2018-08-17 08:00 | 2018-08-17 10:00 | 0.25d | start no earlier than 2018-08-17 08:00 | 张银 | 2h | 2h | 100 | 100 | 100 |
| 511 | 1.7.1.20 | 项目周例会&项目周报&风险管理&进度计划更新 | manual | 0.25d | 2018-08-24 08:00 A | 2018-08-24 10:00 A |  | 100% | 2018-08-24 08:00 | 2018-08-24 10:00 | 0.25d | start no earlier than 2018-08-24 08:00 | 张银 | 2h | 2h | 100 | 100 | 100 |
| 512 | 1.7.1.21 | 项目周例会&项目周报&风险管理&进度计划更新 | manual | 0.25d | 2018-08-31 08:00 A | 2018-08-31 10:00 A |  | 100% | 2018-08-31 08:00 | 2018-08-31 10:00 | 0.25d | start no earlier than 2018-08-31 08:00 | 张银 | 2h | 2h | 100 | 100 | 100 |
| 513 | 1.7.1.22 | 项目周例会&项目周报&风险管理&进度计划更新 | manual | 0.25d | 2018-09-07 08:00 A | 2018-09-07 10:00 A |  | 100% | 2018-09-07 08:00 | 2018-09-07 10:00 | 0.25d | start no earlier than 2018-09-07 08:00 | 张银 | 2h | 2h | 100 | 100 | 100 |
| 514 | 1.7.1.23 | 项目周例会&项目周报&风险管理&进度计划更新 | manual | 0.25d | 2018-09-14 08:00 A | 2018-09-14 10:00 A |  | 100% | 2018-09-14 08:00 | 2018-09-14 10:00 | 0.25d | start no earlier than 2018-09-14 08:00 | 张银 | 2h | 2h | 100 | 100 | 100 |
| 515 | 1.7.1.24 | 项目周例会&项目周报&风险管理&进度计划更新 | manual | 0.25d | 2018-09-21 08:00 A | 2018-09-21 10:00 A |  | 100% | 2018-09-21 08:00 | 2018-09-21 10:00 | 0.25d | start no earlier than 2018-09-21 08:00 | 张银 | 2h | 2h | 100 | 100 | 100 |

| ID | WBS | Task | Type | Duration | Start | Finish | Complete | Baseline start | Baseline finish | Baseline duration | Constraint | Resources | Work | Actual work | Cost | Baseline cost | Actual cost |
| --- | --- | --- | --- | --- | --- | --- | --- | --- | --- | --- | --- | --- | --- | --- | --- | --- | --- |
| 516 | 1.7.2 | **监控与跟踪** |  | 113d | 2018-04-16 08:00 A | 2018-09-24 10:00 A | 100% | 2018-04-16 08:00 | 2018-09-24 10:00 | 113d |  |  | 50h | 50h | 2,500 | 2,500 | 2,500 |
| 517 | 1.7.2.1 | QA审计 | manual | 0.25d | 2018-04-16 08:00 A | 2018-04-16 10:00 A | 100% | 2018-04-16 08:00 | 2018-04-16 10:00 | 0.25d | start no earlier than 2018-04-16 08:00 | 金灼 | 2h | 2h | 100 | 100 | 100 |
| 518 | 1.7.2.2 | QA审计 | manual | 0.25d | 2018-04-23 08:00 A | 2018-04-23 10:00 A | 100% | 2018-04-23 08:00 | 2018-04-23 10:00 | 0.25d | start no earlier than 2018-04-23 08:00 | 金灼 | 2h | 2h | 100 | 100 | 100 |
| 519 | 1.7.2.3 | QA审计 | manual | 0.25d | 2018-04-30 08:00 A | 2018-04-30 10:00 A | 100% | 2018-04-30 08:00 | 2018-04-30 10:00 | 0.25d | start no earlier than 2018-04-30 08:00 | 金灼 | 2h | 2h | 100 | 100 | 100 |
| 520 | 1.7.2.4 | QA审计 | manual | 0.25d | 2018-05-07 08:00 A | 2018-05-07 10:00 A | 100% | 2018-05-07 08:00 | 2018-05-07 10:00 | 0.25d | start no earlier than 2018-05-07 08:00 | 金灼 | 2h | 2h | 100 | 100 | 100 |
| 521 | 1.7.2.5 | QA审计 | manual | 0.25d | 2018-05-14 08:00 A | 2018-05-14 10:00 A | 100% | 2018-05-14 08:00 | 2018-05-14 10:00 | 0.25d | start no earlier than 2018-05-14 08:00 | 金灼 | 2h | 2h | 100 | 100 | 100 |
| 522 | 1.7.2.6 | QA审计 | manual | 0.25d | 2018-05-21 08:00 A | 2018-05-21 10:00 A | 100% | 2018-05-21 08:00 | 2018-05-21 10:00 | 0.25d | start no earlier than 2018-05-21 08:00 | 金灼 | 2h | 2h | 100 | 100 | 100 |
| 523 | 1.7.2.7 | QA审计 | manual | 0.25d | 2018-05-28 08:00 A | 2018-05-28 10:00 A | 100% | 2018-05-28 08:00 | 2018-05-28 10:00 | 0.25d | start no earlier than 2018-05-28 08:00 | 金灼 | 2h | 2h | 100 | 100 | 100 |
| 524 | 1.7.2.8 | QA审计 | manual | 0.25d | 2018-05-28 08:00 A | 2018-05-28 10:00 A | 100% | 2018-05-28 08:00 | 2018-05-28 10:00 | 0.25d | start no earlier than 2018-05-28 08:00 | 金灼 | 2h | 2h | 100 | 100 | 100 |
| 525 | 1.7.2.9 | QA审计 | manual | 0.25d | 2018-06-04 08:00 A | 2018-06-04 10:00 A | 100% | 2018-06-04 08:00 | 2018-06-04 10:00 | 0.25d | start no earlier than 2018-06-04 08:00 | 金灼 | 2h | 2h | 100 | 100 | 100 |
| 526 | 1.7.2.10 | QA审计 | manual | 0.25d | 2018-06-11 08:00 A | 2018-06-11 10:00 A | 100% | 2018-06-11 08:00 | 2018-06-11 10:00 | 0.25d | start no earlier than 2018-06-11 08:00 | 金灼 | 2h | 2h | 100 | 100 | 100 |
| 527 | 1.7.2.11 | QA审计 | manual | 0.25d | 2018-06-18 08:00 A | 2018-06-18 10:00 A | 100% | 2018-06-18 08:00 | 2018-06-18 10:00 | 0.25d | start no earlier than 2018-06-18 08:00 | 金灼 | 2h | 2h | 100 | 100 | 100 |
| 528 | 1.7.2.12 | QA审计 | manual | 0.25d | 2018-06-25 08:00 A | 2018-06-25 10:00 A | 100% | 2018-06-25 08:00 | 2018-06-25 10:00 | 0.25d | start no earlier than 2018-06-25 08:00 | 金灼 | 2h | 2h | 100 | 100 | 100 |
| 529 | 1.7.2.13 | QA审计 | manual | 0.25d | 2018-07-02 08:00 A | 2018-07-02 10:00 A | 100% | 2018-07-02 08:00 | 2018-07-02 10:00 | 0.25d | start no earlier than 2018-07-02 08:00 | 金灼 | 2h | 2h | 100 | 100 | 100 |
| 530 | 1.7.2.14 | QA审计 | manual | 0.25d | 2018-07-09 08:00 A | 2018-07-09 10:00 A | 100% | 2018-07-09 08:00 | 2018-07-09 10:00 | 0.25d | start no earlier than 2018-07-09 08:00 | 金灼 | 2h | 2h | 100 | 100 | 100 |
| 531 | 1.7.2.15 | QA审计 | manual | 0.25d | 2018-07-16 08:00 A | 2018-07-16 10:00 A | 100% | 2018-07-16 08:00 | 2018-07-16 10:00 | 0.25d | start no earlier than 2018-07-16 08:00 | 金灼 | 2h | 2h | 100 | 100 | 100 |
| 532 | 1.7.2.16 | QA审计 | manual | 0.25d | 2018-07-23 08:00 A | 2018-07-23 10:00 A | 100% | 2018-07-23 08:00 | 2018-07-23 10:00 | 0.25d | start no earlier than 2018-07-23 08:00 | 金灼 | 2h | 2h | 100 | 100 | 100 |
| 533 | 1.7.2.17 | QA审计 | manual | 0.25d | 2018-07-30 08:00 A | 2018-07-30 10:00 A | 100% | 2018-07-30 08:00 | 2018-07-30 10:00 | 0.25d | start no earlier than 2018-07-30 08:00 | 金灼 | 2h | 2h | 100 | 100 | 100 |
| 534 | 1.7.2.18 | QA审计 | manual | 0.25d | 2018-08-06 08:00 A | 2018-08-06 10:00 A | 100% | 2018-08-06 08:00 | 2018-08-06 10:00 | 0.25d | start no earlier than 2018-08-06 08:00 | 金灼 | 2h | 2h | 100 | 100 | 100 |
| 535 | 1.7.2.19 | QA审计 | manual | 0.25d | 2018-08-13 08:00 A | 2018-08-13 10:00 A | 100% | 2018-08-13 08:00 | 2018-08-13 10:00 | 0.25d | start no earlier than 2018-08-13 08:00 | 金灼 | 2h | 2h | 100 | 100 | 100 |
| 536 | 1.7.2.20 | QA审计 | manual | 0.25d | 2018-08-20 08:00 A | 2018-08-20 10:00 A | 100% | 2018-08-20 08:00 | 2018-08-20 10:00 | 0.25d | start no earlier than 2018-08-20 08:00 | 金灼 | 2h | 2h | 100 | 100 | 100 |
| 537 | 1.7.2.21 | QA审计 | manual | 0.25d | 2018-08-27 08:00 A | 2018-08-27 10:00 A | 100% | 2018-08-27 08:00 | 2018-08-27 10:00 | 0.25d | start no earlier than 2018-08-27 08:00 | 金灼 | 2h | 2h | 100 | 100 | 100 |
| 538 | 1.7.2.22 | QA审计 | manual | 0.25d | 2018-09-03 08:00 A | 2018-09-03 10:00 A | 100% | 2018-09-03 08:00 | 2018-09-03 10:00 | 0.25d | start no earlier than 2018-09-03 08:00 | 金灼 | 2h | 2h | 100 | 100 | 100 |
| 539 | 1.7.2.23 | QA审计 | manual | 0.25d | 2018-09-10 08:00 A | 2018-09-10 10:00 A | 100% | 2018-09-10 08:00 | 2018-09-10 10:00 | 0.25d | start no earlier than 2018-09-10 08:00 | 金灼 | 2h | 2h | 100 | 100 | 100 |
| 540 | 1.7.2.24 | QA审计 | manual | 0.25d | 2018-09-17 08:00 A | 2018-09-17 10:00 A | 100% | 2018-09-17 08:00 | 2018-09-17 10:00 | 0.25d | start no earlier than 2018-09-17 08:00 | 金灼 | 2h | 2h | 100 | 100 | 100 |
| 541 | 1.7.2.25 | QA审计 | manual | 0.25d | 2018-09-24 08:00 A | 2018-09-24 10:00 A | 100% | 2018-09-24 08:00 | 2018-09-24 10:00 | 0.25d | start no earlier than 2018-09-24 08:00 | 金灼 | 2h | 2h | 100 | 100 | 100 |
