# XX项目日程表（迭代）

Schedule from MS Project, 2018-05-04 to 2018-09-20, status date 2018-09-25, costs in ¥, A marks actual dates.

## Calendars

- 标准: Mon-Fri 08:00-12:00, 13:00-17:00; Sat-Sun off.

## Resources

| Resource | Rate |
| --- | --- |
| 张红 | 100 |
| 熊芸 | 100 |
| 唐倩 | 100 |
| 吴子文 | 100 |
| 严乔方 | 100 |
| 周攀 | 100 |
| 齐仁丽 | 100 |
| 彭华 | 100 |
| 庄严 | 100 |
| 付细辉 | 100 |
| 朱俊雄 | 100 |
| 孙永莉 | 100 |
| 吴正洲 | 100 |
| 董俊豪 | 100 |
| 唐倩 | 100 |
| 房雷 | 100 |

## Schedule

| ID | WBS | Task | Type | Duration | Start | Finish | Complete | Baseline start | Baseline finish | Baseline duration | Constraint | Resources | Work | Actual work | Cost | Baseline cost | Actual cost |
| --- | --- | --- | --- | --- | --- | --- | --- | --- | --- | --- | --- | --- | --- | --- | --- | --- | --- |
| 1 | 1 | **国泰安梦想基地平台V1.0_项目日程表** |  | 100d? | 2018-05-04 A | 2018-09-20 A | 100% | 2018-05-04 | 2018-09-20 | 100d? |  |  | 3940.48h | 3940.48h | 394,048 | 390,848 | 394,048 |
| 2 | 1.1 | **产品立项阶段** |  | 7d? | 2018-05-04 A | 2018-05-14 A | 100% | 2018-05-04 | 2018-05-14 | 7d? |  |  | 328h | 328h | 32,800 | 30,400 | 32,800 |
| 3 | 1.1.1 | 产品立项审批 |  | 5d | 2018-05-04 A | 2018-05-10 A | 100% | 2018-05-04 | 2018-05-10 | 5d | finish no earlier than 2018-05-10 | 张红 | 40h | 40h | 4,000 | 4,000 | 4,000 |
| 4 | 1.1.2 | 初步确定项目成员 | manual | 1d | 2018-05-04 A | 2018-05-04 A | 100% | 2018-05-04 | 2018-05-04 | 1d |  | 周攀 | 8h | 8h | 800 | 800 | 800 |
| 5 | 1.1.3 | 编写《客户需求列表》 |  | 1d | 2018-05-04 A | 2018-05-04 A | 100% | 2018-05-04 | 2018-05-04 | 1d | start no earlier than 2018-05-04 | 张红 | 8h | 8h | 800 | 800 | 800 |
| 6 | 1.1.4 | 《客户需求列表》评审 |  | 1d | 2018-05-04 A | 2018-05-04 A | 100% | 2018-05-04 | 2018-05-04 | 1d | start no earlier than 2018-05-04 | 董俊豪; 彭华; 付细辉; 熊芸; 齐仁丽; 孙永莉; 唐倩; 吴正洲; 吴子文; 严乔方; 张红; 周攀; 朱俊雄; 庄严 | 112h | 112h | 11,200 | 11,200 | 11,200 |
| 7 | 1.1.5 | 编制《流程配置表》 |  | 1d? | 2018-05-14 A | 2018-05-14 A | 100% | 2018-05-14 | 2018-05-14 | 1d? | start no earlier than 2018-05-14 | 周攀; 熊芸; 齐仁丽 | 24h | 24h | 2,400 | 2,400 | 2,400 |
| 8 | 1.1.6 | 《流程配置表》评审与审批 |  | 1d? | 2018-05-04 A | 2018-05-04 A | 100% | 2018-05-04 | 2018-05-04 | 1d? | start no earlier than 2018-05-04 | 熊芸; 周攀; 张红; 唐倩 | 32h | 32h | 3,200 | 3,200 | 3,200 |
| 9 | 1.1.7 | 组建项目团队 |  | 5d? | 2018-05-07 A | 2018-05-11 A | 100% | 2018-05-07 | 2018-05-11 | 5d? | finish no earlier than 2018-05-11 | 周攀 | 40h | 40h | 4,000 | 4,000 | 4,000 |
| 10 | 1.1.8 | 编写《项目总体计划》 |  | 1d? | 2018-05-07 A | 2018-05-07 A | 100% | 2018-05-07 | 2018-05-07 | 1d? | start no earlier than 2018-05-07 | 周攀 | 8h | 8h | 800 | 800 | 800 |
| 11 | 1.1.9 | 方案设计选择 | manual | 1d | 2018-05-07 A | 2018-05-07 A | 100% | 2018-05-04 | 2018-05-04 | 1d |  | 周攀; 付细辉; 朱俊雄 | 8h | 8h | 800 | 800 | 800 |
| 12 | 1.1.10 | 项目量化管理培训 | manual | 1d | 2018-05-04 A | 2018-05-04 A | 100% | 2018-05-04 | 2018-05-04 | 1d |  | 周攀 | 8h | 8h | 800 | 800 | 800 |
| 13 | 1.1.11 | 目标预测 | manual | 1d | 2018-05-04 A | 2018-05-04 A | 100% |  |  |  |  | 周攀 | 8h | 8h | 800 |  | 800 |
| 14 | 1.1.12 | 初始化配置库 | manual | 1d | 2018-05-04 A | 2018-05-04 A | 100% | 2018-05-11 | 2018-05-11 | 1d |  | 吴子文; 周攀 | 16h | 16h | 1,600 | 800 | 1,600 |
| 15 | 1.1.13 | 里程碑申请 | manual | 1d | 2018-05-11 A | 2018-05-11 A | 100% | 2018-05-11 | 2018-05-11 | 1d |  | 周攀 | 8h | 8h | 800 | 800 | 800 |
| 16 | 1.1.14 | 建立基线 | manual | 1d | 2018-05-11 A | 2018-05-11 A | 100% | 2018-05-11 | 2018-05-11 | 1d |  | 吴子文 | 8h | 8h | 800 | 800 | 800 |
| 17 | 1.2 | **迭代阶段(PC前台、PC后台)** |  | 37d | 2018-05-14 A | 2018-07-03 A | 100% | 2018-05-14 | 2018-07-03 | 37d |  |  | 1670.88h | 1670.88h | 167,088 | 166,288 | 167,088 |
| 18 | 1.2.1 | 编制《日程表》 |  | 3d? | 2018-05-14 A | 2018-05-16 A | 100% | 2018-05-14 | 2018-05-16 | 3d? | finish no earlier than 2018-05-16 | 齐仁丽 | 24h | 24h | 2,400 | 2,400 | 2,400 |
| 19 | 1.2.2 | 《日程表》评审 |  | 1d? | 2018-05-18 A | 2018-05-18 A | 100% | 2018-05-18 | 2018-05-18 | 1d? | start no earlier than 2018-05-18 | 董俊豪; 彭华; 付细辉; 熊芸; 齐仁丽; 孙永莉; 唐倩; 吴正洲; 吴子文; 严乔方; 张红; 周攀; 朱俊雄; 庄严 | 112h | 112h | 11,200 | 11,200 | 11,200 |
| 20 | 1.1.11 | 目标预测 | manual | 1d | 2018-05-18 A | 2018-05-18 A | 100% |  |  |  |  | 周攀 | 8h | 8h | 800 |  | 800 |
| 21 | 1.2.4 | 编写《迭代计划》 | manual | 1d | 2018-05-14 A | 2018-05-14 A | 100% | 2018-05-14 | 2018-05-14 | 1d |  | 周攀 | 8h | 8h | 800 | 800 | 800 |
| 22 | 1.2.5 | 工作量估算及分配 | manual | 1d | 2018-05-16 A | 2018-05-16 A | 100% | 2018-05-16 | 2018-05-16 | 1d |  | 周攀 | 8h | 8h | 800 | 800 | 800 |
| 23 | 1.2.6 | **UED设计、开发与测试** |  | 27d | 2018-05-14 A | 2018-06-19 A | 100% | 2018-05-14 | 2018-06-19 | 27d |  |  | 328h | 328h | 32,800 |  | 32,800 |
| 24 | 1.2.6.1 | UI界面设计 | manual | 13d | 2018-05-14 A | 2018-05-30 A | 100% | 2018-05-14 | 2018-05-30 | 13d |  | 庄严 | 104h | 104h | 10,400 | 10,400 | 10,400 |
| 25 | 1.2.6.2 | 前端界面设计开发 | manual | 22d | 2018-05-17 A | 2018-06-15 A | 100% | 2018-05-17 | 2018-06-15 | 22d |  | 董俊豪 | 176h | 176h | 17,600 | 17,600 | 17,600 |
| 26 | 1.2.6.3 | UED易用性测试 | manual | 3d | 2018-06-15 A | 2018-06-19 A | 100% | 2018-06-15 | 2018-06-19 | 3d |  | 彭华; 吴正洲 | 48h | 48h | 4,800 | 4,800 | 4,800 |

| ID | WBS | Task | Type | Duration | Start | Finish | Complete | Baseline start | Baseline finish | Baseline duration | Constraint | Resources | Work | Actual work | Cost | Baseline cost | Actual cost |
| --- | --- | --- | --- | --- | --- | --- | --- | --- | --- | --- | --- | --- | --- | --- | --- | --- | --- |
| 27 | 1.2.7 | **编写用例** |  | 9d | 2018-05-21 A | 2018-05-31 A | 100% | 2018-05-21 | 2018-05-31 | 9d |  |  | 208h | 208h | 20,800 |  | 20,800 |
| 28 | 1.2.7.1 | 编写测试用例 | manual | 7d | 2018-05-21 A | 2018-05-29 A | 100% | 2018-05-21 | 2018-05-29 | 7d |  | 彭华; 吴正洲 | 112h | 112h | 11,200 | 11,200 | 11,200 |
| 29 | 1.2.7.2 | 测试用例评审 | manual | 1d | 2018-05-31 A | 2018-05-31 A | 100% | 2018-05-31 | 2018-05-31 | 1d |  | 彭华; 董俊豪; 付细辉; 熊芸; 齐仁丽; 孙永莉; 唐倩; 吴正洲; 张红; 周攀; 朱俊雄; 庄严 | 96h | 96h | 9,600 | 9,600 | 9,600 |
| 30 | 1.2.8 | **编码** |  | 22d? | 2018-05-17 A | 2018-06-15 A | 100% | 2018-05-17 | 2018-06-15 | 22d? |  |  | 606.88h | 606.88h | 60,688 |  | 60,688 |
| 31 | 1.2.8.1 | **PC前台** |  | 11d | 2018-06-01 A | 2018-06-15 A | 100% | 2018-06-01 | 2018-06-15 | 11d |  |  | 322.08h | 322.08h | 32,208 |  | 32,208 |
| 32 | 1.2.8.1.1 | 首页 | manual | 1d | 2018-06-01 A | 2018-06-01 A | 100% | 2018-06-01 | 2018-06-01 | 1d |  | 齐仁丽 | 8h | 8h | 800 | 800 | 800 |
| 33 | 1.2.8.1.2 | 导航 |  | 1d | 2018-06-01 A | 2018-06-01 A | 100% | 2018-06-01 | 2018-06-01 | 1d | start no earlier than 2018-06-01 | 齐仁丽 | 8h | 8h | 800 | 800 | 800 |
| 34 | 1.2.8.1.3 | 全局搜索 | manual | 2.4d | 2018-06-13 A | 2018-06-15 A | 100% | 2018-06-13 | 2018-06-15 | 2.4d |  | 齐仁丽 | 19.2h | 19.2h | 1,920 | 1,920 | 1,920 |
| 35 | 1.2.8.1.4 | 注册（手机、邮箱） | manual | 1.5d | 2018-06-01 A | 2018-06-04 A | 100% | 2018-06-01 | 2018-06-04 | 1.5d |  | 付细辉 | 12h | 12h | 1,200 | 1,200 | 1,200 |
| 36 | 1.2.8.1.5 | 账号登录、获取已有用户账号 | manual | 0.5d | 2018-06-05 A | 2018-06-05 A | 100% | 2018-06-05 | 2018-06-05 | 0.5d |  | 付细辉 | 4h | 4h | 400 | 400 | 400 |
| 37 | 1.2.8.1.6 | 微信扫码登录 | manual | 1.3d | 2018-06-06 A | 2018-06-07 A | 100% | 2018-06-06 | 2018-06-07 | 1.3d |  | 付细辉 | 10.4h | 10.4h | 1,040 | 1,040 | 1,040 |
| 38 | 1.2.8.1.7 | 找回密码 | manual | 1d | 2018-06-08 A | 2018-06-08 A | 100% | 2018-06-08 | 2018-06-08 | 1d |  | 付细辉 | 8h | 8h | 800 | 800 | 800 |
| 39 | 1.2.8.1.8 | 右侧浮窗：在线qq、意见反馈 | manual | 0.5d | 2018-06-13 A | 2018-06-13 A | 100% | 2018-06-13 | 2018-06-13 | 0.5d |  | 孙永莉 | 4h | 4h | 400 | 400 | 400 |
| 40 | 1.2.8.1.9 | 基地Explorer--banner图+tab列表 | manual | 0.5d | 2018-06-05 A | 2018-06-05 A | 100% | 2018-06-05 | 2018-06-05 | 0.5d |  | 齐仁丽 | 4h | 4h | 400 | 400 | 400 |
| 41 | 1.2.8.1.10 | 基地Explorer-详情页（场馆介绍、场馆课程特色） | manual | 1.3d | 2018-06-11 A | 2018-06-12 A | 100% | 2018-06-11 | 2018-06-12 | 1.3d |  | 朱俊雄 | 10.4h | 10.4h | 1,040 | 1,040 | 1,040 |
| 42 | 1.2.8.1.11 | 基地Explorer-详情页（场馆查看，收藏场馆） | manual | 2d | 2018-06-01 A | 2018-06-04 A | 100% | 2018-06-01 | 2018-06-04 | 2d |  | 朱俊雄 | 16h | 16h | 1,600 | 1,600 | 1,600 |
| 43 | 1.2.8.1.12 | 基地Live-列表-banner+左侧导航 | manual | 1d | 2018-06-07 A | 2018-06-07 A | 100% | 2018-06-07 | 2018-06-07 | 1d |  | 齐仁丽 | 8h | 8h | 800 | 800 | 800 |
| 44 | 1.2.8.1.13 | 基地Live-列表-课程列表 | manual | 1d | 2018-06-08 A | 2018-06-08 A | 100% | 2018-06-08 | 2018-06-08 | 1d |  | 齐仁丽 | 8h | 8h | 800 | 800 | 800 |
| 45 | 1.2.8.1.14 | 基地Live-内容页-面包屑+课程缩略图及信息 | manual | 1d | 2018-06-06 A | 2018-06-06 A | 100% | 2018-06-06 | 2018-06-06 | 1d |  | 齐仁丽 | 8h | 8h | 800 | 800 | 800 |
| 46 | 1.2.8.1.15 | 基地Live-内容页-收藏、分享 | manual | 1d | 2018-06-07 A | 2018-06-07 A | 100% | 2018-06-07 | 2018-06-07 | 1d |  | 孙永莉 | 8h | 8h | 800 | 800 | 800 |
| 47 | 1.2.8.1.16 | 基地Live-内容页-tab页：课程介绍、课程目录、课程评价、笔记 | manual | 1.3d | 2018-06-06 A | 2018-06-07 A | 100% | 2018-06-06 | 2018-06-07 | 1.3d |  | 齐仁丽; 孙永莉; 朱俊雄 | 12.48h | 12.48h | 1,248 | 1,248 | 1,248 |
| 48 | 1.2.8.1.17 | 基地Live-内容页-讲师介绍、学员展示 | manual | 0.2d | 2018-06-11 A | 2018-06-11 A | 100% | 2018-06-11 | 2018-06-11 | 0.2d |  | 齐仁丽 | 1.6h | 1.6h | 160 | 160 | 160 |
| 49 | 1.2.8.1.18 | 基地Live-学习页-视频播放、课件查看、顶部导航 | manual | 0.5d | 2018-06-14 A | 2018-06-14 A | 100% | 2018-06-14 | 2018-06-14 | 0.5d |  | 孙永莉; 朱俊雄 | 8h | 8h | 800 | 800 | 800 |
| 50 | 1.2.8.1.19 | 基地Live-学习页-课程目录和笔记 | manual | 0.5d | 2018-06-14 A | 2018-06-14 A | 100% | 2018-06-14 | 2018-06-14 | 0.5d |  | 孙永莉; 朱俊雄 | 8h | 8h | 800 | 800 | 800 |
| 51 | 1.2.8.1.20 | 基地Live-学习页-课程评价、收藏、分享 | manual | 0.5d | 2018-06-15 A | 2018-06-15 A | 100% | 2018-06-15 | 2018-06-15 | 0.5d |  | 孙永莉; 朱俊雄 | 8h | 8h | 800 | 800 | 800 |
| 52 | 1.2.8.1.21 | 基地Live-学习页-学完了按钮、推荐课程 | manual | 0.5d | 2018-06-15 A | 2018-06-15 A | 100% | 2018-06-15 | 2018-06-15 | 0.5d |  | 孙永莉; 朱俊雄 | 8h | 8h | 800 | 800 | 800 |
| 53 | 1.2.8.1.22 | 基地Me-个人中心：教师/学生上部（头像、姓名、学习时长、教授课程） | manual | 0.5d | 2018-06-12 A | 2018-06-12 A | 100% | 2018-06-12 | 2018-06-12 | 0.5d |  | 孙永莉 | 4h | 4h | 400 | 400 | 400 |
| 54 | 1.2.8.1.23 | 基地Me-个人中心：教师/学生 课程图谱 | manual | 3d | 2018-06-11 A | 2018-06-13 A | 100% | 2018-06-11 | 2018-06-13 | 3d |  | 付细辉 | 24h | 24h | 2,400 | 2,400 | 2,400 |
| 55 | 1.2.8.1.24 | 基地Me-个人中心：教师/学生 最近学习/推荐课程 | manual | 0.5d | 2018-06-13 A | 2018-06-13 A | 100% | 2018-06-13 | 2018-06-13 | 0.5d |  | 孙永莉 | 4h | 4h | 400 | 400 | 400 |
| 56 | 1.2.8.1.25 | 基地Me-我的课程、我的收藏、我的笔记 | manual | 3d | 2018-06-11 A | 2018-06-13 A | 100% | 2018-06-11 | 2018-06-13 | 3d |  | 朱俊雄; 齐仁丽 | 48h | 48h | 4,800 | 4,800 | 4,800 |
| 57 | 1.2.8.1.26 | 基地Me-个人设置-基础信息 | manual | 1d | 2018-06-14 A | 2018-06-14 A | 100% | 2018-06-14 | 2018-06-14 | 1d |  | 齐仁丽 | 8h | 8h | 800 | 800 | 800 |
| 58 | 1.2.8.1.27 | 基地Me-个人设置-修改头像 | manual | 1d | 2018-06-15 A | 2018-06-15 A | 100% | 2018-06-15 | 2018-06-15 | 1d |  | 齐仁丽 | 8h | 8h | 800 | 800 | 800 |
| 59 | 1.2.8.1.28 | 基地Me-个人设置-修改密码 | manual | 0.5d | 2018-06-15 A | 2018-06-15 A | 100% | 2018-06-15 | 2018-06-15 | 0.5d |  | 齐仁丽 | 4h | 4h | 400 | 400 | 400 |
| 60 | 1.2.8.1.29 | 基地Me（教师）-我教授的课程-列表页 | manual | 1d | 2018-06-08 A | 2018-06-08 A | 100% | 2018-06-08 | 2018-06-08 | 1d |  | 孙永莉 | 8h | 8h | 800 | 800 | 800 |
| 61 | 1.2.8.1.30 | 基地Me（教师）-我教授的课程-创建/修改课程3步 | manual | 4d | 2018-06-07 A | 2018-06-12 A | 100% | 2018-06-07 | 2018-06-12 | 4d |  | 孙永莉 | 32h | 32h | 3,200 | 3,200 | 3,200 |

| ID | WBS | Task | Type | Duration | Start | Finish | Complete | Baseline start | Baseline finish | Baseline duration | Constraint | Resources | Work | Actual work | Cost | Baseline cost | Actual cost |
| --- | --- | --- | --- | --- | --- | --- | --- | --- | --- | --- | --- | --- | --- | --- | --- | --- | --- |
| 62 | 1.2.8.2 | **PC后台** |  | 11.2d? | 2018-05-17 A | 2018-06-01 A | 100% | 2018-05-17 | 2018-06-01 | 11.2d? |  |  | 284.8h | 284.8h | 28,480 |  | 28,480 |
| 63 | 1.2.8.2.1 | 基地Info维护 | manual | 1d | 2018-05-17 A | 2018-05-17 A | 100% | 2018-05-17 | 2018-05-17 | 1d |  | 孙永莉 | 8h | 8h | 800 | 800 | 800 |
| 64 | 1.2.8.2.2 | 场馆分类管理：导入页面、导出功能 |  | 2d? | 2018-05-25 A | 2018-05-28 A | 100% | 2018-05-25 | 2018-05-28 | 2d? | start no earlier than 2018-05-25 | 付细辉 | 16h | 16h | 1,600 | 1,600 | 1,600 |
| 65 | 1.2.8.2.3 | 场馆分类管理：搜索、新增、修改、删除、禁用、启用 | manual | 2d | 2018-05-17 A | 2018-05-18 A | 100% | 2018-05-17 | 2018-05-18 | 2d |  | 孙永莉 | 16h | 16h | 1,600 | 1,600 | 1,600 |
| 66 | 1.2.8.2.4 | 场馆管理：搜索、删除、发布、取消发布 | manual | 2d | 2018-05-21 A | 2018-05-22 A | 100% | 2018-05-21 | 2018-05-22 | 2d |  | 孙永莉 | 16h | 16h | 1,600 | 1,600 | 1,600 |
| 67 | 1.2.8.2.5 | 场馆管理：导入页面、导出功能 | manual | 1.9d | 2018-05-29 A | 2018-05-30 A | 100% | 2018-05-29 | 2018-05-30 | 1.9d |  | 付细辉 | 15.2h | 15.2h | 1,520 | 1,520 | 1,520 |
| 68 | 1.2.8.2.6 | 场馆管理：新增、修改（场馆信息页面、场馆特色页面） | manual | 1.8d | 2018-05-23 A | 2018-05-24 A | 100% | 2018-05-23 | 2018-05-24 | 1.8d |  | 孙永莉 | 14.4h | 14.4h | 1,440 | 1,440 | 1,440 |
| 69 | 1.2.8.2.7 | 课程分类管理：搜索、删除、（启）禁用 | manual | 1d | 2018-05-21 A | 2018-05-21 A | 100% | 2018-05-21 | 2018-05-21 | 1d |  | 孙永莉 | 8h | 8h | 800 | 800 | 800 |
| 70 | 1.2.8.2.8 | 课程分类管理：导入页面、导出功能 | manual | 1.2d | 2018-05-31 A | 2018-06-01 A | 100% | 2018-05-31 | 2018-06-01 | 1.2d |  | 付细辉 | 9.6h | 9.6h | 960 | 960 | 960 |
| 71 | 1.2.8.2.9 | 课程管理：搜索、删除、（启）禁用、（取消）发布、（取消）课程下架、(取消)加精、查看 | manual | 2d | 2018-05-25 A | 2018-05-28 A | 100% | 2018-05-25 | 2018-05-28 | 2d |  | 孙永莉 | 16h | 16h | 1,600 | 1,600 | 1,600 |
| 72 | 1.2.8.2.10 | 课程管理：新增/修改课程3步 | manual | 5.7d | 2018-05-24 A | 2018-05-31 A | 100% | 2018-05-24 | 2018-05-31 | 5.7d |  | 朱俊雄; 孙永莉 | 45.6h | 45.6h | 4,560 | 4,560 | 4,560 |
| 73 | 1.2.8.2.11 | 课程审核-搜索 | manual | 1d | 2018-05-17 A | 2018-05-17 A | 100% | 2018-05-17 | 2018-05-17 | 1d |  | 齐仁丽 | 8h | 8h | 800 | 800 | 800 |
| 74 | 1.2.8.2.12 | 课程审核-审核功能 | manual | 1d | 2018-05-18 A | 2018-05-18 A | 100% | 2018-05-18 | 2018-05-18 | 1d |  | 齐仁丽 | 8h | 8h | 800 | 800 | 800 |
| 75 | 1.2.8.2.13 | 权限管理 | manual | 3d | 2018-05-29 A | 2018-05-31 A | 100% | 2018-05-29 | 2018-05-31 | 3d |  | 孙永莉 | 24h | 24h | 2,400 | 2,400 | 2,400 |
| 76 | 1.2.8.2.14 | 用户管理 | manual | 2d | 2018-05-21 A | 2018-05-22 A | 100% | 2018-05-21 | 2018-05-22 | 2d |  | 齐仁丽 | 16h | 16h | 1,600 | 1,600 | 1,600 |
| 77 | 1.2.8.2.15 | 评价管理-搜索 | manual | 1d | 2018-05-23 A | 2018-05-23 A | 100% | 2018-05-23 | 2018-05-23 | 1d |  | 齐仁丽 | 8h | 8h | 800 | 800 | 800 |
| 78 | 1.2.8.2.16 | 评价管理-删除、查看 | manual | 1.5d | 2018-05-24 A | 2018-05-25 A | 100% | 2018-05-24 | 2018-05-25 | 1.5d |  | 齐仁丽 | 12h | 12h | 1,200 | 1,200 | 1,200 |
| 79 | 1.2.8.2.17 | 统计分析-8个统计分析图 | manual | 3.5d | 2018-05-17 A | 2018-05-22 A | 100% | 2018-05-17 | 2018-05-22 | 3.5d |  | 付细辉 | 28h | 28h | 2,800 | 2,800 | 2,800 |
| 80 | 1.2.8.2.18 | 统计分析-场馆 | manual | 1d | 2018-05-23 A | 2018-05-23 A | 100% | 2018-05-23 | 2018-05-23 | 1d |  | 付细辉 | 8h | 8h | 800 | 800 | 800 |
| 81 | 1.2.8.2.19 | 统计分析-课程 | manual | 1d | 2018-05-24 A | 2018-05-24 A | 100% | 2018-05-24 | 2018-05-24 | 1d |  | 付细辉 | 8h | 8h | 800 | 800 | 800 |
| 82 | 1.2.9 | **代码走查/代码评审** |  | 1d | 2018-06-15 A | 2018-06-15 A | 100% | 2018-06-15 | 2018-06-15 | 1d |  |  | 8h | 8h | 800 |  | 800 |
| 83 | 1.2.9.1 | 代码走查/代码评审 |  | 1d | 2018-06-15 A | 2018-06-15 A | 100% | 2018-06-15 | 2018-06-15 | 1d | start no earlier than 2018-06-15 | 周攀 | 8h | 8h | 800 | 800 | 800 |
| 84 | 1.2.10 | 编写部署运维手册 | manual | 1d | 2018-06-15 A | 2018-06-15 A | 100% | 2018-06-15 | 2018-06-15 | 1d |  | 孙永莉 | 8h | 8h | 800 | 800 | 800 |
| 85 | 1.2.11 | 评审《部署运维手册》 | manual | 1d | 2018-06-15 A | 2018-06-15 A | 100% | 2018-06-15 | 2018-06-15 | 1d |  | 彭华; 付细辉; 齐仁丽; 孙永莉; 唐倩; 吴正洲; 周攀; 朱俊雄 | 64h | 64h | 6,400 | 6,400 | 6,400 |

| ID | WBS | Task | Type | Duration | Start | Finish | Complete | Baseline start | Baseline finish | Baseline duration | Constraint | Resources | Work | Actual work | Cost | Baseline cost | Actual cost |
| --- | --- | --- | --- | --- | --- | --- | --- | --- | --- | --- | --- | --- | --- | --- | --- | --- | --- |
| 86 | 1.2.12 | **第一轮提测、BUG修复与测试** |  | 5d | 2018-06-18 A | 2018-06-22 A | 100% | 2018-06-18 | 2018-06-22 | 5d |  |  | 112h | 112h | 11,200 |  | 11,200 |
| 87 | 1.2.12.1 | 第一轮提测、建立基线 | milestone, manual | 0d | 2018-06-18 A | 2018-06-18 A | 100% | 2018-06-18 | 2018-06-18 | 0d |  | 吴子文; 孙永莉 |  |  |  |  |  |
| 88 | 1.2.12.2 | 第一轮测试 | manual | 3d | 2018-06-18 A | 2018-06-20 A | 100% | 2018-06-18 | 2018-06-20 | 3d |  | 吴正洲; 彭华 | 48h | 48h | 4,800 | 4,800 | 4,800 |
| 89 | 1.2.12.3 | 第一轮BUG修复 | manual | 2d | 2018-06-21 A | 2018-06-22 A | 100% | 2018-06-21 | 2018-06-22 | 2d |  | 付细辉; 齐仁丽; 孙永莉; 朱俊雄 | 64h | 64h | 6,400 | 6,400 | 6,400 |
| 90 | 1.2.13 | **第二轮提测、BUG修复与测试** |  | 4d | 2018-06-25 A | 2018-06-28 A | 100% | 2018-06-25 | 2018-06-28 | 4d |  |  | 96h | 96h | 9,600 |  | 9,600 |
| 91 | 1.2.13.1 | 第二轮提测、建立基线 | milestone, manual | 0d | 2018-06-25 A | 2018-06-25 A | 100% | 2018-06-25 | 2018-06-25 | 0d |  | 孙永莉; 吴子文 |  |  |  |  |  |
| 92 | 1.2.13.2 | 第二轮测试 | manual | 2d | 2018-06-25 A | 2018-06-26 A | 100% | 2018-06-25 | 2018-06-26 | 2d |  | 彭华; 吴正洲 | 32h | 32h | 3,200 | 3,200 | 3,200 |
| 93 | 1.2.13.3 | 第二轮BUG修复 | manual | 2d | 2018-06-27 A | 2018-06-28 A | 100% | 2018-06-27 | 2018-06-28 | 2d |  | 齐仁丽; 付细辉; 孙永莉; 朱俊雄 | 64h | 64h | 6,400 | 6,400 | 6,400 |
| 94 | 1.2.14 | **第三轮提测、BUG修复与测试** |  | 2d | 2018-06-29 A | 2018-07-02 A | 100% | 2018-06-29 | 2018-07-02 | 2d |  |  | 32h | 32h | 3,200 |  | 3,200 |
| 95 | 1.2.14.1 | 第三轮提测、建立基线 | milestone, manual | 0d | 2018-06-29 A | 2018-06-29 A | 100% | 2018-06-29 | 2018-06-29 | 0d |  | 孙永莉; 吴子文 |  |  |  |  |  |
| 96 | 1.2.14.2 | 第三轮测试 | manual | 2d | 2018-06-29 A | 2018-07-02 A | 100% | 2018-06-29 | 2018-07-02 | 2d |  | 彭华; 吴正洲 | 32h | 32h | 3,200 | 3,200 | 3,200 |
| 97 | 1.2.15 | 文档测试 | manual | 1d | 2018-06-21 A | 2018-06-21 A | 100% | 2018-06-21 | 2018-06-21 | 1d |  | 彭华; 吴正洲 | 16h | 16h | 1,600 | 1,600 | 1,600 |
| 98 | 1.2.16 | 迭代总结 | manual | 1d | 2018-07-03 A | 2018-07-03 A | 100% | 2018-07-03 | 2018-07-03 | 1d |  | 周攀 | 8h | 8h | 800 | 800 | 800 |
| 99 | 1.2.17 | 编写《迭代总结报告》 | manual | 1d | 2018-07-03 A | 2018-07-03 A | 100% | 2018-07-03 | 2018-07-03 | 1d |  | 周攀 | 8h | 8h | 800 | 800 | 800 |
| 100 | 1.2.18 | 申请迭代里程碑 | manual | 1d | 2018-07-03 A | 2018-07-03 A | 100% | 2018-07-03 | 2018-07-03 | 1d |  | 周攀 | 8h | 8h | 800 | 800 | 800 |
| 101 | 1.2.19 | 建立阶段基线 | manual | 1d | 2018-07-03 A | 2018-07-03 A | 100% | 2018-07-03 | 2018-07-03 | 1d |  | 吴子文 | 8h | 8h | 800 | 800 | 800 |
| 102 | 1.3 | **迭代阶段(小程序)** |  | 54d | 2018-07-04 A | 2018-09-17 A | 100% | 2018-07-04 | 2018-09-17 | 54d |  |  | 1517.6h | 1517.6h | 151,760 |  | 151,760 |
| 103 | 1.3.1 | 编制《日程表》 | manual | 3d | 2018-07-16 A | 2018-07-18 A | 100% | 2018-07-16 | 2018-07-18 | 3d | finish no earlier than 2018-05-16 | 齐仁丽 | 24h | 24h | 2,400 | 2,400 | 2,400 |
| 104 | 1.3.2 | 《日程表》评审 | manual | 1d | 2018-07-19 A | 2018-07-19 A | 100% | 2018-07-19 | 2018-07-19 | 1d | start no earlier than 2018-05-18 | 彭华; 付细辉; 熊芸; 齐仁丽; 孙永莉; 吴正洲; 张红; 房雷; 朱俊雄; 庄严 | 80h | 80h | 8,000 | 8,000 | 8,000 |
| 105 | 1.3.3 | 工作量估算及分配 | manual | 1d | 2018-07-19 A | 2018-07-19 A | 100% | 2018-07-19 | 2018-07-19 | 1d |  | 周攀 | 8h | 8h | 800 | 800 | 800 |
| 106 | 1.3.4 | 性能需求评审 | manual | 2d | 2018-08-09 A | 2018-08-10 A | 100% | 2018-08-09 | 2018-08-10 | 2d |  | 房雷; 付细辉; 熊芸; 彭华; 齐仁丽; 孙永莉; 吴正洲; 张红; 朱俊雄 | 144h | 144h | 14,400 | 14,400 | 14,400 |
| 107 | 1.3.5 | **UED设计、开发与测试** |  | 33d | 2018-07-04 A | 2018-08-17 A | 100% | 2018-07-04 | 2018-08-17 | 33d |  |  | 544h | 544h | 54,400 |  | 54,400 |
| 108 | 1.3.5.1 | UI界面设计 | manual | 18d | 2018-07-04 A | 2018-07-27 A | 100% | 2018-07-04 | 2018-07-27 | 18d | finish no earlier than 2018-07-27 | 庄严 | 144h | 144h | 14,400 | 14,400 | 14,400 |
| 109 | 1.3.5.2 | 前端界面设计开发 | manual | 23d | 2018-07-16 A | 2018-08-15 A | 100% | 2018-07-16 | 2018-08-15 | 23d |  | 孙永莉; 朱俊雄 | 368h | 368h | 36,800 | 36,800 | 36,800 |
| 110 | 1.3.5.3 | UED易用性测试 | manual | 2d | 2018-08-16 A | 2018-08-17 A | 100% | 2018-08-16 | 2018-08-17 | 2d |  | 彭华; 吴正洲; 房雷 | 32h | 32h | 3,200 | 3,200 | 3,200 |

| ID | WBS | Task | Type | Duration | Start | Finish | Complete | Baseline start | Baseline finish | Baseline duration | Constraint | Resources | Work | Actual work | Cost | Baseline cost | Actual cost |
| --- | --- | --- | --- | --- | --- | --- | --- | --- | --- | --- | --- | --- | --- | --- | --- | --- | --- |
| 111 | 1.3.6 | **编码** |  | 11.5d | 2018-08-09 A | 2018-08-24 A | 100% | 2018-08-09 | 2018-08-24 | 11.5d |  |  | 213.6h | 213.6h | 21,360 |  | 21,360 |
| 112 | 1.3.6.1 | **小程序** |  | 11.5d | 2018-08-09 A | 2018-08-24 A | 100% | 2018-08-09 | 2018-08-24 | 11.5d |  |  | 213.6h | 213.6h | 21,360 |  | 21,360 |
| 113 | 1.3.6.1.1 | **梦想基地小程序_首页** |  | 2.5d | 2018-08-09 A | 2018-08-13 A | 100% | 2018-08-09 | 2018-08-13 | 2.5d |  |  | 24h | 24h | 2,400 |  | 2,400 |
| 114 | 1.3.6.1.1.1 | 底部导航栏 | manual | 0.5d | 2018-08-09 A | 2018-08-09 A | 100% | 2018-08-09 | 2018-08-09 | 0.5d |  | 付细辉 | 4h | 4h | 400 | 400 | 400 |
| 115 | 1.3.6.1.1.2 | banner轮播（后台维护、链接） | manual | 0.5d | 2018-08-09 A | 2018-08-09 A | 100% | 2018-08-09 | 2018-08-09 | 0.5d |  | 孙永莉; 朱俊雄 | 4h | 4h | 400 | 400 | 400 |
| 116 | 1.3.6.1.1.3 | 4个图标（后台维护） | manual | 0.5d | 2018-08-10 A | 2018-08-10 A | 100% | 2018-08-10 | 2018-08-10 | 0.5d |  | 孙永莉 | 4h | 4h | 400 | 400 | 400 |
| 117 | 1.3.6.1.1.4 | 最新动态 | manual | 0.5d | 2018-08-10 A | 2018-08-10 A | 100% | 2018-08-10 | 2018-08-10 | 0.5d |  | 孙永莉; 朱俊雄 | 4h | 4h | 400 | 400 | 400 |
| 118 | 1.3.6.1.1.5 | 精品场馆 | manual | 0.5d | 2018-08-13 A | 2018-08-13 A | 100% | 2018-08-13 | 2018-08-13 | 0.5d |  | 孙永莉; 朱俊雄 | 4h | 4h | 400 | 400 | 400 |
| 119 | 1.3.6.1.1.6 | 精品课程 | manual | 0.5d | 2018-08-13 A | 2018-08-13 A | 100% | 2018-08-13 | 2018-08-13 | 0.5d |  | 孙永莉; 朱俊雄 | 4h | 4h | 400 | 400 | 400 |
| 120 | 1.3.6.1.2 | **新闻中心、活动展示、联系我们** |  | 2d | 2018-08-14 A | 2018-08-15 A | 100% | 2018-08-14 | 2018-08-15 | 2d |  |  | 16h | 16h | 1,600 | 1,600 | 1,600 |
| 121 | 1.3.6.1.2.1 | 新闻中心/活动展示 列表 | manual | 0.3d | 2018-08-14 A | 2018-08-14 A | 100% | 2018-08-14 | 2018-08-14 | 0.3d | start no earlier than 2018-06-01 | 齐仁丽 | 2.4h | 2.4h | 240 | 240 | 240 |
| 122 | 1.3.6.1.2.2 | 新闻中心/基地概况/活动展示 详情页 | manual | 0.2d | 2018-08-14 A | 2018-08-14 A | 100% | 2018-08-14 | 2018-08-14 | 0.2d | start no earlier than 2018-06-01 | 齐仁丽 | 1.6h | 1.6h | 160 | 160 | 160 |
| 123 | 1.3.6.1.2.3 | 联系我们详情页：文字、地图、二维码 | manual | 1.5d | 2018-08-14 A | 2018-08-15 A | 100% | 2018-08-14 | 2018-08-15 | 1.5d | finish no earlier than 2018-08-15 | 齐仁丽 | 12h | 12h | 1,200 | 1,200 | 1,200 |
| 124 | 1.3.6.1.3 | **基地Explorer（虚拟体验馆）** |  | 0.5d | 2018-08-16 A | 2018-08-16 A | 100% | 2018-08-16 | 2018-08-16 | 0.5d |  |  | 8h | 8h | 800 |  | 800 |
| 125 | 1.3.6.1.3.1 | 虚拟体验馆-首页 | manual | 0.5d | 2018-08-16 A | 2018-08-16 A | 100% | 2018-08-16 | 2018-08-16 | 0.5d |  | 孙永莉; 朱俊雄 | 4h | 4h | 400 | 400 | 400 |
| 126 | 1.3.6.1.3.2 | 虚拟体验馆-全景图 | manual | 0.5d | 2018-08-16 A | 2018-08-16 A | 100% | 2018-08-16 | 2018-08-16 | 0.5d |  | 孙永莉; 朱俊雄 | 4h | 4h | 400 | 400 | 400 |
| 127 | 1.3.6.1.4 | **梦想基地小程序_基地Live（在线课堂）** |  | 7.5d | 2018-08-09 A | 2018-08-20 A | 100% | 2018-08-09 | 2018-08-20 | 7.5d |  |  | 76.8h | 76.8h | 7,680 |  | 7,680 |
| 128 | 1.3.6.1.4.1 | 搜索页面 | manual | 0.5d | 2018-08-17 A | 2018-08-17 A | 100% | 2018-08-17 | 2018-08-17 | 0.5d |  | 孙永莉; 朱俊雄 | 4h | 4h | 400 | 400 | 400 |
| 129 | 1.3.6.1.4.2 | 基地Live-主页 | manual | 0.5d | 2018-08-17 A | 2018-08-17 A | 100% | 2018-08-17 | 2018-08-17 | 0.5d |  | 孙永莉; 朱俊雄 | 4h | 4h | 400 | 400 | 400 |
| 130 | 1.3.6.1.4.3 | 基地Live列表页 | manual | 0.5d | 2018-08-20 A | 2018-08-20 A | 100% | 2018-08-20 | 2018-08-20 | 0.5d |  | 孙永莉; 朱俊雄 | 4h | 4h | 400 | 400 | 400 |
| 131 | 1.3.6.1.4.4 | **基地Live内容页** |  | 3d | 2018-08-09 A | 2018-08-13 A | 100% | 2018-08-09 | 2018-08-13 | 3d |  |  | 28.8h | 28.8h | 2,880 |  | 2,880 |
| 132 | 1.3.6.1.4.4.1 | 课程图片、基本信息 | manual | 0.5d | 2018-08-09 A | 2018-08-09 A | 100% | 2018-08-09 | 2018-08-09 | 0.5d |  | 孙永莉; 朱俊雄 | 4h | 4h | 400 | 400 | 400 |
| 133 | 1.3.6.1.4.4.2 | 课程介绍 | manual | 0.5d | 2018-08-09 A | 2018-08-09 A | 100% | 2018-08-09 | 2018-08-09 | 0.5d |  | 孙永莉; 朱俊雄 | 4h | 4h | 400 | 400 | 400 |
| 134 | 1.3.6.1.4.4.3 | 课程目录 | manual | 0.5d | 2018-08-10 A | 2018-08-10 A | 100% | 2018-08-10 | 2018-08-10 | 0.5d |  | 孙永莉; 朱俊雄 | 4.8h | 4.8h | 480 | 480 | 480 |
| 135 | 1.3.6.1.4.4.4 | 课程评论 | manual | 0.5d | 2018-08-10 A | 2018-08-10 A | 100% | 2018-08-10 | 2018-08-10 | 0.5d |  | 孙永莉; 朱俊雄 | 4h | 4h | 400 | 400 | 400 |
| 136 | 1.3.6.1.4.4.5 | 课程笔记（可添加？） | manual | 1d | 2018-08-13 A | 2018-08-13 A | 100% | 2018-08-13 | 2018-08-13 | 1d |  | 孙永莉; 朱俊雄 | 12h | 12h | 1,200 | 1,200 | 1,200 |

| ID | WBS | Task | Type | Duration | Start | Finish | Complete | Baseline start | Baseline finish | Baseline duration | Constraint | Resources | Work | Actual work | Cost | Baseline cost | Actual cost |
| --- | --- | --- | --- | --- | --- | --- | --- | --- | --- | --- | --- | --- | --- | --- | --- | --- | --- |
| 137 | 1.3.6.1.4.5 | **基地Live播放页** |  | 4.5d | 2018-08-14 A | 2018-08-20 A | 100% | 2018-08-14 | 2018-08-20 | 4.5d |  |  | 36h | 36h | 3,600 |  | 3,600 |
| 138 | 1.3.6.1.4.5.1 | 视频播放 | manual | 0.5d | 2018-08-14 A | 2018-08-14 A | 100% | 2018-08-14 | 2018-08-14 | 0.5d |  | 付细辉 | 4h | 4h | 400 | 400 | 400 |
| 139 | 1.3.6.1.4.5.2 | 知识点 | manual | 0.5d | 2018-08-14 A | 2018-08-14 A | 100% | 2018-08-14 | 2018-08-14 | 0.5d |  | 孙永莉; 朱俊雄 | 8h | 8h | 800 | 800 | 800 |
| 140 | 1.3.6.1.4.5.3 | 课件播放 | manual | 0.5d | 2018-08-15 A | 2018-08-15 A | 100% | 2018-08-15 | 2018-08-15 | 0.5d |  | 孙永莉 | 4h | 4h | 400 | 400 | 400 |
| 141 | 1.3.6.1.4.5.4 | 写评论 | manual | 0.5d | 2018-08-15 A | 2018-08-15 A | 100% | 2018-08-15 | 2018-08-15 | 0.5d |  | 付细辉; 孙永莉; 朱俊雄 | 12h | 12h | 1,200 | 1,200 | 1,200 |
| 142 | 1.3.6.1.4.5.5 | 收藏、分享（只有收藏） | manual | 0.5d | 2018-08-20 A | 2018-08-20 A | 100% | 2018-08-20 | 2018-08-20 | 0.5d |  | 孙永莉; 朱俊雄 | 8h | 8h | 800 | 800 | 800 |
| 143 | 1.3.6.1.5 | **梦想基地小程序_我的（学生、教师）** |  | 5.5d | 2018-08-16 A | 2018-08-23 A | 100% | 2018-08-16 | 2018-08-23 | 5.5d |  |  | 52.8h | 52.8h | 5,280 |  | 5,280 |
| 144 | 1.3.6.1.5.1 | 头像、姓名、教授课程、学习时长、列表 | manual | 0.5d | 2018-08-16 A | 2018-08-16 A | 100% | 2018-08-16 | 2018-08-16 | 0.5d |  | 付细辉 | 4h | 4h | 400 | 400 | 400 |
| 145 | 1.3.6.1.5.2 | **我教授的课程** |  | 1.5d | 2018-08-16 A | 2018-08-17 A | 100% | 2018-08-16 | 2018-08-17 | 1.5d |  |  | 16h | 16h | 1,600 |  | 1,600 |
| 146 | 1.3.6.1.5.2.1 | 课程统计 | manual | 1.5d | 2018-08-16 A | 2018-08-17 A | 100% | 2018-08-16 | 2018-08-17 | 1.5d |  | 朱俊雄 | 12h | 12h | 1,200 | 1,200 | 1,200 |
| 147 | 1.3.6.1.5.2.2 | 我教授的课程：未发布、审核中、已发布、已下架 | manual | 0.5d | 2018-08-17 A | 2018-08-17 A | 100% | 2018-08-17 | 2018-08-17 | 0.5d |  | 孙永莉; 朱俊雄 | 4h | 4h | 400 | 400 | 400 |
| 148 | 1.3.6.1.5.3 | **我学习的课程** |  | 2.5d | 2018-08-17 A | 2018-08-21 A | 100% | 2018-08-17 | 2018-08-21 | 2.5d |  |  | 16.8h | 16.8h | 1,680 |  | 1,680 |
| 149 | 1.3.6.1.5.3.1 | 我的课程图谱 | manual | 0.5d | 2018-08-17 A | 2018-08-17 A | 100% | 2018-08-17 | 2018-08-17 | 0.5d |  | 朱俊雄 | 4h | 4h | 400 | 400 | 400 |
| 150 | 1.3.6.1.5.3.2 | 我的课程 | manual | 0.5d | 2018-08-20 A | 2018-08-20 A | 100% | 2018-08-20 | 2018-08-20 | 0.5d |  | 付细辉 | 4h | 4h | 400 | 400 | 400 |
| 151 | 1.3.6.1.5.3.3 | 我的收藏 | manual | 0.5d | 2018-08-20 A | 2018-08-20 A | 100% | 2018-08-20 | 2018-08-20 | 0.5d |  | 孙永莉; 朱俊雄 | 4.8h | 4.8h | 480 | 480 | 480 |
| 152 | 1.3.6.1.5.3.4 | 我的笔记 | manual | 0.5d | 2018-08-21 A | 2018-08-21 A | 100% | 2018-08-21 | 2018-08-21 | 0.5d |  | 付细辉 | 4h | 4h | 400 | 400 | 400 |
| 153 | 1.3.6.1.5.4 | 意见反馈 | manual | 0.5d | 2018-08-21 A | 2018-08-21 A | 100% | 2018-08-21 | 2018-08-21 | 0.5d |  | 齐仁丽 | 4h | 4h | 400 | 400 | 400 |
| 154 | 1.3.6.1.5.5 | **设置** |  | 1.5d | 2018-08-22 A | 2018-08-23 A | 100% | 2018-08-22 | 2018-08-23 | 1.5d |  |  | 12h | 12h | 1,200 |  | 1,200 |
| 155 | 1.3.6.1.5.5.1 | 设置列表 | manual | 0.5d | 2018-08-22 A | 2018-08-22 A | 100% | 2018-08-22 | 2018-08-22 | 0.5d |  | 齐仁丽 | 4h | 4h | 400 | 400 | 400 |
| 156 | 1.3.6.1.5.5.2 | **用户信息修改页面** |  | 0.5d | 2018-08-23 A | 2018-08-23 A | 100% | 2018-08-23 | 2018-08-23 | 0.5d |  |  | 6.4h | 6.4h | 640 |  | 640 |
| 157 | 1.3.6.1.5.5.2.1 | 头像展示与修改 | manual | 0.5d | 2018-08-23 A | 2018-08-23 A | 100% | 2018-08-23 | 2018-08-23 | 0.5d |  | 齐仁丽 | 4h | 4h | 400 | 400 | 400 |
| 158 | 1.3.6.1.5.5.2.2 | 个人信息展示与修改 | manual | 0.3d | 2018-08-23 A | 2018-08-23 A | 100% | 2018-08-23 | 2018-08-23 | 0.3d |  | 齐仁丽 | 2.4h | 2.4h | 240 | 240 | 240 |
| 159 | 1.3.6.1.5.5.3 | 关于我们页面 | manual | 0.2d | 2018-08-22 A | 2018-08-22 A | 100% | 2018-08-22 | 2018-08-22 | 0.2d |  | 齐仁丽 | 1.6h | 1.6h | 160 | 160 | 160 |
| 160 | 1.3.6.1.6 | **梦想基地小程序_注册、登录** |  | 3.5d | 2018-08-21 A | 2018-08-24 A | 100% | 2018-08-21 | 2018-08-24 | 3.5d |  |  | 36h | 36h | 3,600 |  | 3,600 |
| 161 | 1.3.6.1.6.1 | 账号登录 | manual | 0.5d | 2018-08-21 A | 2018-08-21 A | 100% | 2018-08-21 | 2018-08-21 | 0.5d |  | 付细辉 | 4h | 4h | 400 | 400 | 400 |
| 162 | 1.3.6.1.6.2 | 微信登录 | manual | 2d | 2018-08-22 A | 2018-08-23 A | 100% | 2018-08-22 | 2018-08-23 | 2d | finish no earlier than 2018-08-23 | 付细辉 | 16h | 16h | 1,600 | 1,600 | 1,600 |

| ID | WBS | Task | Type | Duration | Start | Finish | Complete | Actual start | Baseline start | Baseline finish | Baseline duration | Constraint | Resources | Work | Actual work | Cost | Baseline cost | Actual cost |
| --- | --- | --- | --- | --- | --- | --- | --- | --- | --- | --- | --- | --- | --- | --- | --- | --- | --- | --- |
| 163 | 1.3.6.1.6.3 | **忘记密码** |  | 0.5d | 2018-08-23 A | 2018-08-23 A | 100% |  | 2018-08-23 | 2018-08-23 | 0.5d |  |  | 8h | 8h | 800 |  | 800 |
| 164 | 1.3.6.1.6.3.1 | 手机 | manual | 0.5d | 2018-08-23 A | 2018-08-23 A | 100% |  | 2018-08-23 | 2018-08-23 | 0.5d |  | 付细辉 | 4h | 4h | 400 | 400 | 400 |
| 165 | 1.3.6.1.6.3.2 | 邮箱 | manual | 0.5d | 2018-08-23 A | 2018-08-23 A | 100% |  | 2018-08-23 | 2018-08-23 | 0.5d |  | 付细辉 | 4h | 4h | 400 | 400 | 400 |
| 166 | 1.3.6.1.6.4 | **注册** |  | 0.5d | 2018-08-24 A | 2018-08-24 A | 100% |  | 2018-08-24 | 2018-08-24 | 0.5d |  |  | 8h | 8h | 800 |  | 800 |
| 167 | 1.3.6.1.6.4.1 | 手机注册 | manual | 0.5d | 2018-08-24 A | 2018-08-24 A | 100% |  | 2018-08-24 | 2018-08-24 | 0.5d |  | 付细辉 | 4h | 4h | 400 | 400 | 400 |
| 168 | 1.3.6.1.6.4.2 | 邮箱注册 | manual | 0.5d | 2018-08-24 A | 2018-08-24 A | 100% |  | 2018-08-24 | 2018-08-24 | 0.5d |  | 付细辉 | 4h | 4h | 400 | 400 | 400 |
| 169 | 1.3.7 | **研发自测** |  | 1d | 2018-08-27 | 2018-08-27 A | 100% | 2018-08-24 | 2018-08-27 | 2018-08-27 | 1d |  | 付细辉; 齐仁丽; 孙永莉; 朱俊雄 | 48h | 48h | 4,800 |  | 4,800 |
| 170 | 1.3.7.1 | **代码走查/代码评审** |  | 1d | 2018-08-24 A | 2018-08-24 A | 100% |  | 2018-08-24 | 2018-08-24 | 1d |  | 周攀 | 16h | 16h | 1,600 |  | 1,600 |
| 171 | 1.3.7.1.1 | 代码走查/代码评审 | manual | 1d | 2018-08-24 A | 2018-08-24 A | 100% |  | 2018-08-24 | 2018-08-24 | 1d | start no earlier than 2018-06-15 | 周攀 | 8h | 8h | 800 | 800 | 800 |
| 172 | 1.3.8 | 完善部署运维手册 | manual | 1d | 2018-08-24 A | 2018-08-24 A | 100% |  | 2018-08-24 | 2018-08-24 | 1d |  | 孙永莉 | 8h | 8h | 800 | 800 | 800 |
| 173 | 1.3.9 | 评审《部署运维手册》 | manual | 1d | 2018-09-13 A | 2018-09-13 A | 100% |  | 2018-09-13 | 2018-09-13 | 1d |  | 彭华; 付细辉; 齐仁丽; 孙永莉; 唐倩; 吴正洲; 周攀; 朱俊雄 | 64h | 64h | 6,400 | 6,400 | 6,400 |
| 174 | 1.3.10 | **第一轮提测、BUG修复与测试** |  | 6d | 2018-08-27 A | 2018-09-03 A | 100% |  | 2018-08-27 | 2018-09-03 | 6d |  |  | 120h | 120h | 12,000 |  | 12,000 |
| 175 | 1.3.10.1 | 第一轮提测、建立基线 | manual | 1d | 2018-08-27 A | 2018-08-27 A | 100% |  | 2018-08-27 | 2018-08-27 | 1d |  | 吴子文; 孙永莉 | 16h | 16h | 1,600 | 1,600 | 1,600 |
| 176 | 1.3.10.2 | 第一轮功能测试 | manual | 3d | 2018-08-28 A | 2018-08-30 A | 100% |  | 2018-08-28 | 2018-08-30 | 3d |  | 吴正洲; 房雷 | 24h | 24h | 2,400 | 2,400 | 2,400 |
| 177 | 1.3.10.3 | 第一轮性能测试 | manual | 2d | 2018-08-31 A | 2018-09-03 A | 100% |  | 2018-08-31 | 2018-09-03 | 2d |  | 彭华 | 16h | 16h | 1,600 | 1,600 | 1,600 |
| 178 | 1.3.10.4 | 第一轮BUG修复 | manual | 2d | 2018-08-31 A | 2018-09-03 A | 100% |  | 2018-08-31 | 2018-09-03 | 2d |  | 付细辉; 齐仁丽; 孙永莉; 朱俊雄 | 64h | 64h | 6,400 | 6,400 | 6,400 |
| 179 | 1.3.11 | **第二轮提测、BUG修复与测试** |  | 6d | 2018-09-03 A | 2018-09-10 A | 100% |  | 2018-09-03 | 2018-09-10 | 6d |  |  | 136h | 136h | 13,600 |  | 13,600 |
| 180 | 1.3.11.1 | 第二轮提测、建立基线 | manual | 1d | 2018-09-03 A | 2018-09-03 A | 100% |  | 2018-09-03 | 2018-09-03 | 1d |  | 孙永莉; 吴子文 | 16h | 16h | 1,600 | 1,600 | 1,600 |
| 181 | 1.3.11.2 | 第二轮性能测试 | manual | 2d | 2018-09-07 A | 2018-09-10 A | 100% |  | 2018-09-07 | 2018-09-10 | 2d |  | 彭华; 吴正洲 | 32h | 32h | 3,200 | 3,200 | 3,200 |
| 182 | 1.3.11.3 | 第二轮测试 | manual | 3d | 2018-09-04 A | 2018-09-06 A | 100% |  | 2018-09-04 | 2018-09-06 | 3d |  | 彭华 | 24h | 24h | 2,400 | 2,400 | 2,400 |
| 183 | 1.3.11.4 | 第二轮BUG修复 | manual | 2d | 2018-09-07 A | 2018-09-10 A | 100% |  | 2018-09-07 | 2018-09-10 | 2d |  | 齐仁丽; 付细辉; 孙永莉; 朱俊雄 | 64h | 64h | 6,400 | 6,400 | 6,400 |
| 184 | 1.3.12 | **第三轮提测、BUG修复与测试** |  | 5d | 2018-09-10 A | 2018-09-14 A | 100% |  | 2018-09-10 | 2018-09-14 | 5d |  |  | 72h | 72h | 7,200 |  | 7,200 |
| 185 | 1.3.12.1 | 第三轮提测、建立基线 | manual | 1d | 2018-09-10 A | 2018-09-10 A | 100% |  | 2018-09-10 | 2018-09-10 | 1d |  | 孙永莉; 吴子文 | 16h | 16h | 1,600 | 1,600 | 1,600 |
| 186 | 1.3.12.2 | 第三轮性能测试 | manual | 1d | 2018-09-14 A | 2018-09-14 A | 100% |  | 2018-09-14 | 2018-09-14 | 1d |  | 彭华 | 8h | 8h | 800 | 800 | 800 |
| 187 | 1.3.12.3 | 第三轮测试 | manual | 3d | 2018-09-11 A | 2018-09-13 A | 100% |  | 2018-09-11 | 2018-09-13 | 3d |  | 彭华; 吴正洲 | 48h | 48h | 4,800 | 4,800 | 4,800 |
| 188 | 1.3.13 | 文档测试 | manual | 1d | 2018-09-14 A | 2018-09-14 A | 100% |  | 2018-09-14 | 2018-09-14 | 1d |  | 彭华; 吴正洲 | 16h | 16h | 1,600 | 1,600 | 1,600 |
| 189 | 1.3.14 | 迭代总结 | manual | 2d | 2018-09-14 A | 2018-09-17 A | 100% |  | 2018-09-14 | 2018-09-17 | 2d |  | 周攀 | 16h | 16h | 1,600 | 1,600 | 1,600 |
| 190 | 1.3.15 | 编写《迭代总结报告》 | manual | 1d | 2018-09-17 A | 2018-09-17 A | 100% |  | 2018-09-17 | 2018-09-17 | 1d |  | 周攀 | 8h | 8h | 800 | 800 | 800 |
| 191 | 1.3.16 | 申请迭代里程碑 | manual | 1d | 2018-09-17 A | 2018-09-17 A | 100% |  | 2018-09-17 | 2018-09-17 | 1d |  | 周攀 | 8h | 8h | 800 | 800 | 800 |
| 192 | 1.3.17 | 建立阶段基线 | manual | 1d | 2018-09-17 A | 2018-09-17 A | 100% |  | 2018-09-17 | 2018-09-17 | 1d |  | 吴子文 | 8h | 8h | 800 | 800 | 800 |

| ID | WBS | Task | Type | Duration | Start | Finish | Complete | Actual finish | Baseline start | Baseline finish | Baseline duration | Constraint | Resources | Work | Actual work | Cost | Baseline cost | Actual cost |
| --- | --- | --- | --- | --- | --- | --- | --- | --- | --- | --- | --- | --- | --- | --- | --- | --- | --- | --- |
| 193 | 1.4 | **项目验收与结项** |  | 5d | 2018-09-14 A | 2018-09-20 A | 100% |  | 2018-09-14 | 2018-09-20 | 5d |  |  | 40h | 40h | 4,000 |  | 4,000 |
| 194 | 1.4.1 | 验收 | manual | 3d | 2018-09-14 A | 2018-09-18 A | 100% |  | 2018-09-14 | 2018-09-18 | 3d |  | 张红 | 24h | 24h | 2,400 | 2,400 | 2,400 |
| 195 | 1.4.2 | 结项 | manual | 2d | 2018-09-19 A | 2018-09-20 A | 100% |  | 2018-09-19 | 2018-09-20 | 2d |  | 周攀 | 16h | 16h | 1,600 | 1,600 | 1,600 |
| 196 | 1.5 | **项目管理、质量管理、监控与跟踪、度量收集** |  | 95d | 2018-05-11 A | 2018-09-20 | 100% | 2018-09-19 | 2018-05-11 | 2018-09-20 | 95d |  |  | 384h | 384h | 38,400 |  | 38,400 |
| 197 | 1.5.1 | **风险管理** |  | 1d | 2018-05-14 A | 2018-05-14 A | 100% |  | 2018-05-14 | 2018-05-14 | 1d |  |  | 8h | 8h | 800 |  | 800 |
| 198 | 1.5.1.1 | 风险管理 1 | manual | 1d | 2018-05-14 A | 2018-05-14 A | 100% |  | 2018-05-14 | 2018-05-14 | 1d | start no earlier than 2018-05-14 | 周攀 | 8h | 8h | 800 | 800 | 800 |
| 199 | 1.5.2 | **项目周报** |  | 91d | 2018-05-11 A | 2018-09-14 A | 100% |  | 2018-05-11 | 2018-09-14 | 91d |  |  | 152h | 152h | 15,200 |  | 15,200 |
| 200 | 1.5.2.1 | 项目周报 1 |  | 1d | 2018-05-11 A | 2018-05-11 A | 100% |  | 2018-05-11 | 2018-05-11 | 1d | start no earlier than 2018-05-11 | 周攀 | 8h | 8h | 800 | 800 | 800 |
| 201 | 1.5.2.2 | 项目周报 2 |  | 1d | 2018-05-18 A | 2018-05-18 A | 100% |  | 2018-05-18 | 2018-05-18 | 1d | start no earlier than 2018-05-18 | 周攀 | 8h | 8h | 800 | 800 | 800 |
| 202 | 1.5.2.3 | 项目周报 3 |  | 1d | 2018-05-25 A | 2018-05-25 A | 100% |  | 2018-05-25 | 2018-05-25 | 1d | start no earlier than 2018-05-25 | 周攀 | 8h | 8h | 800 | 800 | 800 |
| 203 | 1.5.2.4 | 项目周报 4 |  | 1d | 2018-06-01 A | 2018-06-01 A | 100% |  | 2018-06-01 | 2018-06-01 | 1d | start no earlier than 2018-06-01 | 周攀 | 8h | 8h | 800 | 800 | 800 |
| 204 | 1.5.2.5 | 项目周报 5 |  | 1d | 2018-06-08 A | 2018-06-08 A | 100% |  | 2018-06-08 | 2018-06-08 | 1d | start no earlier than 2018-06-08 | 周攀 | 8h | 8h | 800 | 800 | 800 |
| 205 | 1.5.2.6 | 项目周报 6 |  | 1d | 2018-06-15 A | 2018-06-15 A | 100% |  | 2018-06-15 | 2018-06-15 | 1d | start no earlier than 2018-06-15 | 周攀 | 8h | 8h | 800 | 800 | 800 |
| 206 | 1.5.2.7 | 项目周报 7 |  | 1d | 2018-06-22 A | 2018-06-22 A | 100% |  | 2018-06-22 | 2018-06-22 | 1d | start no earlier than 2018-06-22 | 周攀 | 8h | 8h | 800 | 800 | 800 |
| 207 | 1.5.2.8 | 项目周报 8 |  | 1d | 2018-06-29 A | 2018-06-29 A | 100% |  | 2018-06-29 | 2018-06-29 | 1d | start no earlier than 2018-06-29 | 周攀 | 8h | 8h | 800 | 800 | 800 |
| 208 | 1.5.2.9 | 项目周报 9 |  | 1d | 2018-07-06 A | 2018-07-06 A | 100% |  | 2018-07-06 | 2018-07-06 | 1d | start no earlier than 2018-07-06 | 周攀 | 8h | 8h | 800 | 800 | 800 |
| 209 | 1.5.2.10 | 项目周报 10 |  | 1d | 2018-05-25 A | 2018-05-25 A | 100% |  | 2018-05-25 | 2018-05-25 | 1d | start no earlier than 2018-05-25 | 周攀 | 8h | 8h | 800 | 800 | 800 |
| 210 | 1.5.2.11 | 项目周报 11 |  | 1d | 2018-07-20 A | 2018-07-20 A | 100% |  | 2018-07-20 | 2018-07-20 | 1d | start no earlier than 2018-07-20 | 周攀 | 8h | 8h | 800 | 800 | 800 |
| 211 | 1.5.2.12 | 项目周报 12 |  | 1d | 2018-07-27 A | 2018-07-27 A | 100% |  | 2018-07-27 | 2018-07-27 | 1d | start no earlier than 2018-07-27 | 周攀 | 8h | 8h | 800 | 800 | 800 |
| 212 | 1.5.2.13 | 项目周报 13 |  | 1d | 2018-08-03 A | 2018-08-03 A | 100% |  | 2018-08-03 | 2018-08-03 | 1d | start no earlier than 2018-08-03 | 周攀 | 8h | 8h | 800 | 800 | 800 |
| 213 | 1.5.2.14 | 项目周报 14 |  | 1d | 2018-08-10 A | 2018-08-10 A | 100% |  | 2018-08-10 | 2018-08-10 | 1d | start no earlier than 2018-08-10 | 周攀 | 8h | 8h | 800 | 800 | 800 |
| 214 | 1.5.2.15 | 项目周报 15 |  | 1d | 2018-08-17 A | 2018-08-17 A | 100% |  | 2018-08-17 | 2018-08-17 | 1d | start no earlier than 2018-08-17 | 周攀 | 8h | 8h | 800 | 800 | 800 |
| 215 | 1.5.2.16 | 项目周报 16 |  | 1d | 2018-08-24 A | 2018-08-24 A | 100% |  | 2018-08-24 | 2018-08-24 | 1d | start no earlier than 2018-08-24 | 周攀 | 8h | 8h | 800 | 800 | 800 |
| 216 | 1.5.2.17 | 项目周报 17 |  | 1d | 2018-08-31 A | 2018-08-31 A | 100% |  | 2018-08-31 | 2018-08-31 | 1d | start no earlier than 2018-08-31 | 周攀 | 8h | 8h | 800 | 800 | 800 |
| 217 | 1.5.2.18 | 项目周报 18 |  | 1d | 2018-09-07 A | 2018-09-07 A | 100% |  | 2018-09-07 | 2018-09-07 | 1d | start no earlier than 2018-09-07 | 周攀 | 8h | 8h | 800 | 800 | 800 |
| 218 | 1.5.2.19 | 项目周报 19 |  | 1d | 2018-09-14 A | 2018-09-14 A | 100% |  | 2018-09-14 | 2018-09-14 | 1d | start no earlier than 2018-09-14 | 周攀 | 8h | 8h | 800 | 800 | 800 |

| ID | WBS | Task | Type | Duration | Start | Finish | Complete | Actual start | Actual finish | Baseline start | Baseline finish | Baseline duration | Constraint | Resources | Work | Actual work | Cost | Baseline cost | Actual cost |
| --- | --- | --- | --- | --- | --- | --- | --- | --- | --- | --- | --- | --- | --- | --- | --- | --- | --- | --- | --- |
| 219 | 1.5.3 | **QA审计** |  | 2d | 2018-09-19 | 2018-09-20 | 100% | 2018-05-11 | 2018-09-19 | 2018-09-19 | 2018-09-20 | 2d |  |  | 32h | 32h | 3,200 | 3,200 | 3,200 |
| 220 | 1.5.3.1 | QA审计 1 | manual | 1d | 2018-05-11 A | 2018-05-11 A | 100% |  |  | 2018-05-11 | 2018-05-11 | 1d | start no earlier than 2018-05-11 | 熊芸 | 8h | 8h | 800 | 800 | 800 |
| 221 | 1.5.3.2 | QA审计 2 | manual | 1d | 2018-07-03 A | 2018-07-03 A | 100% |  |  | 2018-07-03 | 2018-07-03 | 1d | start no earlier than 2018-07-03 | 熊芸 | 8h | 8h | 800 | 800 | 800 |
| 222 | 1.5.3.3 | QA审计 3 | manual | 1d | 2018-09-17 A | 2018-09-17 A | 100% |  |  | 2018-09-17 | 2018-09-17 | 1d | start no earlier than 2018-09-17 | 熊芸 | 8h | 8h | 800 | 800 | 800 |
| 223 | 1.5.3.4 | QA审计 4 | manual | 1d | 2018-09-19 A | 2018-09-19 A | 100% |  |  | 2018-09-19 | 2018-09-19 | 1d | start no earlier than 2018-09-19 | 熊芸 | 8h | 8h | 800 | 800 | 800 |
| 224 | 1.5.4 | **度量数据收集** |  | 91d | 2018-05-11 A | 2018-09-14 A | 100% |  |  | 2018-05-11 | 2018-09-14 | 91d |  |  | 152h | 152h | 15,200 |  | 15,200 |
| 225 | 1.5.4.1 | 度量数据收集 1 | manual | 1d | 2018-05-11 A | 2018-05-11 A | 100% |  |  | 2018-05-11 | 2018-05-11 | 1d | start no earlier than 2018-05-11 | 周攀 | 8h | 8h | 800 | 800 | 800 |
| 226 | 1.5.4.2 | 度量数据收集 2 | manual | 1d | 2018-05-18 A | 2018-05-18 A | 100% |  |  | 2018-05-18 | 2018-05-18 | 1d | start no earlier than 2018-05-18 | 周攀 | 8h | 8h | 800 | 800 | 800 |
| 227 | 1.5.4.3 | 度量数据收集3 | manual | 1d | 2018-05-25 A | 2018-05-25 A | 100% |  |  | 2018-05-25 | 2018-05-25 | 1d | start no earlier than 2018-05-25 | 周攀 | 8h | 8h | 800 | 800 | 800 |
| 228 | 1.5.4.4 | 度量数据收集 4 | manual | 1d | 2018-06-01 A | 2018-06-01 A | 100% |  |  | 2018-06-01 | 2018-06-01 | 1d | start no earlier than 2018-06-01 | 周攀 | 8h | 8h | 800 | 800 | 800 |
| 229 | 1.5.4.5 | 度量数据收集 5 | manual | 1d | 2018-06-08 A | 2018-06-08 A | 100% |  |  | 2018-06-08 | 2018-06-08 | 1d | start no earlier than 2018-06-08 | 周攀 | 8h | 8h | 800 | 800 | 800 |
| 230 | 1.5.4.6 | 度量数据收集 6 | manual | 1d | 2018-06-15 A | 2018-06-15 A | 100% |  |  | 2018-06-15 | 2018-06-15 | 1d | start no earlier than 2018-06-15 | 周攀 | 8h | 8h | 800 | 800 | 800 |
| 231 | 1.5.4.7 | 度量数据收集 7 | manual | 1d | 2018-06-22 A | 2018-06-22 A | 100% |  |  | 2018-06-22 | 2018-06-22 | 1d | start no earlier than 2018-06-22 | 周攀 | 8h | 8h | 800 | 800 | 800 |
| 232 | 1.5.4.8 | 度量数据收集 8 | manual | 1d | 2018-06-29 A | 2018-06-29 A | 100% |  |  | 2018-06-29 | 2018-06-29 | 1d | start no earlier than 2018-06-29 | 周攀 | 8h | 8h | 800 | 800 | 800 |
| 233 | 1.5.4.9 | 度量数据收集 9 | manual | 1d | 2018-07-06 A | 2018-07-06 A | 100% |  |  | 2018-07-06 | 2018-07-06 | 1d | start no earlier than 2018-07-06 | 周攀 | 8h | 8h | 800 | 800 | 800 |
| 234 | 1.5.4.10 | 度量数据收集 10 | manual | 1d | 2018-07-13 A | 2018-07-13 A | 100% |  |  | 2018-07-13 | 2018-07-13 | 1d | start no earlier than 2018-07-13 | 周攀 | 8h | 8h | 800 | 800 | 800 |
| 235 | 1.5.4.11 | 度量数据收集 11 | manual | 1d | 2018-07-20 A | 2018-07-20 A | 100% |  |  | 2018-07-20 | 2018-07-20 | 1d | start no earlier than 2018-07-20 | 周攀 | 8h | 8h | 800 | 800 | 800 |
| 236 | 1.5.4.12 | 度量数据收集 12 | manual | 1d | 2018-07-27 A | 2018-07-27 A | 100% |  |  | 2018-07-27 | 2018-07-27 | 1d | start no earlier than 2018-07-27 | 周攀 | 8h | 8h | 800 | 800 | 800 |
| 237 | 1.5.4.13 | 度量数据收集 13 | manual | 1d | 2018-08-03 A | 2018-08-03 A | 100% |  |  | 2018-08-03 | 2018-08-03 | 1d | start no earlier than 2018-08-03 | 周攀 | 8h | 8h | 800 | 800 | 800 |
| 238 | 1.5.4.14 | 度量数据收集 14 | manual | 1d | 2018-08-10 A | 2018-08-10 A | 100% |  |  | 2018-08-10 | 2018-08-10 | 1d | start no earlier than 2018-08-10 | 周攀 | 8h | 8h | 800 | 800 | 800 |
| 239 | 1.5.4.15 | 度量数据收集 15 | manual | 1d | 2018-08-17 A | 2018-08-17 A | 100% |  |  | 2018-08-17 | 2018-08-17 | 1d | start no earlier than 2018-08-17 | 周攀 | 8h | 8h | 800 | 800 | 800 |
| 240 | 1.5.4.16 | 度量数据收集 16 | manual | 1d | 2018-08-24 A | 2018-08-24 A | 100% |  |  | 2018-08-24 | 2018-08-24 | 1d | start no earlier than 2018-08-24 | 周攀 | 8h | 8h | 800 | 800 | 800 |
| 241 | 1.5.4.17 | 度量数据收集 17 | manual | 1d | 2018-08-31 A | 2018-08-31 A | 100% |  |  | 2018-08-31 | 2018-08-31 | 1d | start no earlier than 2018-08-31 | 周攀 | 8h | 8h | 800 | 800 | 800 |
| 242 | 1.5.4.18 | 度量数据收集 18 | manual | 1d | 2018-09-07 A | 2018-09-07 A | 100% |  |  | 2018-09-07 | 2018-09-07 | 1d | start no earlier than 2018-09-07 | 周攀 | 8h | 8h | 800 | 800 | 800 |
| 243 | 1.5.4.19 | 度量数据收集 19 | manual | 1d | 2018-09-14 A | 2018-09-14 A | 100% |  |  | 2018-09-14 | 2018-09-14 | 1d | start no earlier than 2018-09-14 | 周攀 | 8h | 8h | 800 | 800 | 800 |

| ID | WBS | Task | Type | Duration | Start | Finish | Complete | Baseline start | Baseline finish | Baseline duration | Resources | Work | Actual work | Cost | Baseline cost | Actual cost |
| --- | --- | --- | --- | --- | --- | --- | --- | --- | --- | --- | --- | --- | --- | --- | --- | --- |
| 244 | 1.5.5 | **项目变更** |  | 1d? | 2018-06-28 A | 2018-06-28 A | 100% | 2018-06-28 | 2018-06-28 | 1d? |  | 40h | 40h | 4,000 |  | 4,000 |
| 245 | 1.5.5.1 | 变更申请 | manual | 1d | 2018-06-28 A | 2018-06-28 A | 100% | 2018-06-28 | 2018-06-28 | 1d | 周攀 | 8h | 8h | 800 | 800 | 800 |
| 246 | 1.5.5.2 | **变更实施** |  | 1d | 2018-06-28 A | 2018-06-28 A | 100% | 2018-06-28 | 2018-06-28 | 1d | 周攀 | 16h | 16h | 1,600 |  | 1,600 |
| 247 | 1.5.5.2.1 | 文档更新 | manual | 1d | 2018-06-28 A | 2018-06-28 A | 100% | 2018-06-28 | 2018-06-28 | 1d | 周攀 | 8h | 8h | 800 | 800 | 800 |
| 248 | 1.5.5.3 | 更新《变更管理表》 | manual | 1d | 2018-06-28 A | 2018-06-28 A | 100% | 2018-06-28 | 2018-06-28 | 1d | 周攀 | 8h | 8h | 800 | 800 | 800 |
| 249 | 1.5.5.4 | 变更后重新建立基线 | manual | 1d | 2018-06-28 A | 2018-06-28 A | 100% | 2018-06-28 | 2018-06-28 | 1d | 吴子文 | 8h | 8h | 800 | 800 | 800 |
