Schedule from MS Project, 2018-05-02 to 2018-06-08, status date 2019-01-25, scheduled back from the finish, costs in ¥, A marks actual dates.

## Calendars

- 标准: Mon-Fri 08:00-12:00, 13:00-17:00; Sat-Sun off.

## Resources

| Resource | Rate |
| --- | --- |
| 张倩倩 | 50 |
| 王璐欣 | 50 |
| 周开杰 | 50 |
| 金灼 | 50 |
| 李婷 | 50 |
| 王博海 | 50 |
| 董俊豪 | 50 |
| 刘珊珊 | 50 |
| 黄琪 | 50 |
| 吴正洲 | 50 |
| 夏丽 | 50 |
| 邓建博 | 50 |
| 徐玲 | 50 |
| 唐倩 | 50 |
| 李燃 | 50 |
| 罗媛 | 50 |
| 徐欢 | 50 |
| 吕奎 | 50 |
| 熊芸 | 50 |

## Schedule

| ID | WBS | Task | Type | Duration | Start | Finish | Complete | Remaining | Baseline start | Baseline finish | Baseline duration | Total slack | Constraint | Resources | Work | Actual work | Cost | Baseline cost | Actual cost |
| --- | --- | --- | --- | --- | --- | --- | --- | --- | --- | --- | --- | --- | --- | --- | --- | --- | --- | --- | --- |
| 1 | 1 | **柔性化智能实验教学管理平台R1.1迭代一** |  | 28d? | 2018-05-02 A | 2018-06-08 | 98% | 0.52d? | 2018-05-08 | 2018-05-31 | 18d | 0d | as late as possible |  | 1871.52h | 1863.52h | 93,176.09 | 30,516.09 | 93,176.09 |
| 2 | 1.1 | **产品立项阶段** |  | 6d? | 2018-05-02 A | 2018-05-09 | 94% | 0.35d? |  |  |  | 0d | as late as possible |  | 1136h | 1136h | 56,800 |  | 56,800 |
| 3 | 1.1.1 | 可行性分析报告 | manual | 1d | 2018-05-02 A | 2018-05-02 A | 100% |  |  |  |  |  | as late as possible |  | 16h | 16h | 800 |  | 800 |
| 4 | 1.1.2 | 产品功能列表 | manual | 2d | 2018-05-03 A | 2018-05-04 A | 100% |  |  |  |  |  | as late as possible |  | 32h | 32h | 1,600 |  | 1,600 |
| 5 | 1.1.3 | 估算表 | manual | 1d | 2018-05-07 A | 2018-05-07 A | 100% |  |  |  |  |  | as late as possible |  | 16h | 16h | 800 |  | 800 |
| 6 | 1.1.4 | 目标预测 | manual | 1d | 2018-05-07 A | 2018-05-07 A | 100% |  |  |  |  |  | as late as possible |  | 8h | 8h | 400 |  | 400 |
| 7 | 1.1.5 | 项目计划说明书 | manual | 1d | 2018-05-07 A | 2018-05-07 A | 100% |  |  |  |  |  | as late as possible |  | 16h | 16h | 800 |  | 800 |
| 8 | 1.1.6 | 项目说明书评审报告 | manual | 1d | 2018-05-07 A | 2018-05-07 A | 100% |  |  |  |  |  | as late as possible |  | 288h | 288h | 14,400 |  | 14,400 |
| 9 | 1.1.7 | 技术方案决策 | manual | 2d | 2018-05-07 A | 2018-05-08 A | 100% |  |  |  |  |  | as late as possible | 王博海 | 128h | 128h | 6,400 |  | 6,400 |
| 10 | 1.1.8 | 测试计划说明书 | manual | 1d | 2018-05-08 A | 2018-05-08 A | 100% |  |  |  |  |  | as late as possible |  | 16h | 16h | 800 |  | 800 |
| 11 | 1.1.9 | 测试计划说明书评审报告 | manual | 1d | 2018-05-08 A | 2018-05-08 A | 100% |  |  |  |  |  | as late as possible |  | 288h | 288h | 14,400 |  | 14,400 |
| 12 | 1.1.10 | 度量表 | manual | 1d | 2018-05-09 A | 2018-05-09 A | 100% |  |  |  |  |  | as late as possible |  | 16h | 16h | 800 |  | 800 |
| 13 | 1.1.11 | 项目启动会 | manual | 1d | 2018-05-09 A | 2018-05-09 A | 100% |  |  |  |  |  | as late as possible |  | 288h | 288h | 14,400 |  | 14,400 |
| 14 | 1.1.12 | 目标预测 | manual | 1d | 2018-05-09 A | 2018-05-09 A | 100% |  |  |  |  |  | as late as possible |  | 8h | 8h | 400 |  | 400 |
| 15 | 1.2 | **需求阶段** |  | 4d | 2018-05-09 A | 2018-05-14 A | 100% |  | 2018-05-08 | 2018-05-09 | 2d |  | as late as possible |  | 152.8h | 152.8h | 7,640 | 760 | 7,640 |
| 16 | 1.2.1 | 培训计划 | manual | 1d | 2018-05-10 A | 2018-05-10 A | 100% |  |  |  |  |  | as late as possible | 邓建博; 董俊豪; 黄琪; 金灼; 李燃; 李婷; 刘珊珊; 罗媛; 吕奎; 唐倩; 王博海; 王璐欣; 吴正洲; 夏丽; 徐欢; 徐玲; 张倩倩; 周开杰; 熊芸 | 125h | 125h | 6,250 |  | 6,250 |
| 17 | 1.2.2 | 编写《客户需求列表》 |  | 1d | 2018-05-09 A | 2018-05-09 A | 100% |  | 2018-05-08 | 2018-05-08 | 1d |  | start no earlier than 2017-12-21 | 王璐欣 [50%]; 刘珊珊 [50%] | 8h | 8h | 400 | 400 | 400 |
| 18 | 1.2.3 | 性能需求列表 |  | 1d | 2018-05-09 A | 2018-05-09 A | 100% |  | 2018-05-09 | 2018-05-09 | 1d |  | start no earlier than 2018-01-03 | 王璐欣 [50%]; 刘珊珊 [50%] | 5.6h | 5.6h | 280 | 280 | 280 |
| 19 | 1.2.4 | 性能需求列表评审 |  | 1d | 2018-05-10 A | 2018-05-10 A | 100% |  | 2018-05-09 | 2018-05-09 | 1d |  | start no earlier than 2018-01-04 | 王璐欣 [50%]; 刘珊珊 [50%] | 1.6h | 1.6h | 80 | 80 | 80 |
| 20 | 1.3 | **设计阶段** |  | 2d | 2018-05-10 A | 2018-05-11 A | 100% |  | 2018-05-10 | 2018-05-11 | 2d |  | as late as possible |  | 48h | 48h | 2,400 | 2,180 | 2,400 |
| 21 | 1.3.1 | 项目预估算 |  | 1d | 2018-05-10 A | 2018-05-10 A | 100% |  | 2018-05-10 | 2018-05-10 | 1d |  | start no earlier than 2017-12-27 | 邓建博 [50%] | 1h | 1h | 50 | 200 | 50 |
| 22 | 1.3.2 | 启动编写《测试用例》 |  | 2d | 2018-05-10 A | 2018-05-11 A | 100% |  | 2018-05-10 | 2018-05-11 | 2d |  | as late as possible |  | 28h | 28h | 1,400 | 1,500 | 1,400 |
| 23 | 1.3.3 | 确定性估算 |  | 1d | 2018-05-11 A | 2018-05-11 A | 100% |  | 2018-05-11 | 2018-05-11 | 1d |  | start no earlier than 2017-12-29 | 邓建博 [20%] | 1.6h | 1.6h | 80 | 80 | 80 |
| 24 | 1.3.4 | 编制《日程表》 |  | 1d | 2018-05-14 A | 2018-05-14 A | 100% |  | 2018-05-14 | 2018-05-14 | 1d |  | start no earlier than 2017-12-29 | 邓建博 [50%] | 6h | 6h | 300 | 300 | 300 |
| 25 | 1.3.5 | 《日程表》评审 |  | 1d | 2018-05-14 A | 2018-05-14 A | 100% |  | 2018-05-14 | 2018-05-14 | 1d |  | start no earlier than 2018-05-14 | 周开杰 [10%]; 刘珊珊 [10%]; 王璐欣 [10%]; 邓建博 [10%]; 吴正洲 [10%]; 王博海 [10%]; 黄琪 [10%]; 金灼 [10%]; 张倩倩 [10%]; 夏丽 [10%]; 李燃 [10%]; 罗媛 [10%]; 徐欢 [10%]; 吕奎 [10%] | 4h | 4h | 200 | 200 | 200 |

| ID | WBS | Task | Type | Duration | Start | Finish | Complete | Remaining | Baseline start | Baseline finish | Baseline duration | Total slack | Constraint | Resources | Work | Actual work | Cost | Baseline cost | Actual cost |
| --- | --- | --- | --- | --- | --- | --- | --- | --- | --- | --- | --- | --- | --- | --- | --- | --- | --- | --- | --- |
| 26 | 1.3.6 | **项目管理与过程监控** |  | 1d | 2018-05-11 A | 2018-05-11 A | 100% |  | 2018-05-11 | 2018-05-11 | 1d |  | as late as possible |  | 20h | 20h | 1,000 | 680 | 1,000 |
| 27 | 1.3.6.1 | 系统测试用例 |  | 2d | 2018-05-10 A | 2018-05-11 A | 100% |  | 2018-05-10 | 2018-05-11 | 2d |  | finish no earlier than 2018-05-11 | 黄琪 [50%]; 吴正洲 [50%] | 14h | 14h | 700 | 800 | 700 |
| 28 | 1.3.6.2 | 准出/准入测试用例 |  | 2d | 2018-05-10 A | 2018-05-11 A | 100% |  | 2018-05-10 | 2018-05-11 | 2d |  | finish no earlier than 2018-05-11 | 黄琪 [50%]; 吴正洲 [50%] | 14h | 14h | 700 | 700 | 700 |
| 29 | 1.4 | **编码阶段** |  | 7d | 2018-05-14 A | 2018-05-22 | 96% | 0.26d | 2018-05-14 | 2018-05-22 | 7d | 0d | as late as possible |  | 164.6h | 156.6h | 7,830 | 10,450 | 7,830 |
| 30 | 1.4.1 | **风险管理及项目周报** |  | 1d | 2018-05-11 A | 2018-05-11 A | 100% |  | 2018-05-11 | 2018-05-11 | 1d |  | start no earlier than 2017-12-22 | 邓建博 [20%] | 1.6h | 1.6h | 80 | 80 | 80 |
| 31 | 1.4.1.1 | 需求跟踪矩阵更新 |  | 1d | 2018-05-11 A | 2018-05-11 A | 100% |  | 2018-05-11 | 2018-05-11 | 1d |  | finish no earlier than 2018-05-11 | 王璐欣 | 8h | 8h | 400 | 80 | 400 |
| 32 | 1.4.2 | **《测试用例》评审** |  | 1d | 2018-05-14 A | 2018-05-14 A | 100% |  | 2018-05-14 | 2018-05-14 | 1d |  | as late as possible |  | 24h | 24h | 1,200 | 1,200 | 1,200 |
| 33 | 1.4.2.1 | 进度计划更新及度量分析 |  | 1d | 2018-05-11 A | 2018-05-11 A | 100% |  | 2018-05-11 | 2018-05-11 | 1d |  | finish no earlier than 2018-05-11 | 邓建博 [20%] | 1.6h | 1.6h | 80 | 80 | 80 |
| 34 | 1.4.2.2 | 项目例会 |  | 1d | 2018-05-11 A | 2018-05-11 A | 100% |  | 2018-05-11 | 2018-05-11 | 1d |  | finish no earlier than 2018-05-11 | 周开杰 [10%]; 王博海 [10%]; 黄琪 [10%]; 吴正洲 [10%]; 王璐欣 [10%]; 刘珊珊 [10%]; 邓建博 [10%]; 金灼 [10%]; 张倩倩 [10%]; 夏丽 [10%]; 李燃 [10%]; 罗媛 [10%]; 徐欢 [10%]; 吕奎 [10%] | 8h | 8h | 400 | 400 | 400 |
| 35 | 1.4.2.3 | QA审计 |  | 1d | 2018-05-11 A | 2018-05-11 A | 100% |  | 2018-05-11 | 2018-05-11 | 1d |  | finish no earlier than 2018-05-11 | 金灼 [10%]; 罗媛 [10%] | 0.8h | 0.8h | 40 | 40 | 40 |
| 36 | 1.4.3 | **功能实现** |  | 7d | 2018-05-14 A | 2018-05-22 A | 100% |  | 2018-05-14 | 2018-05-22 | 7d |  | as late as possible |  | 105.4h | 105.4h | 5,270 | 8,210 | 5,270 |
| 37 | 1.4.3.1 | 系统测试用例评审 |  | 1d | 2018-05-14 A | 2018-05-14 A | 100% |  | 2018-05-14 | 2018-05-14 | 1d |  | start no earlier than 2018-01-15 | 周开杰 [10%]; 王博海 [10%]; 黄琪 [10%]; 吴正洲 [10%]; 王璐欣 [10%]; 刘珊珊 [10%]; 邓建博 [10%]; 金灼 [10%]; 张倩倩 [10%]; 夏丽 [10%]; 李燃 [10%]; 罗媛 [10%]; 徐欢 [10%] | 8h | 8h | 400 | 400 | 400 |
| 38 | 1.4.3.2 | 准出/准入测试用例评审 |  | 1d | 2018-05-14 A | 2018-05-14 A | 100% |  | 2018-05-14 | 2018-05-14 | 1d |  | start no earlier than 2018-01-15 | 周开杰 [10%]; 王博海 [10%]; 黄琪 [10%]; 吴正洲 [10%]; 王璐欣 [10%]; 刘珊珊 [10%]; 邓建博 [10%]; 金灼 [10%]; 张倩倩 [10%]; 夏丽 [10%]; 李燃 [10%]; 罗媛 [10%]; 徐欢 [10%] | 8h | 8h | 400 | 400 | 400 |
| 39 | 1.4.3.3 | 修改用例 |  | 1d | 2018-05-14 A | 2018-05-14 A | 100% |  | 2018-05-14 | 2018-05-14 | 1d |  | start no later than 2018-05-14 | 吴正洲 [50%]; 黄琪 [50%] | 8h | 8h | 400 | 400 | 400 |
| 40 | 1.4.4 | **代码走查** |  | 1d | 2018-05-15 A | 2018-05-15 A | 100% |  |  |  |  |  | as late as possible |  | 8h | 8h | 400 |  | 400 |
| 41 | 1.4.4.1 | 代码走查 | manual | 1d | 2018-05-15 A | 2018-05-15 A | 100% |  |  |  |  |  | as late as possible | 邓建博 | 8h | 8h | 400 |  | 400 |
| 42 | 1.4.4.2 | 教师首页的登录优化 |  | 4d | 2018-05-16 A | 2018-05-21 A | 100% |  | 2018-05-14 | 2018-05-17 | 4d |  | start no later than 2018-05-14 | 周开杰 | 30h | 30h | 1,500 | 1,500 | 1,500 |
| 43 | 1.4.4.3 | 学生首页的登录优化 |  | 4d | 2018-05-16 A | 2018-05-21 A | 100% |  | 2018-05-14 | 2018-05-17 | 4d |  | start no later than 2018-05-14 | 王博海 | 30h | 30h | 1,500 | 1,500 | 1,500 |
| 44 | 1.4.5 | **测试申请与准出测试** |  | 1d | 2018-05-18 A | 2018-05-18 A | 100% |  | 2018-05-18 | 2018-05-18 | 1d |  | as late as possible |  | 4.8h | 4.8h | 240 | 240 | 240 |
| 45 | 1.4.5.1 | 平台账号的bug修复 |  | 3d | 2018-05-18 A | 2018-05-22 A | 100% |  | 2018-05-18 | 2018-05-22 | 3d |  | start no later than 2018-05-18 | 王博海 [30%]; 周开杰 [30%] | 13.4h | 13.4h | 670 | 670 | 670 |
| 46 | 1.4.6 | **建立测试版本基线** |  | 2d | 2018-05-18 A | 2018-05-21 A | 100% |  | 2018-05-18 | 2018-05-21 | 2d |  | as late as possible |  | 1.6h | 1.6h | 80 | 80 | 80 |
| 47 | 1.4.6.1 | 商业银行子系统问题修复 |  | 4d | 2018-05-14 A | 2018-05-18 A | 100% |  | 2018-05-14 | 2018-05-17 | 4d |  | start no later than 2018-05-14 | 徐欢 | 32h | 32h | 1,600 | 4,540 | 1,600 |
| 48 | 1.4.7 | **项目管理与过程监控** |  | 2d | 2018-05-18 A | 2018-05-21 | 80% | 0.4d | 2018-05-18 | 2018-05-18 | 1d | 0d | as late as possible |  | 20.8h | 12.8h | 640 | 720 | 640 |
| 49 | 1.4.7.1 | 测试准出 |  | 1d | 2018-05-18 A | 2018-05-18 A | 100% |  | 2018-05-18 | 2018-05-18 | 1d |  | start no earlier than 2018-01-15 | 李燃 [30%]; 张倩倩 [30%]; 夏丽 [30%]; 徐欢 [30%] | 4.8h | 4.8h | 240 | 240 | 240 |
| 50 | 1.4.7.2 | 建立测试基线 |  | 2d | 2018-05-18 A | 2018-05-21 A | 100% |  | 2018-05-18 | 2018-05-21 | 2d |  | start no later than 2018-05-18 | 李婷 [10%] | 1.6h | 1.6h | 80 | 80 | 80 |
| 51 | 1.4.7.3 | 风险管理及项目周报 |  | 1d | 2018-05-18 A | 2018-05-18 A | 100% |  | 2018-05-18 | 2018-05-18 | 1d |  | start no later than 2018-05-18 | 邓建博 [20%] | 1.6h | 1.6h | 80 | 80 | 80 |

| ID | WBS | Task | Duration | Start | Finish | Complete | Remaining | Baseline start | Baseline finish | Baseline duration | Total slack | Constraint | Resources | Work | Actual work | Cost | Baseline cost | Actual cost |
| --- | --- | --- | --- | --- | --- | --- | --- | --- | --- | --- | --- | --- | --- | --- | --- | --- | --- | --- |
| 52 | 1.5 | **测试阶段** | 14d | 2018-05-18 A | 2018-06-06 A | 100% |  | 2018-05-18 | 2018-05-30 | 9d |  | as late as possible |  | 345.72h | 345.72h | 17,286.09 | 15,126.09 | 17,286.09 |
| 53 | 1.5.1 | **需求跟踪矩阵更新** | 1d | 2018-05-18 A | 2018-05-21 |  | 1d | 2018-05-18 | 2018-05-18 | 1d | 0d | start no later than 2018-05-18 | 王璐欣 | 8h |  |  | 80 |  |
| 54 | 1.5.1.1 | 进度计划更新及度量分析 | 1d | 2018-05-18 A | 2018-05-18 A | 100% |  | 2018-05-18 | 2018-05-18 | 1d |  | start no later than 2018-05-18 | 邓建博 [20%] | 1.6h | 1.6h | 80 | 80 | 80 |
| 55 | 1.5.2 | **功能测试** | 10d | 2018-05-24 A | 2018-06-06 A | 100% |  | 2018-05-21 | 2018-05-30 | 8d |  | as late as possible |  | 73.92h | 73.92h | 3,696.09 | 3,696.09 | 3,696.09 |
| 56 | 1.5.2.1 | 项目例会 | 1d | 2018-05-18 A | 2018-05-18 A | 100% |  | 2018-05-18 | 2018-05-18 | 1d |  | start no later than 2018-05-18 | 周开杰 [10%]; 王博海 [10%]; 黄琪 [10%]; 吴正洲 [10%]; 王璐欣 [10%]; 刘珊珊 [10%]; 邓建博 [10%]; 金灼 [10%]; 张倩倩 [10%]; 夏丽 [10%]; 李燃 [10%]; 罗媛 [10%]; 徐欢 [10%]; 吕奎 [10%] | 8.8h | 8.8h | 440 | 440 | 440 |
| 57 | 1.5.2.2 | QA审计 | 1d | 2018-05-18 A | 2018-05-18 A | 100% |  | 2018-05-18 | 2018-05-18 | 1d |  | start no later than 2018-05-18 | 金灼 [10%]; 罗媛 [10%] | 0.8h | 0.8h | 40 | 40 | 40 |
| 58 | 1.5.3 | 缺陷处理 | 8d | 2018-05-24 A | 2018-06-04 A | 100% |  | 2018-05-21 | 2018-05-29 | 7d |  | as late as possible |  | 182.2h | 182.2h | 9,110 | 9,110 | 9,110 |
| 59 | 1.5.4 | **测试环境搭建** | 1d | 2018-05-18 A | 2018-05-18 A | 100% |  | 2018-05-18 | 2018-05-18 | 1d |  | start no later than 2018-05-18 | 周开杰 [30%] | 2.4h | 2.4h | 120 | 120 | 120 |
| 60 | 1.5.4.1 | 第一轮测试(含准入) | 4d | 2018-05-24 A | 2018-05-29 A | 100% |  | 2018-05-21 | 2018-05-24 | 4d |  | start no later than 2018-05-21 | 吴正洲 [70%]; 黄琪 [70%] | 35.52h | 35.52h | 1,776.04 | 1,776.04 | 1,776.04 |
| 61 | 1.5.5 | **性能测试** | 14d | 2018-05-18 A | 2018-06-06 A | 100% |  | 2018-05-18 | 2018-05-29 | 8d |  | as late as possible |  | 56h | 56h | 2,800 | 1,600 | 2,800 |
| 62 | 1.5.5.1 | 第二轮测试(含准入) | 3d | 2018-05-31 A | 2018-06-04 A | 100% |  | 2018-05-25 | 2018-05-29 | 3d |  | start no later than 2018-05-25 | 吴正洲 [70%]; 黄琪 [70%] | 27.2h | 27.2h | 1,360.04 | 1,360.04 | 1,360.04 |
| 63 | 1.5.5.2 | 回归测试 | 1d | 2018-06-06 A | 2018-06-06 A | 100% |  | 2018-05-30 | 2018-05-30 | 1d |  | start no later than 2018-05-30 | 吴正洲 [70%]; 黄琪 [70%] | 11.2h | 11.2h | 560.01 | 560.01 | 560.01 |
| 64 | 1.5.6 | **项目管理与过程监控** | 6d | 2018-05-25 A | 2018-06-01 A | 100% |  | 2018-05-25 | 2018-05-25 | 1d |  | as late as possible |  | 31.2h | 31.2h | 1,560 | 600 | 1,560 |
| 65 | 1.5.6.1 | 第一轮缺陷处理 | 4d | 2018-05-24 A | 2018-05-29 A | 100% |  | 2018-05-21 | 2018-05-24 | 4d |  | start no later than 2018-05-21 | 李燃 [30%]; 周开杰 [30%]; 张倩倩 [30%]; 夏丽 [30%]; 王博海 [30%]; 徐欢 [30%] | 54h | 54h | 2,700 | 2,700 | 2,700 |
| 66 | 1.5.6.2 | 第二轮缺陷处理 | 3d | 2018-05-31 A | 2018-06-04 A | 100% |  | 2018-05-25 | 2018-05-29 | 3d |  | start no later than 2018-05-25 | 李燃; 周开杰; 张倩倩; 夏丽; 王博海; 徐欢 | 128.2h | 128.2h | 6,410 | 6,410 | 6,410 |
| 67 | 1.5.6.3 | 性能测试 | 14d | 2018-05-18 A | 2018-06-06 A | 100% |  | 2018-05-18 | 2018-05-29 | 8d |  | finish no later than 2018-06-06 | 唐倩 [50%] | 56h | 56h | 2,800 | 1,600 | 2,800 |
| 68 | 1.5.6.4 | 风险管理及项目周报 | 1d | 2018-05-25 A | 2018-05-25 A | 100% |  | 2018-05-25 | 2018-05-25 | 1d |  | start no later than 2018-05-25 | 邓建博 [10%] | 0.8h | 0.8h | 40 | 40 | 40 |
| 69 | 1.5.6.5 | 需求跟踪矩阵更新 | 1d | 2018-05-25 A | 2018-05-25 A | 100% |  | 2018-05-25 | 2018-05-25 | 1d |  | finish no later than 2018-05-25 | 王璐欣 | 8h | 8h | 400 | 40 | 400 |
| 70 | 1.5.6.6 | 进度计划更新及度量分析 | 1d | 2018-05-25 A | 2018-05-25 A | 100% |  | 2018-05-25 | 2018-05-25 | 1d |  | finish no later than 2018-05-25 | 邓建博 [10%] | 0.8h | 0.8h | 40 | 40 | 40 |
| 71 | 1.5.6.7 | 项目例会 | 1d | 2018-05-25 A | 2018-05-25 A | 100% |  | 2018-05-25 | 2018-05-25 | 1d |  | finish no later than 2018-05-25 | 周开杰 [10%]; 王博海 [10%]; 黄琪 [10%]; 吴正洲 [10%]; 王璐欣 [10%]; 刘珊珊 [10%]; 邓建博 [10%]; 金灼 [10%]; 张倩倩 [10%]; 夏丽 [10%]; 李燃 [10%]; 罗媛 [10%]; 徐欢 [10%]; 吕奎 [10%] | 8.8h | 8.8h | 440 | 440 | 440 |
| 72 | 1.5.6.8 | QA审计 | 1d | 2018-05-25 A | 2018-05-25 A | 100% |  | 2018-05-25 | 2018-05-25 | 1d |  | finish no later than 2018-05-25 | 金灼 [10%]; 罗媛 [10%] | 0.8h | 0.8h | 40 | 40 | 40 |
| 73 | 1.6 | **验收阶段** | 1d | 2018-06-08 A | 2018-06-08 A | 100% |  | 2018-05-18 | 2018-05-31 | 10d |  | as late as possible |  | 24.4h | 24.4h | 1,220 | 1,220 | 1,220 |
| 74 | 1.6.1 | **风险管理及项目周报** | 1d | 2018-06-01 A | 2018-06-01 A | 100% |  | 2018-05-25 | 2018-05-25 | 1d |  | start no later than 2018-05-25 | 邓建博 [10%] | 0.8h | 0.8h | 40 | 40 | 40 |
| 75 | 1.6.1.1 | 需求跟踪矩阵更新 | 1d | 2018-06-01 A | 2018-06-01 A | 100% |  | 2018-05-25 | 2018-05-25 | 1d |  | finish no later than 2018-05-25 | 邓建博 [10%] | 0.8h | 0.8h | 40 | 40 | 40 |

| ID | WBS | Task | Duration | Start | Finish | Complete | Baseline start | Baseline finish | Baseline duration | Constraint | Resources | Work | Actual work | Cost | Baseline cost | Actual cost |
| --- | --- | --- | --- | --- | --- | --- | --- | --- | --- | --- | --- | --- | --- | --- | --- | --- |
| 76 | 1.6.2 | **测试结论** | 1d | 2018-06-08 A | 2018-06-08 A | 100% | 2018-05-30 | 2018-05-30 | 1d | as late as possible |  | 0.4h | 0.4h | 20 | 20 | 20 |
| 77 | 1.6.2.1 | 进度计划更新及度量分析 | 1d | 2018-06-01 A | 2018-06-01 A | 100% | 2018-05-25 | 2018-05-25 | 1d | finish no later than 2018-05-25 | 邓建博 [10%] | 0.8h | 0.8h | 40 | 40 | 40 |
| 78 | 1.6.2.2 | 项目例会 | 1d | 2018-06-01 A | 2018-06-01 A | 100% | 2018-05-25 | 2018-05-25 | 1d | finish no later than 2018-05-25 | 周开杰 [10%]; 王博海 [10%]; 黄琪 [10%]; 吴正洲 [10%]; 王璐欣 [10%]; 刘珊珊 [10%]; 邓建博 [10%]; 金灼 [10%]; 张倩倩 [10%]; 夏丽 [10%]; 李燃 [10%]; 罗媛 [10%]; 徐欢 [10%]; 吕奎 [10%] | 8.8h | 8.8h | 440 | 440 | 440 |
| 79 | 1.6.3 | **组织产品验收** | 0.5d | 2018-06-08 A | 2018-06-08 A | 100% | 2018-05-31 | 2018-05-31 | 0.5d | as late as possible |  | 4h | 4h | 200 | 200 | 200 |
| 80 | 1.6.3.1 | QA审计 | 1d | 2018-06-01 A | 2018-06-01 A | 100% | 2018-05-25 | 2018-05-25 | 1d | finish no later than 2018-05-25 | 金灼 [10%]; 罗媛 [10%] | 0.8h | 0.8h | 40 | 40 | 40 |
| 81 | 1.6.4 | **项目管理与过程监控** | 1d | 2018-06-08 A | 2018-06-08 A | 100% | 2018-05-18 | 2018-05-31 | 10d | as late as possible |  | 20h | 20h | 1,000 | 1,000 | 1,000 |
| 82 | 1.6.4.1 | 测试结论输出 | 1d | 2018-06-08 A | 2018-06-08 A | 100% | 2018-05-30 | 2018-05-30 | 1d | start no later than 2018-05-30 | 黄琪 [5%] | 0.4h | 0.4h | 20 | 20 | 20 |
| 83 | 1.6.4.2 | 产品验收测试 | 0.5d | 2018-06-08 A | 2018-06-08 A | 100% | 2018-05-31 | 2018-05-31 | 0.5d | finish no earlier than 2018-01-31 | 王璐欣 | 4h | 4h | 200 | 200 | 200 |
| 84 | 1.6.4.3 | 风险管理及项目周报 | 1d | 2018-06-08 A | 2018-06-08 A | 100% | 2018-05-31 | 2018-05-31 | 1d | start no earlier than 2018-01-31 | 邓建博 [10%] | 0.8h | 0.8h | 40 | 40 | 40 |
| 85 | 1.6.4.4 | 需求跟踪矩阵更新 | 1d | 2018-06-08 A | 2018-06-08 A | 100% | 2018-05-31 | 2018-05-31 | 1d | finish no earlier than 2018-05-31 | 王璐欣 | 8h | 8h | 400 | 40 | 400 |
| 86 | 1.6.4.5 | 进度计划更新 | 1d | 2018-06-08 A | 2018-06-08 A | 100% | 2018-05-31 | 2018-05-31 | 1d | finish no earlier than 2018-05-31 | 邓建博 [10%] | 0.8h | 0.8h | 40 | 40 | 40 |
| 87 | 1.6.4.6 | 项目例会 | 1d | 2018-06-08 A | 2018-06-08 A | 100% | 2018-05-31 | 2018-05-31 | 1d | finish no earlier than 2018-05-31 | 金灼 [10%]; 周开杰 [10%]; 王博海 [10%]; 黄琪 [10%]; 吴正洲 [10%]; 王璐欣 [10%]; 刘珊珊 [10%]; 邓建博 [10%]; 张倩倩 [10%]; 夏丽 [10%]; 李燃 [10%]; 罗媛 [10%]; 徐欢 [10%]; 吕奎 [10%] | 8.8h | 8.8h | 440 | 440 | 440 |
| 88 | 1.6.4.7 | 配置基线创建 | 1d | 2018-06-08 A | 2018-06-08 A | 100% | 2018-05-18 | 2018-05-31 | 10d | finish no earlier than 2018-05-31 | 李婷 [10%] | 0.8h | 0.8h | 40 | 400 | 40 |
| 89 | 1.6.4.8 | QA审计 | 1d | 2018-06-08 A | 2018-06-08 A | 100% | 2018-05-31 | 2018-05-31 | 1d | finish no earlier than 2018-05-31 | 金灼 [10%]; 罗媛 [10%] | 0.8h | 0.8h | 40 | 40 | 40 |
