# 柔性化智能实验教学管理平台R1.1迭代三_项目日程表

Schedule from MS Project, 2018-07-13 to 2018-10-22, status date 2019-01-19, costs in ¥, A marks actual dates.

## Calendars

- 标准: Mon-Fri 08:00-12:00, 13:00-17:00; Sat-Sun off. Exceptions (off unless hours are given): 2018-09-24, 2018-10-01 to 2018-10-07.

## Resources

| Resource | Rate |
| --- | --- |
| 张倩倩 | 50 |
| 王璐欣 | 50 |
| 周开杰 | 50 |
| 金灼 | 50 |
| 李婷 | 50 |
| 王博海 | 50 |
| 董俊豪 | 50 |
| 刘珊珊 | 50 |
| 黄琪 | 50 |
| 夏丽 | 50 |
| 邓建博 | 50 |
| 徐玲 | 50 |
| 唐倩 | 50 |
| 李燃 | 50 |
| 罗媛 | 50 |
| 徐欢 | 50 |
| 吕奎 | 50 |
| 谢晓飞 | 50 |
| 夏文超 | 50 |
| 黄少莲 | 50 |
| 翟平平 | 50 |
| 刘燕燕 | 50 |
| 操邵平 | 50 |
| 房雷 | 50 |
| 李奕霏 | 50 |
| 高雅倩 | 50 |
| 胡文峰 | 50 |
| 胡乐 | 50 |
| 彭华 | 50 |

## Schedule

| ID | WBS | Task | Type | Duration | Start | Finish | Predecessors | Complete | Baseline start | Baseline finish | Baseline duration | Constraint | Resources | Work | Actual work | Cost | Baseline cost | Actual cost |
| --- | --- | --- | --- | --- | --- | --- | --- | --- | --- | --- | --- | --- | --- | --- | --- | --- | --- | --- |
| 1 | 1 | **柔性化智能实验教学管理平台R1.1迭代三** |  | 66d | 2018-07-13 A | 2018-10-22 A |  | 100% | 2018-07-02 | 2018-09-14 | 55d |  |  | 6958.96h | 6958.96h | 347,948.05 | 240,728.05 | 347,948.05 |
| 2 | 1.1 | 目标预测 | manual | 1d | 2018-07-13 A | 2018-07-13 A |  | 100% |  |  |  |  | 邓建博 | 8h | 8h | 400 |  | 400 |
| 3 | 1.2 | **需求阶段** |  | 8d | 2018-07-13 A | 2018-07-24 A |  | 100% | 2018-07-02 | 2018-07-20 | 15d |  |  | 487.6h | 487.6h | 24,380 | 12,920 | 24,380 |
| 4 | 1.2.1 | 编写《客户需求列表》 |  | 1d | 2018-07-13 A | 2018-07-13 A |  | 100% | 2018-07-02 | 2018-07-02 | 1d | finish no earlier than 2018-07-09 | 王璐欣 [50%]; 刘珊珊 [50%]; 李奕霏 | 16h | 16h | 800 | 800 | 800 |
| 5 | 1.2.2 | 输出产品原型 |  | 2d | 2018-07-16 A | 2018-07-17 A | 4 | 100% | 2018-07-03 | 2018-07-04 | 2d |  | 王璐欣 [50%]; 刘珊珊 [50%]; 李奕霏 | 32h | 32h | 1,600 | 1,600 | 1,600 |
| 6 | 1.2.3 | 编写《客户需求说明书》 |  | 4d | 2018-07-13 A | 2018-07-18 A | 5 | 100% | 2018-07-05 | 2018-07-11 | 5d | finish no earlier than 2018-07-11 | 王璐欣 [50%]; 刘珊珊 [50%]; 李奕霏 | 64h | 64h | 3,200 | 4,000 | 3,200 |
| 7 | 1.2.4 | 原型及客户说明书评审 |  | 1d | 2018-07-18 A | 2018-07-18 A | 6 | 100% | 2018-07-12 | 2018-07-12 | 1d |  | 周开杰 [10%]; 王博海 [10%]; 黄琪 [10%]; 操邵平; 王璐欣 [10%]; 刘珊珊 [10%]; 邓建博 [10%]; 金灼 [10%]; 张倩倩 [10%]; 夏丽 [10%]; 李燃 [10%]; 罗媛 [10%]; 徐欢 [10%]; 吕奎 [10%]; 房雷; 胡文峰; 李奕霏; 刘燕燕; 唐倩; 夏文超 | 62.4h | 62.4h | 3,120 | 3,120 | 3,120 |
| 8 | 1.2.5 | 性能需求列表 |  | 1d | 2018-07-18 A | 2018-07-18 A |  | 100% | 2018-07-18 | 2018-07-18 | 1d | start no earlier than 2018-01-17 | 王璐欣 [50%]; 刘珊珊 [50%] | 5.6h | 5.6h | 280 | 280 | 280 |
| 9 | 1.2.6 | 性能需求列表评审 |  | 2d | 2018-07-19 A | 2018-07-20 A |  | 100% | 2018-07-19 | 2018-07-20 | 2d | start no earlier than 2018-01-04 | 王璐欣 [10%]; 刘珊珊 [10%]; 周开杰 [10%]; 王博海 [10%]; 黄琪 [10%]; 操邵平; 邓建博 [10%]; 金灼 [10%]; 张倩倩 [10%]; 夏丽 [10%]; 李燃 [10%]; 罗媛 [10%]; 徐欢 [10%]; 吕奎 [10%]; 房雷; 胡文峰; 李奕霏; 刘燕燕; 唐倩; 夏文超 | 62.4h | 62.4h | 3,120 | 3,120 | 3,120 |
| 10 | 1.2.7 | 项目预估算 |  | 1d | 2018-07-20 A | 2018-07-20 A |  | 100% | 2018-07-20 | 2018-07-20 | 1d | start no earlier than 2018-07-20 | 邓建博 [50%] | 2h | 2h | 100 | 100 | 100 |
| 11 | 1.2.8 | 培训计划 | manual | 1d | 2018-07-20 A | 2018-07-20 A |  | 100% |  |  |  |  | 操邵平; 邓建博; 董俊豪; 房雷; 高雅倩; 胡乐; 胡文峰; 黄琪; 黄少莲; 金灼; 李燃; 李婷; 李奕霏; 刘珊珊; 刘燕燕; 罗媛; 吕奎; 彭华; 唐倩; 王博海; 王璐欣; 夏丽; 夏文超; 谢晓飞; 徐欢; 徐玲; 翟平平; 张倩倩; 周开杰 | 232h | 232h | 11,600 |  | 11,600 |
| 12 | 1.2.9 | 确定性估算 |  | 1d | 2018-07-23 A | 2018-07-23 A |  | 100% | 2018-07-23 | 2018-07-23 | 1d | start no earlier than 2018-07-23 | 邓建博 [20%] | 1.6h | 1.6h | 80 | 80 | 80 |
| 13 | 1.2.10 | 编制《日程表》 |  | 1d | 2018-07-24 A | 2018-07-24 A | 12 | 100% | 2018-07-24 | 2018-07-24 | 1d |  | 邓建博 [50%] | 6h | 6h | 300 | 300 | 300 |
| 14 | 1.2.11 | 《日程表》评审 |  | 1d | 2018-07-24 A | 2018-07-24 A |  | 100% | 2018-07-24 | 2018-07-24 | 1d | start no earlier than 2018-07-24 | 周开杰 [10%]; 刘珊珊 [10%]; 王璐欣 [10%]; 邓建博 [10%]; 王博海 [10%]; 黄琪 [10%]; 金灼 [10%]; 张倩倩 [10%]; 夏丽 [10%]; 李燃 [10%]; 罗媛 [10%]; 徐欢 [10%]; 吕奎 [10%] | 3.6h | 3.6h | 180 | 180 | 180 |
| 15 | 1.3 | **设计阶段** |  | 16d | 2018-07-17 A | 2018-08-07 A |  | 100% | 2018-07-05 | 2018-08-07 | 24d |  |  | 566.6h | 566.6h | 28,330 | 28,010 | 28,330 |
| 16 | 1.3.1 | **视觉与交互设计** |  | 10d | 2018-07-17 A | 2018-07-30 A |  | 100% | 2018-07-05 | 2018-07-27 | 17d |  |  | 232.4h | 232.4h | 11,620 | 11,620 | 11,620 |
| 17 | 1.3.1.1 | **UI界面设计** |  | 8d | 2018-07-19 A | 2018-07-30 A |  | 100% | 2018-07-05 | 2018-07-13 | 7d |  |  | 78.4h | 78.4h | 3,920 | 3,920 | 3,920 |
| 18 | 1.3.1.1.1 | 平台 |  | 0.5d | 2018-07-19 A | 2018-07-19 A |  | 100% | 2018-07-05 | 2018-07-05 | 0.5d | start no earlier than 2018-07-05 | 徐玲 | 4h | 4h | 200 | 200 | 200 |
| 19 | 1.3.1.1.2 | 题库和考试系统 |  | 0.4d | 2018-07-20 A | 2018-07-20 A |  | 100% | 2018-07-05 | 2018-07-05 | 0.4d | finish no earlier than 2018-07-05 | 徐玲 | 3.2h | 3.2h | 160 | 160 | 160 |
| 20 | 1.3.1.1.3 | 大赛系统 |  | 2d | 2018-07-23 A | 2018-07-24 A | 19 | 100% | 2018-07-06 | 2018-07-09 | 2d | finish no earlier than 2018-07-09 | 徐玲 | 16h | 16h | 800 | 800 | 800 |
| 21 | 1.3.1.1.4 | 财会易系统 |  | 2d | 2018-07-25 A | 2018-07-26 A | 20 | 100% | 2018-07-10 | 2018-07-11 | 2d |  | 徐玲 | 16h | 16h | 800 | 800 | 800 |
| 22 | 1.3.1.1.5 | UI评审 |  | 2d | 2018-07-27 A | 2018-07-30 A | 21 | 100% | 2018-07-12 | 2018-07-13 | 2d |  | 刘珊珊; 李奕霏; 王璐欣 | 39.2h | 39.2h | 1,960 | 1,960 | 1,960 |
| 23 | 1.3.1.2 | **前端设计** |  | 9d | 2018-07-17 A | 2018-07-27 A |  | 100% | 2018-07-12 | 2018-07-27 | 12d |  |  | 154h | 154h | 7,700 | 7,700 | 7,700 |
| 24 | 1.3.1.2.1 | 平台 |  | 2d | 2018-07-18 A | 2018-07-19 A |  | 100% | 2018-07-12 | 2018-07-13 | 2d | start no earlier than 2018-07-12 | 董俊豪 | 16h | 16h | 800 | 800 | 800 |
| 25 | 1.3.1.2.2 | 题库和考试系统 |  | 4d | 2018-07-17 A | 2018-07-20 A |  | 100% | 2018-07-17 | 2018-07-20 | 4d | finish no earlier than 2018-07-20 | 董俊豪 | 32h | 32h | 1,600 | 1,600 | 1,600 |
| 26 | 1.3.1.2.3 | 大赛系统 |  | 8d | 2018-07-18 A | 2018-07-27 A |  | 100% | 2018-07-18 | 2018-07-27 | 8d | start no earlier than 2018-07-18 | 高雅倩 | 64h | 64h | 3,200 | 3,200 | 3,200 |
| 27 | 1.3.1.2.4 | 财会易系统 |  | 5d | 2018-07-23 A | 2018-07-27 A | 25 | 100% | 2018-07-23 | 2018-07-27 | 5d |  | 董俊豪 | 40h | 40h | 2,000 | 2,000 | 2,000 |

| ID | WBS | Task | Duration | Start | Finish | Predecessors | Complete | Baseline start | Baseline finish | Baseline duration | Constraint | Resources | Work | Actual work | Cost | Baseline cost | Actual cost |
| --- | --- | --- | --- | --- | --- | --- | --- | --- | --- | --- | --- | --- | --- | --- | --- | --- | --- |
| 28 | 1.3.1.2.5 | **前端输出测试** | 1d | 2018-07-27 A | 2018-07-27 A |  | 100% | 2018-07-27 | 2018-07-27 | 1d |  |  | 2h | 2h | 100 | 100 | 100 |
| 29 | 1.3.1.2.5.1 | 财会易系统 | 1d | 2018-07-27 A | 2018-07-27 A |  | 100% | 2018-07-27 | 2018-07-27 | 1d | start no earlier than 2018-07-27 | 黄琪 [50%] | 1h | 1h | 50 | 50 | 50 |
| 30 | 1.3.1.2.5.2 | 大赛系统 | 1d | 2018-07-27 A | 2018-07-27 A |  | 100% | 2018-07-27 | 2018-07-27 | 1d | start no earlier than 2018-07-27 | 黄琪 [50%] | 1h | 1h | 50 | 50 | 50 |
| 31 | 1.3.2 | **启动编写《测试用例》** | 15d | 2018-07-18 A | 2018-08-07 A |  | 100% | 2018-07-09 | 2018-08-07 | 22d |  |  | 259h | 259h | 12,950 | 12,950 | 12,950 |
| 32 | 1.3.2.1 | 思维导图编写 | 1d | 2018-07-23 A | 2018-07-23 A |  | 100% | 2018-07-23 | 2018-07-23 | 1d | start no earlier than 2018-07-23 | 操邵平; 房雷; 黄琪; 刘燕燕 | 32h | 32h | 1,600 | 1,600 | 1,600 |
| 33 | 1.3.2.2 | 测试需求分析评审 | 1d | 2018-07-25 A | 2018-07-25 A |  | 100% | 2018-07-09 | 2018-07-09 | 1d |  | 操邵平 [20%]; 房雷 [20%]; 黄琪 [20%]; 刘燕燕 [20%] | 6.4h | 6.4h | 320 | 320 | 320 |
| 34 | 1.3.2.3 | 系统测试用例编写 | 7d | 2018-07-18 A | 2018-08-03 A |  | 100% | 2018-07-18 | 2018-08-03 | 7d | finish no earlier than 2018-08-03 | 房雷; 操邵平; 黄琪; 刘燕燕 | 187.2h | 187.2h | 9,360 | 9,360 | 9,360 |
| 35 | 1.3.2.4 | 系统测试用例评审 | 1d | 2018-08-06 A | 2018-08-06 A | 34 | 100% | 2018-08-06 | 2018-08-06 | 1d |  | 房雷; 操邵平; 黄琪; 刘燕燕 | 27h | 27h | 1,350 | 1,350 | 1,350 |
| 36 | 1.3.2.5 | 测试用例修改 | 1d | 2018-08-07 A | 2018-08-07 A | 35 | 100% | 2018-08-07 | 2018-08-07 | 1d |  | 操邵平 [20%]; 房雷 [20%]; 黄琪 [20%]; 刘燕燕 [20%] | 6.4h | 6.4h | 320 | 320 | 320 |
| 37 | 1.3.3 | **项目管理与过程监控** | 2d | 2018-07-20 A | 2018-07-23 A |  | 100% | 2018-07-20 | 2018-07-23 | 2d |  |  | 75.2h | 75.2h | 3,760 | 3,440 | 3,760 |
| 38 | 1.3.3.1 | 风险管理及项目周报 | 1d | 2018-07-20 A | 2018-07-20 A |  | 100% | 2018-07-20 | 2018-07-20 | 1d | start no earlier than 2018-07-20 | 邓建博 [20%] | 1.6h | 1.6h | 80 | 80 | 80 |
| 39 | 1.3.3.2 | 需求跟踪矩阵更新 | 1d | 2018-07-20 A | 2018-07-20 A |  | 100% | 2018-07-20 | 2018-07-20 | 1d | start no earlier than 2018-07-20 | 王璐欣 | 8h | 8h | 400 | 80 | 400 |
| 40 | 1.3.3.3 | 进度计划更新及度量分析 | 1d | 2018-07-20 A | 2018-07-20 A |  | 100% | 2018-07-20 | 2018-07-20 | 1d | start no earlier than 2018-07-20 | 邓建博 [20%] | 1.6h | 1.6h | 80 | 80 | 80 |
| 41 | 1.3.3.4 | 项目例会 | 1d | 2018-07-20 A | 2018-07-20 A |  | 100% | 2018-07-20 | 2018-07-20 | 1d | start no earlier than 2018-07-20 | 周开杰 [10%]; 王博海 [10%]; 黄琪 [10%]; 操邵平; 王璐欣 [10%]; 刘珊珊 [10%]; 邓建博 [10%]; 金灼 [10%]; 张倩倩 [10%]; 夏丽 [10%]; 李燃 [10%]; 罗媛 [10%]; 徐欢 [10%]; 吕奎 [10%]; 房雷; 胡文峰; 李奕霏; 刘燕燕; 唐倩; 夏文超 | 63.2h | 63.2h | 3,160 | 3,160 | 3,160 |
| 42 | 1.3.3.5 | QA审计 | 1d | 2018-07-20 A | 2018-07-23 A |  | 100% | 2018-07-20 | 2018-07-23 | 1d | start no earlier than 2018-07-20 | 罗媛 [10%]; 金灼 [10%] | 0.8h | 0.8h | 40 | 40 | 40 |
| 43 | 1.4 | **编码阶段** | 22d | 2018-07-30 A | 2018-08-28 A |  | 100% | 2018-07-16 | 2018-08-13 | 21d |  |  | 1778h | 1778h | 88,900 | 70,310 | 88,900 |
| 44 | 1.4.1 | **功能实现** | 22d | 2018-07-30 A | 2018-08-28 A |  | 100% | 2018-07-16 | 2018-08-10 | 20d |  |  | 1478.2h | 1478.2h | 73,910 | 60,420 | 73,910 |
| 45 | 1.4.1.1 | **平台端** | 21d | 2018-07-30 A | 2018-08-27 A |  | 100% | 2018-07-16 | 2018-08-03 | 15d |  |  | 237.2h | 237.2h | 11,860 | 10,460 | 11,860 |
| 46 | 1.4.1.1.1 | (超管)应用-应用管理-理论应用-配置应用内容（3个子系统系统） | 1d | 2018-07-30 A | 2018-07-30 A |  | 100% | 2018-07-16 | 2018-07-16 | 1d | start no earlier than 2018-07-16 | 周开杰 | 8h | 8h | 400 | 400 | 400 |
| 47 | 1.4.1.1.2 | （理论应用）教学-我的应用-发布考核（3个子系统系统） | 2d | 2018-07-31 A | 2018-08-01 A | 46 | 100% | 2018-07-17 | 2018-07-18 | 2d | start no earlier than 2018-07-16 | 周开杰 | 16h | 16h | 800 | 800 | 800 |
| 48 | 1.4.1.1.3 | （理论应用）学习-我的应用-进入考核（3个子系统系统） | 1d | 2018-08-02 A | 2018-08-02 A | 47 | 100% | 2018-07-19 | 2018-07-19 | 1d | start no earlier than 2018-07-16 | 周开杰 | 7.2h | 7.2h | 360 | 360 | 360 |
| 49 | 1.4.1.1.4 | （理论应用）教学-成绩管理-查看成绩（3个子系统系统） | 1d | 2018-08-03 A | 2018-08-03 A | 48 | 100% | 2018-07-20 | 2018-07-20 | 1d | start no earlier than 2018-07-16 | 周开杰 | 7.2h | 7.2h | 360 | 360 | 360 |
| 50 | 1.4.1.1.5 | （理论应用）教学/学习-进入应用-进入练习（3个子系统系统） | 1d | 2018-08-06 A | 2018-08-06 A | 49 | 100% | 2018-07-23 | 2018-07-23 | 1d | start no earlier than 2018-07-16 | 周开杰 | 8h | 8h | 400 | 400 | 400 |
| 51 | 1.4.1.1.6 | 理论试题管理系统（3个子系统系统） | 2d | 2018-08-08 A | 2018-08-09 A | 50 | 100% | 2018-07-24 | 2018-07-25 | 2d | start no earlier than 2018-07-16 | 周开杰 | 15.6h | 15.6h | 780 | 780 | 780 |
| 52 | 1.4.1.1.7 | 理论考试系统-试卷管理（3个子系统系统） | 3d | 2018-08-10 A | 2018-08-14 A | 51 | 100% | 2018-07-26 | 2018-07-26 | 1d | start no earlier than 2018-07-16 | 周开杰 | 23.2h | 23.2h | 1,160 | 360 | 1,160 |
| 53 | 1.4.1.1.8 | （教师）发布考核-团队模式（保险综合） | 1d | 2018-08-15 A | 2018-08-15 A | 52 | 100% | 2018-07-27 | 2018-07-27 | 1d | start no earlier than 2018-07-16 | 周开杰 | 8h | 8h | 400 | 400 | 400 |
| 54 | 1.4.1.1.9 | 大赛系统对接（平台-大赛系统） | 1d | 2018-08-16 A | 2018-08-16 A | 53 | 100% | 2018-07-30 | 2018-07-31 | 2d | start no earlier than 2018-07-16 | 周开杰 | 8h | 8h | 400 | 800 | 400 |
| 55 | 1.4.1.1.10 | （教师）教学-成绩管理-查看学生成绩详情（国结） | 1d | 2018-08-17 A | 2018-08-17 A | 54 | 100% | 2018-08-01 | 2018-08-01 | 1d | start no earlier than 2018-07-16 | 周开杰 | 8h | 8h | 400 | 400 | 400 |
| 56 | 1.4.1.1.11 | （学生）查看成绩-考核点详情（国结） | 2d | 2018-08-20 A | 2018-08-21 A | 55 | 100% | 2018-08-02 | 2018-08-02 | 1d | start no earlier than 2018-07-16 | 周开杰 | 15.2h | 15.2h | 760 | 360 | 760 |
| 57 | 1.4.1.1.12 | 银行子系统-自由模式练习（银行4个子系统） | 4d | 2018-08-22 A | 2018-08-27 A | 56 | 100% | 2018-08-03 | 2018-08-03 | 1d | start no earlier than 2018-07-16 | 周开杰 | 29.6h | 29.6h | 1,480 | 280 | 1,480 |
| 58 | 1.4.1.1.13 | （学校管理员）管理-用户管理（平台） | 1d | 2018-07-30 A | 2018-07-30 A |  | 100% | 2018-07-25 | 2018-07-25 | 1d | start no earlier than 2018-07-25 | 邓建博 | 8h | 8h | 400 | 400 | 400 |
| 59 | 1.4.1.1.14 | 应用分类-应用类型 | 1d | 2018-07-31 A | 2018-07-31 A | 58 | 100% | 2018-07-26 | 2018-07-26 | 1d |  | 邓建博 | 7.2h | 7.2h | 360 | 360 | 360 |
| 60 | 1.4.1.1.15 | 细节优化汇总 | 1d | 2018-08-01 A | 2018-08-01 A | 59 | 100% | 2018-07-27 | 2018-07-27 | 1d |  | 邓建博 | 3h | 3h | 150 | 150 | 150 |
| 61 | 1.4.1.1.16 | （超管）应用-应用管理-创建应用 | 1d | 2018-08-02 A | 2018-08-02 A | 60 | 100% | 2018-07-30 | 2018-07-30 | 1d |  | 邓建博 | 8h | 8h | 400 | 400 | 400 |
| 62 | 1.4.1.1.17 | （接口模式应用）教学-我的应用 | 1d | 2018-08-03 A | 2018-08-03 A | 61 | 100% | 2018-07-31 | 2018-07-31 | 1d |  | 邓建博 | 8h | 8h | 400 | 400 | 400 |
| 63 | 1.4.1.1.18 | （接口模式应用）学习-我的应用 | 1d | 2018-08-06 A | 2018-08-06 A | 62 | 100% | 2018-08-01 | 2018-08-01 | 1d |  | 邓建博 | 8h | 8h | 400 | 400 | 400 |
| 64 | 1.4.1.1.19 | （教师）教学-我的应用-应用信息 | 1d | 2018-08-07 A | 2018-08-07 A | 63 | 100% | 2018-08-02 | 2018-08-02 | 1d |  | 邓建博 | 7h | 7h | 350 | 350 | 350 |
| 65 | 1.4.1.1.20 | （学生）学习-我的应用-应用信息 | 1d | 2018-08-08 A | 2018-08-08 A | 64 | 100% | 2018-08-03 | 2018-08-03 | 1d |  | 邓建博 | 2h | 2h | 100 | 100 | 100 |
| 66 | 1.4.1.1.21 | 用户注册功能（平台） | 1d | 2018-08-09 A | 2018-08-09 A |  | 100% | 2018-07-23 | 2018-07-25 | 3d | finish no earlier than 2018-07-25 | 邓建博 | 8h | 8h | 400 | 1,200 | 400 |
| 67 | 1.4.1.1.22 | （超管）应用-应用后台-理财规划 | 1d | 2018-08-10 A | 2018-08-10 A | 66 | 100% | 2018-07-26 | 2018-07-26 | 1d |  | 邓建博 | 8h | 8h | 400 | 200 | 400 |
| 68 | 1.4.1.1.23 | （教师）发布考核 | 1d | 2018-08-13 A | 2018-08-13 A | 67 | 100% | 2018-07-27 | 2018-07-27 | 1d |  | 邓建博 | 8h | 8h | 400 | 400 | 400 |
| 69 | 1.4.1.1.24 | （教师）考核列表 | 1d | 2018-08-14 A | 2018-08-14 A | 68 | 100% | 2018-07-30 | 2018-07-30 | 1d |  | 邓建博 | 8h | 8h | 400 | 400 | 400 |

| ID | WBS | Task | Duration | Start | Finish | Predecessors | Complete | Baseline start | Baseline finish | Baseline duration | Constraint | Resources | Work | Actual work | Cost | Baseline cost | Actual cost |
| --- | --- | --- | --- | --- | --- | --- | --- | --- | --- | --- | --- | --- | --- | --- | --- | --- | --- |
| 70 | 1.4.1.2 | **题库系统** | 22d | 2018-07-30 A | 2018-08-28 A |  | 100% | 2018-07-16 | 2018-08-03 | 15d |  |  | 164.8h | 164.8h | 8,240 | 5,440 | 8,240 |
| 71 | 1.4.1.2.1 | 试题管理（除导入） | 5d | 2018-07-30 A | 2018-08-03 A |  | 100% | 2018-07-16 | 2018-07-20 | 5d | start no earlier than 2018-07-16 | 夏丽 | 38.4h | 38.4h | 1,920 | 1,920 | 1,920 |
| 72 | 1.4.1.2.2 | 外部接口编写（一部分） | 3d | 2018-08-06 A | 2018-08-08 A | 71 | 100% | 2018-07-23 | 2018-07-24 | 2d | start no earlier than 2018-07-23 | 夏丽 | 16h | 16h | 800 | 400 | 800 |
| 73 | 1.4.1.2.3 | 科目管理 | 3d | 2018-08-09 A | 2018-08-13 A | 72 | 100% | 2018-07-25 | 2018-07-27 | 3d | start no earlier than 2018-07-25 | 夏丽 | 23.2h | 23.2h | 1,160 | 1,160 | 1,160 |
| 74 | 1.4.1.2.4 | 科目管理页面替换 | 3d | 2018-08-14 A | 2018-08-16 A | 73 | 100% | 2018-07-30 | 2018-07-30 | 1d | finish no earlier than 2018-08-07 | 夏丽 | 24h | 24h | 1,200 | 400 | 1,200 |
| 75 | 1.4.1.2.5 | 试题管理导入 | 4d | 2018-08-17 A | 2018-08-22 A | 74 | 100% | 2018-07-31 | 2018-08-01 | 2d | start no earlier than 2018-07-31 | 夏丽 | 32h | 32h | 1,600 | 800 | 1,600 |
| 76 | 1.4.1.2.6 | 外部接口编写（另一部分） | 4d | 2018-08-23 A | 2018-08-28 A | 75 | 100% | 2018-08-02 | 2018-08-03 | 2d | start no earlier than 2018-08-02 | 夏丽 | 31.2h | 31.2h | 1,560 | 760 | 1,560 |
| 77 | 1.4.1.3 | **考试系统** | 19d | 2018-07-30 A | 2018-08-23 A |  | 100% | 2018-07-16 | 2018-08-03 | 15d |  |  | 286h | 286h | 14,300 | 11,060 | 14,300 |
| 78 | 1.4.1.3.1 | (平台-超管)后台试卷管理入口 | 2d | 2018-07-30 A | 2018-07-31 A |  | 100% | 2018-07-16 | 2018-07-17 | 2d | start no earlier than 2018-07-16 | 谢晓飞 | 16h | 16h | 800 | 800 | 800 |
| 79 | 1.4.1.3.2 | (平台-教师)后台试卷管理入口 | 4d | 2018-08-01 A | 2018-08-06 A |  | 100% | 2018-07-18 | 2018-07-19 | 2d | start no earlier than 2018-07-18 | 谢晓飞 | 32h | 32h | 1,600 | 800 | 1,600 |
| 80 | 1.4.1.3.3 | （超管/教师）试卷管理 | 3d | 2018-08-07 A | 2018-08-09 A |  | 100% | 2018-07-20 | 2018-07-24 | 3d | start no earlier than 2018-07-20 | 谢晓飞 | 24h | 24h | 1,200 | 1,200 | 1,200 |
| 81 | 1.4.1.3.4 | （超管/教师）新增试卷 | 2d | 2018-08-10 A | 2018-08-13 A |  | 100% | 2018-07-25 | 2018-07-27 | 3d | start no earlier than 2018-07-25 | 谢晓飞 | 16h | 16h | 800 | 1,200 | 800 |
| 82 | 1.4.1.3.5 | （平台-教师）发布理论考核 | 4d | 2018-08-14 A | 2018-08-17 A |  | 100% | 2018-07-30 | 2018-08-01 | 3d | start no earlier than 2018-07-30 | 谢晓飞 | 32h | 32h | 1,600 | 1,200 | 1,600 |
| 83 | 1.4.1.3.6 | （教师）考核列表-修改时间 | 4d | 2018-08-20 A | 2018-08-23 A |  | 100% | 2018-08-02 | 2018-08-03 | 2d | start no earlier than 2018-08-02 | 谢晓飞 | 32h | 32h | 1,600 | 800 | 1,600 |
| 84 | 1.4.1.3.7 | （超管/教师）试卷预览 | 2d | 2018-07-30 A | 2018-07-31 A |  | 100% | 2018-07-16 | 2018-07-17 | 2d | start no earlier than 2018-07-16 | 王博海 | 16h | 16h | 800 | 800 | 800 |
| 85 | 1.4.1.3.8 | （超管/教师）查看试题 | 1d | 2018-08-01 A | 2018-08-01 A |  | 100% | 2018-07-18 | 2018-07-18 | 1d | start no earlier than 2018-07-18 | 王博海 | 8h | 8h | 400 | 400 | 400 |
| 86 | 1.4.1.3.9 | （学生）练习做题界面 | 1d | 2018-08-02 A | 2018-08-02 A |  | 100% | 2018-07-19 | 2018-07-23 | 3d | start no earlier than 2018-07-19 | 王博海 | 7.2h | 7.2h | 360 | 1,120 | 360 |
| 87 | 1.4.1.3.10 | （平台-学生）进入理论考核 | 1d | 2018-08-03 A | 2018-08-03 A | 86 | 100% | 2018-07-24 | 2018-07-25 | 2d |  | 王博海 | 7.6h | 7.6h | 380 | 780 | 380 |
| 88 | 1.4.1.3.11 | （平台-教师）成绩管理-查看理论成绩 | 2d | 2018-08-07 A | 2018-08-08 A | 87 | 100% | 2018-07-27 | 2018-07-30 | 2d | finish no earlier than 2018-08-01 | 王博海 | 16h | 16h | 800 | 800 | 800 |
| 89 | 1.4.1.3.12 | 平台-学生进入理论练习&查看历史成绩 | 3d | 2018-08-09 A | 2018-08-13 A | 88 | 100% | 2018-07-31 | 2018-07-31 | 1d | start no earlier than 2018-07-31 | 王博海 | 24h | 24h | 1,200 | 400 | 1,200 |
| 90 | 1.4.1.3.13 | （学生）练习成绩列表 | 1d | 2018-08-14 A | 2018-08-14 A | 89 | 100% | 2018-08-01 | 2018-08-01 | 1d | finish no earlier than 2018-08-01 | 王博海 | 4h | 4h | 200 | 200 | 200 |
| 91 | 1.4.1.3.14 | （平台-学生）查看理论考核成绩 | 4d | 2018-08-15 A | 2018-08-20 A |  | 100% | 2018-08-01 | 2018-08-01 | 1d | start no earlier than 2018-08-01 | 王博海 | 28h | 28h | 1,400 | 200 | 1,400 |
| 92 | 1.4.1.3.15 | （学生）考核做题界面 | 3d | 2018-08-21 A | 2018-08-23 A | 91 | 100% | 2018-08-02 | 2018-08-02 | 1d | finish no earlier than 2018-08-02 | 王博海 | 23.2h | 23.2h | 1,160 | 360 | 1,160 |
| 93 | 1.4.1.4 | **大赛系统** | 21d | 2018-07-30 A | 2018-08-27 A |  | 100% | 2018-07-16 | 2018-08-02 | 14d |  |  | 291.2h | 291.2h | 14,560 | 8,910 | 14,560 |
| 94 | 1.4.1.4.1 | 学生端-竞赛列表页 | 4d | 2018-07-30 A | 2018-08-02 A |  | 100% | 2018-07-16 | 2018-07-17 | 2d | as late as possible | 夏文超 | 26h | 26h | 1,300 | 500 | 1,300 |
| 95 | 1.4.1.4.2 | 学生端-竞赛列表-查看详情 | 5d | 2018-08-03 A | 2018-08-09 A | 94 | 100% | 2018-07-18 | 2018-07-19 | 2d | start no earlier than 2018-07-16 | 夏文超 | 36h | 36h | 1,800 | 600 | 1,800 |
| 96 | 1.4.1.4.3 | 学生端-竞赛列表-我要报名 | 4d | 2018-08-10 A | 2018-08-15 A | 95 | 100% | 2018-07-23 | 2018-07-25 | 3d | finish no earlier than 2018-07-16 | 夏文超 | 28h | 28h | 1,400 | 1,000 | 1,400 |
| 97 | 1.4.1.4.4 | 学生端-我的竞赛 | 2d | 2018-08-16 A | 2018-08-17 A | 96 | 100% | 2018-07-26 | 2018-07-26 | 1d | as late as possible | 夏文超 | 10h | 10h | 500 | 100 | 500 |
| 98 | 1.4.1.4.5 | 学生端-竞赛排名 | 3d | 2018-08-20 A | 2018-08-22 A | 97 | 100% | 2018-07-27 | 2018-07-30 | 2d |  | 夏文超 | 24h | 24h | 1,200 | 800 | 1,200 |
| 99 | 1.4.1.4.6 | 学生端-平台对接需求 | 2d | 2018-08-23 A | 2018-08-24 A | 98 | 100% | 2018-07-31 | 2018-08-02 | 3d |  | 夏文超 | 16h | 16h | 800 | 1,150 | 800 |
| 100 | 1.4.1.4.7 | 教师端-竞赛列表页 | 2d | 2018-07-30 A | 2018-07-31 A |  | 100% | 2018-07-16 | 2018-07-17 | 2d | start no earlier than 2018-07-16 | 李燃 | 16h | 16h | 800 | 800 | 800 |
| 101 | 1.4.1.4.8 | 教师端-竞赛列表-查看详情 | 3d | 2018-08-01 A | 2018-08-03 A | 100 | 100% | 2018-07-18 | 2018-07-20 | 3d |  | 李燃 | 23.2h | 23.2h | 1,160 | 1,160 | 1,160 |
| 102 | 1.4.1.4.9 | 教师端-我的竞赛-列表页 | 5d | 2018-08-06 A | 2018-08-10 A | 101 | 100% | 2018-07-23 | 2018-07-24 | 2d |  | 李燃 | 40h | 40h | 2,000 | 800 | 2,000 |
| 103 | 1.4.1.4.10 | 教师端-我的竞赛-创建竞赛 | 5d | 2018-08-13 A | 2018-08-17 A | 102 | 100% | 2018-07-25 | 2018-07-26 | 2d |  | 李燃 | 40h | 40h | 2,000 | 800 | 2,000 |
| 104 | 1.4.1.4.11 | 教师端-竞赛排名 | 2d | 2018-08-20 A | 2018-08-21 A | 103 | 100% | 2018-07-27 | 2018-07-30 | 2d |  | 李燃 | 12h | 12h | 600 | 600 | 600 |
| 105 | 1.4.1.4.12 | 教师端-平台对接需求 | 4d | 2018-08-22 A | 2018-08-27 A | 104 | 100% | 2018-07-31 | 2018-08-02 | 3d |  | 李燃 | 20h | 20h | 1,000 | 600 | 1,000 |

| ID | WBS | Task | Type | Duration | Start | Finish | Predecessors | Complete | Baseline start | Baseline finish | Baseline duration | Constraint | Resources | Work | Actual work | Cost | Baseline cost | Actual cost |
| --- | --- | --- | --- | --- | --- | --- | --- | --- | --- | --- | --- | --- | --- | --- | --- | --- | --- | --- |
| 106 | 1.4.1.5 | **财会易系统** |  | 22d | 2018-07-30 A | 2018-08-28 A |  | 100% | 2018-07-16 | 2018-08-10 | 20d |  |  | 261h | 261h | 13,050 | 12,650 | 13,050 |
| 107 | 1.4.1.5.1 | 以渔有方学生端-进入练习--项目练习 |  | 3d | 2018-07-30 A | 2018-08-01 A |  | 100% | 2018-07-16 | 2018-07-17 | 2d | start no earlier than 2018-07-16 | 徐欢 | 24h | 24h | 1,200 | 800 | 1,200 |
| 108 | 1.4.1.5.2 | 以渔有方学生端-进入练习--项目练习--题目练习 |  | 4d | 2018-08-02 A | 2018-08-07 A | 107 | 100% | 2018-07-18 | 2018-07-20 | 3d | start no earlier than 2018-07-16 | 徐欢 | 31h | 31h | 1,550 | 1,150 | 1,550 |
| 109 | 1.4.1.5.3 | 以渔有方学生端-进入练习-查看历史成绩 |  | 1d | 2018-08-08 A | 2018-08-08 A | 108 | 100% | 2018-07-23 | 2018-07-25 | 3d | start no earlier than 2018-07-16 | 徐欢 | 8h | 8h | 400 | 1,200 | 400 |
| 110 | 1.4.1.5.4 | 以渔学生端-进入考核 |  | 2d | 2018-08-10 A | 2018-08-13 A | 109 | 100% | 2018-07-26 | 2018-07-27 | 2d | start no earlier than 2018-07-16 | 徐欢 | 15.2h | 15.2h | 760 | 760 | 760 |
| 111 | 1.4.1.5.5 | 教师端-我的应用-进入应用-教学环节 |  | 4d | 2018-08-14 A | 2018-08-17 A | 110 | 100% | 2018-07-30 | 2018-08-02 | 4d | start no earlier than 2018-07-16 | 徐欢 | 16h | 16h | 800 | 800 | 800 |
| 112 | 1.4.1.5.6 | 以渔有方教师端-案例管理 |  | 4d | 2018-08-20 A | 2018-08-23 A | 111 | 100% | 2018-08-03 | 2018-08-07 | 3d | start no earlier than 2018-07-16 | 徐欢 | 22h | 22h | 1,100 | 700 | 1,100 |
| 113 | 1.4.1.5.7 | 以渔有方教师端-案例管理-创建案例1 |  | 3d | 2018-08-24 A | 2018-08-28 A | 112 | 100% | 2018-08-08 | 2018-08-10 | 3d | start no earlier than 2018-07-16 | 徐欢 | 12h | 12h | 600 | 600 | 600 |
| 114 | 1.4.1.5.8 | 以渔有方教师端-案例管理-创建案例2 |  | 1d | 2018-07-30 A | 2018-07-30 A |  | 100% | 2018-07-16 | 2018-07-16 | 1d | start no earlier than 2018-07-16 | 张倩倩 | 8h | 8h | 400 | 400 | 400 |
| 115 | 1.4.1.5.9 | 教师端-案例管理-案例编辑 |  | 2d | 2018-07-31 A | 2018-08-01 A | 114 | 100% | 2018-07-17 | 2018-07-18 | 2d | start no earlier than 2018-07-16 | 张倩倩 | 16h | 16h | 800 | 800 | 800 |
| 116 | 1.4.1.5.10 | 教师端-项目管理 |  | 2d | 2018-08-02 A | 2018-08-03 A | 115 | 100% | 2018-07-19 | 2018-07-20 | 2d | start no earlier than 2018-07-16 | 张倩倩 | 14.2h | 14.2h | 710 | 710 | 710 |
| 117 | 1.4.1.5.11 | 教师端-项目管理-创建项目 |  | 2d | 2018-08-06 A | 2018-08-07 A | 116 | 100% | 2018-07-23 | 2018-07-24 | 2d | start no earlier than 2018-07-16 | 张倩倩 | 14.8h | 14.8h | 740 | 740 | 740 |
| 118 | 1.4.1.5.12 | 教师端-试卷管理 |  | 3d | 2018-08-08 A | 2018-08-10 A | 117 | 100% | 2018-07-25 | 2018-07-27 | 3d | start no earlier than 2018-07-16 | 张倩倩 | 22.6h | 22.6h | 1,130 | 1,130 | 1,130 |
| 119 | 1.4.1.5.13 | 教师端-表单查看 |  | 2d | 2018-08-13 A | 2018-08-14 A | 118 | 100% | 2018-07-30 | 2018-07-31 | 2d | start no earlier than 2018-07-16 | 张倩倩 | 15.2h | 15.2h | 760 | 760 | 760 |
| 120 | 1.4.1.5.14 | 管理员端-案例管理 |  | 2d | 2018-08-15 A | 2018-08-16 A | 119 | 100% | 2018-08-01 | 2018-08-02 | 2d | start no earlier than 2018-07-16 | 张倩倩 | 15h | 15h | 750 | 750 | 750 |
| 121 | 1.4.1.5.15 | 管理员端-项目管理 |  | 2d | 2018-08-17 A | 2018-08-20 A | 120 | 100% | 2018-08-03 | 2018-08-06 | 2d | start no earlier than 2018-07-16 | 张倩倩 | 12h | 12h | 600 | 600 | 600 |
| 122 | 1.4.1.5.16 | 管理员端-试卷管理 |  | 2d | 2018-08-21 A | 2018-08-22 A | 121 | 100% | 2018-08-07 | 2018-08-08 | 2d | start no earlier than 2018-07-16 | 张倩倩 | 8h | 8h | 400 | 400 | 400 |
| 123 | 1.4.1.5.17 | 以渔有方学生端-我的应用-进入应用 |  | 2d | 2018-08-23 A | 2018-08-24 A | 122 | 100% | 2018-08-09 | 2018-08-10 | 2d | start no earlier than 2018-07-16 | 张倩倩 | 7h | 7h | 350 | 350 | 350 |
| 124 | 1.4.1.6 | **系统联调** |  | 5d | 2018-08-06 A | 2018-08-10 A |  | 100% | 2018-08-06 | 2018-08-10 | 5d |  |  | 238h | 238h | 11,900 | 11,900 | 11,900 |
| 125 | 1.4.1.6.1 | 系统联调 | manual | 5d | 2018-08-06 A | 2018-08-10 A |  | 100% | 2018-08-06 | 2018-08-10 | 5d |  | 胡乐; 吕奎; 王博海; 夏文超; 谢晓飞; 徐欢; 张倩倩; 周开杰 | 238h | 238h | 11,900 | 11,900 | 11,900 |
| 126 | 1.4.2 | **测试申请与准出测试** |  | 1d | 2018-08-13 A | 2018-08-13 A |  | 100% | 2018-08-13 | 2018-08-13 | 1d |  |  | 43.2h | 43.2h | 2,160 | 2,160 | 2,160 |
| 127 | 1.4.2.1 | 测试准出 |  | 1d | 2018-08-13 A | 2018-08-13 A |  | 100% | 2018-08-13 | 2018-08-13 | 1d | start no earlier than 2018-01-15 | 李燃 [80%]; 张倩倩 [80%]; 夏丽 [80%]; 徐欢 [80%]; 邓建博 [80%]; 吕奎 [80%]; 王博海 [80%]; 夏文超 [80%]; 谢晓飞 [80%]; 周开杰 [80%] | 43.2h | 43.2h | 2,160 | 2,160 | 2,160 |
| 128 | 1.4.3 | **建立测试版本基线** |  | 1d | 2018-08-13 A | 2018-08-13 A |  | 100% | 2018-08-13 | 2018-08-13 | 1d |  |  | 0.8h | 0.8h | 40 | 40 | 40 |
| 129 | 1.4.3.1 | 建立测试基线 |  | 1d | 2018-08-13 A | 2018-08-13 A |  | 100% | 2018-08-13 | 2018-08-13 | 1d | start no earlier than 2018-08-13 | 李婷 [10%] | 0.8h | 0.8h | 40 | 40 | 40 |

| ID | WBS | Task | Type | Duration | Start | Finish | Complete | Baseline start | Baseline finish | Baseline duration | Constraint | Resources | Work | Actual work | Cost | Baseline cost | Actual cost |
| --- | --- | --- | --- | --- | --- | --- | --- | --- | --- | --- | --- | --- | --- | --- | --- | --- | --- |
| 130 | 1.4.4 | **项目管理与过程监控** |  | 17d | 2018-08-02 A | 2018-08-24 A | 100% | 2018-07-26 | 2018-08-10 | 12d |  |  | 255.8h | 255.8h | 12,790 | 7,690 | 12,790 |
| 131 | 1.4.4.1 | 风险管理及项目周报 |  | 1d | 2018-08-03 A | 2018-08-03 A | 100% | 2018-08-03 | 2018-08-03 | 1d | start no earlier than 2018-08-03 | 邓建博 [20%] | 1.6h | 1.6h | 80 | 80 | 80 |
| 132 | 1.4.4.2 | 需求跟踪矩阵更新 |  | 1d | 2018-08-03 A | 2018-08-03 A | 100% | 2018-08-03 | 2018-08-03 | 1d | start no earlier than 2018-08-03 | 王璐欣 | 8h | 8h | 400 | 80 | 400 |
| 133 | 1.4.4.3 | 进度计划更新及度量分析 |  | 1d | 2018-08-03 A | 2018-08-03 A | 100% | 2018-08-03 | 2018-08-03 | 1d | start no earlier than 2018-08-03 | 邓建博 [20%] | 1.6h | 1.6h | 80 | 80 | 80 |
| 134 | 1.4.4.4 | 项目例会 |  | 1d | 2018-08-02 A | 2018-08-02 A | 100% | 2018-08-02 | 2018-08-02 | 1d | start no later than 2018-05-18 | 周开杰 [10%]; 王博海 [10%]; 黄琪 [10%]; 王璐欣 [10%]; 刘珊珊 [10%]; 邓建博 [10%]; 金灼 [10%]; 张倩倩 [10%]; 夏丽 [10%]; 李燃 [10%]; 罗媛 [10%]; 徐欢 [10%]; 吕奎 [10%]; 操邵平; 房雷; 胡文峰; 李奕霏; 刘燕燕; 唐倩; 夏文超 | 36.8h | 36.8h | 1,840 | 1,840 | 1,840 |
| 135 | 1.4.4.5 | QA审计 |  | 1d | 2018-08-03 A | 2018-08-03 A | 100% | 2018-08-03 | 2018-08-03 | 1d | start no later than 2018-05-18 | 金灼 [10%]; 罗媛 [10%] | 0.8h | 0.8h | 40 | 40 | 40 |
| 136 | 1.4.4.6 | 风险管理及项目周报 |  | 1d | 2018-08-10 A | 2018-08-10 A | 100% | 2018-08-10 | 2018-08-10 | 1d | start no earlier than 2018-08-10 | 邓建博 [20%] | 1.6h | 1.6h | 80 | 80 | 80 |
| 137 | 1.4.4.7 | 需求跟踪矩阵更新 |  | 1d | 2018-08-10 A | 2018-08-10 A | 100% | 2018-08-10 | 2018-08-10 | 1d | start no earlier than 2018-08-10 | 王璐欣 | 8h | 8h | 400 | 80 | 400 |
| 138 | 1.4.4.8 | 进度计划更新及度量分析 |  | 1d | 2018-08-10 A | 2018-08-10 A | 100% | 2018-08-10 | 2018-08-10 | 1d | start no earlier than 2018-08-10 | 邓建博 [20%] | 1.6h | 1.6h | 80 | 80 | 80 |
| 139 | 1.4.4.9 | 项目例会 |  | 2d | 2018-08-09 A | 2018-08-10 A | 100% | 2018-08-01 | 2018-08-09 | 2d | start no earlier than 2018-08-09 | 周开杰 [10%]; 王博海 [10%]; 黄琪 [10%]; 操邵平; 王璐欣 [10%]; 刘珊珊 [10%]; 邓建博 [10%]; 金灼 [10%]; 张倩倩 [10%]; 夏丽 [10%]; 李燃 [10%]; 罗媛 [10%]; 徐欢 [10%]; 吕奎 [10%]; 房雷; 胡文峰; 李奕霏; 刘燕燕; 唐倩; 夏文超 | 36.6h | 36.6h | 1,830 | 2,450 | 1,830 |
| 140 | 1.4.4.10 | QA审计 |  | 1d | 2018-08-10 A | 2018-08-10 A | 100% | 2018-08-10 | 2018-08-10 | 1d | start no earlier than 2018-08-10 | 金灼 [10%]; 罗媛 [10%] | 0.8h | 0.8h | 40 | 40 | 40 |
| 141 | 1.4.4.11 | 风险管理及项目周报 | manual | 1d | 2018-08-17 A | 2018-08-17 A | 100% |  |  |  |  | 邓建博 [20%] | 1.6h | 1.6h | 80 |  | 80 |
| 142 | 1.4.4.12 | 需求跟踪矩阵更新 | manual | 1d | 2018-08-17 A | 2018-08-17 A | 100% |  |  |  |  | 王璐欣 | 8h | 8h | 400 |  | 400 |
| 143 | 1.4.4.13 | 进度计划更新及度量分析 | manual | 1d | 2018-08-17 A | 2018-08-17 A | 100% |  |  |  |  | 邓建博 [20%] | 1.6h | 1.6h | 80 |  | 80 |
| 144 | 1.4.4.14 | 项目例会 | manual | 1d | 2018-08-17 A | 2018-08-17 A | 100% |  |  |  |  | 周开杰 [10%]; 王博海 [10%]; 黄琪 [10%]; 王璐欣 [10%]; 刘珊珊 [10%]; 邓建博 [10%]; 金灼 [10%]; 张倩倩 [10%]; 夏丽 [10%]; 李燃 [10%]; 罗媛 [10%]; 徐欢 [10%]; 吕奎 [10%]; 操邵平; 房雷; 胡文峰; 李奕霏; 刘燕燕; 唐倩; 夏文超 | 66.4h | 66.4h | 3,320 |  | 3,320 |
| 145 | 1.4.4.15 | QA审计 | manual | 1d | 2018-08-17 A | 2018-08-17 A | 100% |  |  |  |  | 金灼 [10%]; 罗媛 [10%] | 1.6h | 1.6h | 80 |  | 80 |
| 146 | 1.4.4.16 | 风险管理及项目周报 | manual | 1d | 2018-08-24 A | 2018-08-24 A | 100% |  |  |  |  | 邓建博 [20%] | 1.6h | 1.6h | 80 |  | 80 |
| 147 | 1.4.4.17 | 需求跟踪矩阵更新 | manual | 1d | 2018-08-24 A | 2018-08-24 A | 100% |  |  |  |  | 王璐欣 | 8h | 8h | 400 |  | 400 |
| 148 | 1.4.4.18 | 进度计划更新及度量分析 | manual | 1d | 2018-08-24 A | 2018-08-24 A | 100% |  |  |  |  | 邓建博 [20%] | 1.6h | 1.6h | 80 |  | 80 |
| 149 | 1.4.4.19 | 项目例会 | manual | 1d | 2018-08-24 A | 2018-08-24 A | 100% |  |  |  |  | 周开杰 [10%]; 王博海 [10%]; 黄琪 [10%]; 王璐欣 [10%]; 刘珊珊 [10%]; 邓建博 [10%]; 金灼 [10%]; 张倩倩 [10%]; 夏丽 [10%]; 李燃 [10%]; 罗媛 [10%]; 徐欢 [10%]; 吕奎 [10%]; 操邵平; 房雷; 胡文峰; 李奕霏; 刘燕燕; 唐倩; 夏文超 | 66.4h | 66.4h | 3,320 |  | 3,320 |
| 150 | 1.4.4.20 | QA审计 | manual | 1d | 2018-08-24 A | 2018-08-24 A | 100% |  |  |  |  | 金灼 [10%]; 罗媛 [10%] | 1.6h | 1.6h | 80 |  | 80 |
| 151 | 1.5 | **测试阶段** |  | 52d | 2018-07-30 A | 2018-10-17 A | 100% | 2018-07-30 | 2018-09-13 | 34d |  |  | 4091.56h | 4091.56h | 204,578.05 | 127,848.05 | 204,578.05 |
| 152 | 1.5.1 | 测试环境搭建 |  | 1d | 2018-08-28 A | 2018-08-28 A | 100% | 2018-08-10 | 2018-08-10 | 1d | start no earlier than 2018-08-10 | 周开杰 [30%]; 胡乐; 王博海; 夏丽; 徐欢 | 16.4h | 16.4h | 820 | 820 | 820 |
| 153 | 1.5.2 | **功能测试** |  | 30d | 2018-08-29 A | 2018-10-17 A | 100% | 2018-08-14 | 2018-09-13 | 23d |  |  | 259.16h | 259.16h | 12,958.05 | 11,098.05 | 12,958.05 |
| 154 | 1.5.2.1 | 第一轮测试(含准入) |  | 8d | 2018-08-29 A | 2018-09-07 A | 100% | 2018-08-14 | 2018-08-23 | 8d | start no earlier than 2018-08-14 | 操邵平; 黄琪; 房雷; 刘燕燕 [70%] | 95.76h | 95.76h | 4,788.02 | 4,888.02 | 4,788.02 |
| 155 | 1.5.2.2 | 第二轮测试(含准入) |  | 8d | 2018-09-11 A | 2018-09-20 A | 100% | 2018-08-27 | 2018-08-31 | 5d | start no earlier than 2018-08-27 | 操邵平; 黄琪; 房雷; 刘燕燕 [70%] | 88.4h | 88.4h | 4,420.02 | 3,580.02 | 4,420.02 |
| 156 | 1.5.2.3 | 第三轮测试(含准入) |  | 6d | 2018-09-25 A | 2018-10-09 A | 100% | 2018-09-04 | 2018-09-07 | 4d | finish no earlier than 2018-10-09 | 操邵平; 黄琪; 房雷; 刘燕燕 [70%] | 39.2h | 39.2h | 1,960 | 1,400 | 1,960 |
| 157 | 1.5.2.4 | 回归测试 |  | 5d | 2018-10-11 A | 2018-10-17 A | 100% | 2018-09-11 | 2018-09-13 | 3d | start no earlier than 2018-09-11 | 操邵平; 黄琪; 房雷; 刘燕燕 [70%] | 35.8h | 35.8h | 1,790.01 | 1,230.01 | 1,790.01 |

| ID | WBS | Task | Type | Duration | Start | Finish | Complete | Baseline start | Baseline finish | Baseline duration | Constraint | Resources | Work | Actual work | Cost | Baseline cost | Actual cost |
| --- | --- | --- | --- | --- | --- | --- | --- | --- | --- | --- | --- | --- | --- | --- | --- | --- | --- |
| 158 | 1.5.3 | **缺陷处理** |  | 29d | 2018-08-29 A | 2018-10-16 A | 100% | 2018-08-14 | 2018-09-13 | 23d |  |  | 1793h | 1793h | 89,650 | 68,300 | 89,650 |
| 159 | 1.5.3.1 | 第一轮缺陷处理 |  | 9d | 2018-08-29 A | 2018-09-10 A | 100% | 2018-08-14 | 2018-08-24 | 9d | start no earlier than 2018-08-14 | 李燃; 周开杰; 张倩倩; 夏丽; 王博海; 徐欢; 吕奎; 夏文超; 谢晓飞 | 534.6h | 534.6h | 26,730 | 26,980 | 26,730 |
| 160 | 1.5.3.2 | 第二轮缺陷处理 |  | 9d | 2018-09-11 A | 2018-09-21 A | 100% | 2018-08-27 | 2018-09-03 | 6d | start no earlier than 2018-08-27 | 李燃; 周开杰; 张倩倩; 夏丽; 王博海; 徐欢; 吕奎; 夏文超; 谢晓飞 | 569.2h | 569.2h | 28,460 | 17,660 | 28,460 |
| 161 | 1.5.3.3 | 第三轮缺陷处理 |  | 8d | 2018-09-25 A | 2018-10-11 A | 100% | 2018-09-04 | 2018-09-10 | 5d | start no earlier than 2018-09-04 | 李燃; 周开杰; 张倩倩; 夏丽; 王博海; 徐欢; 吕奎; 夏文超; 谢晓飞 | 512.2h | 512.2h | 25,610 | 14,810 | 25,610 |
| 162 | 1.5.3.4 | 回归测试问题处理 | manual | 3d | 2018-10-12 A | 2018-10-16 A | 100% | 2018-09-11 | 2018-09-13 | 3d |  | 李燃; 周开杰; 张倩倩; 夏丽; 王博海; 徐欢; 吕奎; 夏文超; 谢晓飞 | 177h | 177h | 8,850 | 8,850 | 8,850 |
| 163 | 1.5.4 | **性能测试** |  | 49d | 2018-07-30 A | 2018-10-12 A | 100% | 2018-07-30 | 2018-09-13 | 34d |  |  | 2023h | 2023h | 101,150 | 45,390 | 101,150 |
| 164 | 1.5.4.1 | **保险综合** |  | 34d | 2018-08-08 A | 2018-09-25 A | 100% | 2018-07-30 | 2018-09-13 | 34d |  |  | 284.2h | 284.2h | 14,210 | 14,210 | 14,210 |
| 165 | 1.5.4.1.1 | 性能测试 |  | 34d | 2018-08-08 A | 2018-09-25 A | 100% | 2018-07-30 | 2018-09-13 | 34d | start no earlier than 2018-07-30 | 彭华 [30%]; 唐倩 [30%]; 刘燕燕 [30%] | 148.2h | 148.2h | 7,410 | 7,410 | 7,410 |
| 166 | 1.5.4.1.2 | 系统调优 |  | 34d | 2018-08-08 A | 2018-09-25 A | 100% | 2018-07-30 | 2018-09-13 | 34d | start no earlier than 2018-07-30 | 胡乐 [50%] | 136h | 136h | 6,800 | 6,800 | 6,800 |
| 167 | 1.5.4.2 | **柜面系统** |  | 41d | 2018-07-30 A | 2018-09-25 A | 100% | 2018-07-30 | 2018-09-13 | 34d |  |  | 405.2h | 405.2h | 20,260 | 20,260 | 20,260 |
| 168 | 1.5.4.2.1 | 性能测试 | manual | 34d | 2018-08-08 A | 2018-09-25 A | 100% | 2018-07-30 | 2018-09-13 | 34d |  | 刘燕燕 [30%]; 彭华 [30%]; 唐倩 [30%] | 148.2h | 148.2h | 7,410 | 7,410 | 7,410 |
| 169 | 1.5.4.2.2 | 系统调优 | manual | 34d | 2018-07-30 A | 2018-09-13 A | 100% | 2018-07-30 | 2018-09-13 | 34d |  | 徐欢 [50%]; 李燃 [50%] | 257h | 257h | 12,850 | 12,850 | 12,850 |
| 170 | 1.5.4.3 | **平台** |  | 34d | 2018-08-08 A | 2018-09-25 A | 100% | 2018-08-27 | 2018-09-13 | 14d |  |  | 218.8h | 218.8h | 10,940 | 2,940 | 10,940 |
| 171 | 1.5.4.3.1 | 性能测试 |  | 34d | 2018-08-08 A | 2018-09-25 A | 100% | 2018-08-27 | 2018-09-13 | 14d | finish no earlier than 2018-09-25 | 彭华 [30%]; 唐倩 [30%]; 刘燕燕 [30%] | 191.6h | 191.6h | 9,580 | 2,380 | 9,580 |
| 172 | 1.5.4.3.2 | 系统调优 |  | 34d | 2018-08-08 A | 2018-09-25 A | 100% | 2018-08-27 | 2018-09-13 | 14d | finish no earlier than 2018-09-25 | 胡文峰 [10%] | 27.2h | 27.2h | 1,360 | 560 | 1,360 |
| 173 | 1.5.4.4 | **题库和考试系统** |  | 34d | 2018-08-08 A | 2018-09-25 A | 100% | 2018-08-27 | 2018-09-13 | 14d |  |  | 213.2h | 213.2h | 10,660 | 2,660 | 10,660 |
| 174 | 1.5.4.4.1 | 性能测试 |  | 34d | 2018-08-08 A | 2018-09-25 A | 100% | 2018-08-27 | 2018-09-13 | 14d | finish no earlier than 2018-09-25 | 彭华 [30%]; 唐倩 [30%]; 刘燕燕 [30%] | 186h | 186h | 9,300 | 2,100 | 9,300 |
| 175 | 1.5.4.4.2 | 系统调优 |  | 34d | 2018-08-08 A | 2018-09-25 A | 100% | 2018-08-27 | 2018-09-13 | 14d | finish no earlier than 2018-09-25 | 夏丽 [10%] | 27.2h | 27.2h | 1,360 | 560 | 1,360 |
| 176 | 1.5.4.5 | **大赛系统** |  | 34d | 2018-08-08 A | 2018-09-25 A | 100% | 2018-08-27 | 2018-09-13 | 14d |  |  | 213.2h | 213.2h | 10,660 | 2,660 | 10,660 |
| 177 | 1.5.4.5.1 | 性能测试 |  | 34d | 2018-08-08 A | 2018-09-25 A | 100% | 2018-08-27 | 2018-09-13 | 14d | finish no earlier than 2018-09-25 | 彭华 [30%]; 唐倩 [30%]; 刘燕燕 [30%] | 186h | 186h | 9,300 | 2,100 | 9,300 |
| 178 | 1.5.4.5.2 | 系统调优 |  | 34d | 2018-08-08 A | 2018-09-25 A | 100% | 2018-08-27 | 2018-09-13 | 14d | finish no earlier than 2018-09-25 | 李燃 [10%] | 27.2h | 27.2h | 1,360 | 560 | 1,360 |
| 179 | 1.5.4.6 | **财会易系统** |  | 34d | 2018-08-08 A | 2018-09-25 A | 100% | 2018-08-27 | 2018-09-13 | 14d |  |  | 213.2h | 213.2h | 10,660 | 2,660 | 10,660 |
| 180 | 1.5.4.6.1 | 性能测试 |  | 34d | 2018-08-08 A | 2018-09-25 A | 100% | 2018-08-27 | 2018-09-13 | 14d | finish no earlier than 2018-09-25 | 彭华 [30%]; 唐倩 [30%]; 刘燕燕 [30%] | 186h | 186h | 9,300 | 2,100 | 9,300 |
| 181 | 1.5.4.6.2 | 系统调优 |  | 34d | 2018-08-08 A | 2018-09-25 A | 100% | 2018-08-27 | 2018-09-13 | 14d | finish no earlier than 2018-09-25 | 徐欢 [10%] | 27.2h | 27.2h | 1,360 | 560 | 1,360 |

| ID | WBS | Task | Type | Duration | Start | Finish | Complete | Resources | Work | Actual work | Cost | Actual cost |
| --- | --- | --- | --- | --- | --- | --- | --- | --- | --- | --- | --- | --- |
| 182 | 1.5.4.7 | **项目管理与过程监控** |  | 25d | 2018-08-31 A | 2018-10-12 A | 100% |  | 475.2h | 475.2h | 23,760 | 23,760 |
| 183 | 1.5.4.7.1 | 风险管理及项目周报 | manual | 1d | 2018-08-31 A | 2018-08-31 A | 100% | 邓建博 [20%] | 1.6h | 1.6h | 80 | 80 |
| 184 | 1.5.4.7.2 | 需求跟踪矩阵更新 | manual | 1d | 2018-08-31 A | 2018-08-31 A | 100% | 王璐欣 | 8h | 8h | 400 | 400 |
| 185 | 1.5.4.7.3 | 进度计划更新及度量分析 | manual | 1d | 2018-08-31 A | 2018-08-31 A | 100% | 邓建博 [20%] | 1.6h | 1.6h | 80 | 80 |
| 186 | 1.5.4.7.4 | 项目例会 | manual | 1d | 2018-08-31 A | 2018-08-31 A | 100% | 周开杰 [10%]; 王博海 [10%]; 黄琪 [10%]; 王璐欣 [10%]; 刘珊珊 [10%]; 邓建博 [10%]; 金灼 [10%]; 张倩倩 [10%]; 夏丽 [10%]; 李燃 [10%]; 罗媛 [10%]; 徐欢 [10%]; 吕奎 [10%]; 操邵平; 房雷; 胡文峰; 李奕霏; 刘燕燕; 唐倩; 夏文超 | 66.4h | 66.4h | 3,320 | 3,320 |
| 187 | 1.5.4.7.5 | QA审计 | manual | 1d | 2018-08-31 A | 2018-08-31 A | 100% | 金灼 [10%]; 罗媛 [10%] | 1.6h | 1.6h | 80 | 80 |
| 188 | 1.5.4.7.6 | 风险管理及项目周报 | manual | 1d | 2018-09-07 A | 2018-09-07 A | 100% | 邓建博 [20%] | 1.6h | 1.6h | 80 | 80 |
| 189 | 1.5.4.7.7 | 需求跟踪矩阵更新 | manual | 1d | 2018-09-07 A | 2018-09-07 A | 100% | 王璐欣 | 8h | 8h | 400 | 400 |
| 190 | 1.5.4.7.8 | 进度计划更新及度量分析 | manual | 1d | 2018-09-07 A | 2018-09-07 A | 100% | 邓建博 [20%] | 1.6h | 1.6h | 80 | 80 |
| 191 | 1.5.4.7.9 | 项目例会 | manual | 1d | 2018-09-07 A | 2018-09-07 A | 100% | 周开杰 [10%]; 王博海 [10%]; 黄琪 [10%]; 王璐欣 [10%]; 刘珊珊 [10%]; 邓建博 [10%]; 金灼 [10%]; 张倩倩 [10%]; 夏丽 [10%]; 李燃 [10%]; 罗媛 [10%]; 徐欢 [10%]; 吕奎 [10%]; 操邵平; 房雷; 胡文峰; 李奕霏; 刘燕燕; 唐倩; 夏文超 | 66.4h | 66.4h | 3,320 | 3,320 |
| 192 | 1.5.4.7.10 | QA审计 | manual | 1d | 2018-09-07 A | 2018-09-07 A | 100% | 金灼 [10%]; 罗媛 [10%] | 1.6h | 1.6h | 80 | 80 |
| 193 | 1.5.4.7.11 | 风险管理及项目周报 | manual | 1d | 2018-09-14 A | 2018-09-14 A | 100% | 邓建博 [20%] | 1.6h | 1.6h | 80 | 80 |
| 194 | 1.5.4.7.12 | 需求跟踪矩阵更新 | manual | 1d | 2018-09-14 A | 2018-09-14 A | 100% | 王璐欣 | 8h | 8h | 400 | 400 |
| 195 | 1.5.4.7.13 | 进度计划更新及度量分析 | manual | 1d | 2018-09-14 A | 2018-09-14 A | 100% | 邓建博 [20%] | 1.6h | 1.6h | 80 | 80 |
| 196 | 1.5.4.7.14 | 项目例会 | manual | 1d | 2018-09-14 A | 2018-09-14 A | 100% | 周开杰 [10%]; 王博海 [10%]; 黄琪 [10%]; 王璐欣 [10%]; 刘珊珊 [10%]; 邓建博 [10%]; 金灼 [10%]; 张倩倩 [10%]; 夏丽 [10%]; 李燃 [10%]; 罗媛 [10%]; 徐欢 [10%]; 吕奎 [10%]; 操邵平; 房雷; 胡文峰; 李奕霏; 刘燕燕; 唐倩; 夏文超 | 66.4h | 66.4h | 3,320 | 3,320 |
| 197 | 1.5.4.7.15 | QA审计 | manual | 1d | 2018-09-14 A | 2018-09-14 A | 100% | 金灼 [10%]; 罗媛 [10%] | 1.6h | 1.6h | 80 | 80 |
| 198 | 1.5.4.7.16 | 风险管理及项目周报 | manual | 1d | 2018-09-21 A | 2018-09-21 A | 100% | 邓建博 [20%] | 1.6h | 1.6h | 80 | 80 |
| 199 | 1.5.4.7.17 | 需求跟踪矩阵更新 | manual | 1d | 2018-09-21 A | 2018-09-21 A | 100% | 王璐欣 | 8h | 8h | 400 | 400 |
| 200 | 1.5.4.7.18 | 进度计划更新及度量分析 | manual | 1d | 2018-09-21 A | 2018-09-21 A | 100% | 邓建博 [20%] | 1.6h | 1.6h | 80 | 80 |
| 201 | 1.5.4.7.19 | 项目例会 | manual | 1d | 2018-09-21 A | 2018-09-21 A | 100% | 周开杰 [10%]; 王博海 [10%]; 黄琪 [10%]; 王璐欣 [10%]; 刘珊珊 [10%]; 邓建博 [10%]; 金灼 [10%]; 张倩倩 [10%]; 夏丽 [10%]; 李燃 [10%]; 罗媛 [10%]; 徐欢 [10%]; 吕奎 [10%]; 操邵平; 房雷; 胡文峰; 李奕霏; 刘燕燕; 唐倩; 夏文超 | 66.4h | 66.4h | 3,320 | 3,320 |
| 202 | 1.5.4.7.20 | QA审计 | manual | 1d | 2018-09-21 A | 2018-09-21 A | 100% | 金灼 [10%]; 罗媛 [10%] | 1.6h | 1.6h | 80 | 80 |
| 203 | 1.5.4.7.21 | 风险管理及项目周报 | manual | 1d | 2018-09-28 A | 2018-09-28 A | 100% | 邓建博 [20%] | 1.6h | 1.6h | 80 | 80 |
| 204 | 1.5.4.7.22 | 需求跟踪矩阵更新 | manual | 1d | 2018-09-28 A | 2018-09-28 A | 100% | 王璐欣 | 8h | 8h | 400 | 400 |
| 205 | 1.5.4.7.23 | 进度计划更新及度量分析 | manual | 1d | 2018-09-28 A | 2018-09-28 A | 100% | 邓建博 [20%] | 1.6h | 1.6h | 80 | 80 |
| 206 | 1.5.4.7.24 | 项目例会 | manual | 1d | 2018-09-30 A | 2018-09-30 A | 100% | 周开杰 [10%]; 王博海 [10%]; 黄琪 [10%]; 王璐欣 [10%]; 刘珊珊 [10%]; 邓建博 [10%]; 金灼 [10%]; 张倩倩 [10%]; 夏丽 [10%]; 李燃 [10%]; 罗媛 [10%]; 徐欢 [10%]; 吕奎 [10%]; 操邵平; 房雷; 胡文峰; 李奕霏; 刘燕燕; 唐倩; 夏文超 | 66.4h | 66.4h | 3,320 | 3,320 |
| 207 | 1.5.4.7.25 | QA审计 | manual | 1d | 2018-09-28 A | 2018-09-28 A | 100% | 金灼 [10%]; 罗媛 [10%] | 1.6h | 1.6h | 80 | 80 |
| 208 | 1.5.4.7.26 | 风险管理及项目周报 | manual | 1d | 2018-10-12 A | 2018-10-12 A | 100% | 邓建博 [20%] | 1.6h | 1.6h | 80 | 80 |
| 209 | 1.5.4.7.27 | 需求跟踪矩阵更新 | manual | 1d | 2018-10-12 A | 2018-10-12 A | 100% | 王璐欣 | 8h | 8h | 400 | 400 |
| 210 | 1.5.4.7.28 | 进度计划更新及度量分析 | manual | 1d | 2018-10-12 A | 2018-10-12 A | 100% | 邓建博 [20%] | 1.6h | 1.6h | 80 | 80 |
| 211 | 1.5.4.7.29 | 项目例会 | manual | 1d | 2018-10-12 A | 2018-10-12 A | 100% | 周开杰 [10%]; 王博海 [10%]; 黄琪 [10%]; 王璐欣 [10%]; 刘珊珊 [10%]; 邓建博 [10%]; 金灼 [10%]; 张倩倩 [10%]; 夏丽 [10%]; 李燃 [10%]; 罗媛 [10%]; 徐欢 [10%]; 吕奎 [10%]; 操邵平; 房雷; 胡文峰; 李奕霏; 刘燕燕; 唐倩; 夏文超 | 66.4h | 66.4h | 3,320 | 3,320 |
| 212 | 1.5.4.7.30 | QA审计 | manual | 1d | 2018-10-12 A | 2018-10-12 A | 100% | 金灼 [10%]; 罗媛 [10%] | 1.6h | 1.6h | 80 | 80 |

| ID | WBS | Task | Duration | Start | Finish | Complete | Baseline start | Baseline finish | Baseline duration | Constraint | Resources | Work | Actual work | Cost | Baseline cost | Actual cost |
| --- | --- | --- | --- | --- | --- | --- | --- | --- | --- | --- | --- | --- | --- | --- | --- | --- |
| 213 | 1.6 | **验收阶段** | 3d | 2018-10-18 A | 2018-10-22 A | 100% | 2018-09-13 | 2018-09-14 | 2d |  |  | 27.2h | 27.2h | 1,360 | 980 | 1,360 |
| 214 | 1.6.1 | **测试结论** | 2d | 2018-10-18 A | 2018-10-19 A | 100% | 2018-09-13 | 2018-09-13 | 1d |  |  | 0.8h | 0.8h | 40 | 20 | 40 |
| 215 | 1.6.1.1 | 测试结论输出 | 2d | 2018-10-18 A | 2018-10-19 A | 100% | 2018-09-13 | 2018-09-13 | 1d | finish no earlier than 2018-10-19 | 黄琪 [5%] | 0.8h | 0.8h | 40 | 20 | 40 |
| 216 | 1.6.2 | **组织产品验收** | 1d | 2018-10-22 A | 2018-10-22 A | 100% | 2018-09-14 | 2018-09-14 | 1d |  |  | 7.2h | 7.2h | 360 | 360 | 360 |
| 217 | 1.6.2.1 | 产品验收测试 | 1d | 2018-10-22 A | 2018-10-22 A | 100% | 2018-09-14 | 2018-09-14 | 1d | start no earlier than 2018-09-14 | 王璐欣 | 7.2h | 7.2h | 360 | 360 | 360 |
| 218 | 1.6.3 | **项目管理与过程监控** | 2d | 2018-10-19 A | 2018-10-22 A | 100% | 2018-09-13 | 2018-09-14 | 2d |  |  | 19.2h | 19.2h | 960 | 600 | 960 |
| 219 | 1.6.3.1 | 风险管理及项目周报 | 1d | 2018-10-19 A | 2018-10-19 A | 100% | 2018-09-14 | 2018-09-14 | 1d | start no earlier than 2018-09-14 | 邓建博 [10%] | 0.8h | 0.8h | 40 | 40 | 40 |
| 220 | 1.6.3.2 | 需求跟踪矩阵更新 | 1d | 2018-10-19 A | 2018-10-19 A | 100% | 2018-09-14 | 2018-09-14 | 1d | start no earlier than 2018-09-14 | 王璐欣 | 8h | 8h | 400 | 40 | 400 |
| 221 | 1.6.3.3 | 进度计划更新及度量分析 | 1d | 2018-10-19 A | 2018-10-19 A | 100% | 2018-09-14 | 2018-09-14 | 1d | start no earlier than 2018-09-14 | 邓建博 [10%] | 0.8h | 0.8h | 40 | 40 | 40 |
| 222 | 1.6.3.4 | 项目例会 | 1d | 2018-10-19 A | 2018-10-19 A | 100% | 2018-09-14 | 2018-09-14 | 1d | start no earlier than 2018-09-14 | 金灼 [10%]; 周开杰 [10%]; 王博海 [10%]; 黄琪 [10%]; 王璐欣 [10%]; 刘珊珊 [10%]; 邓建博 [10%]; 张倩倩 [10%]; 夏丽 [10%]; 李燃 [10%]; 罗媛 [10%]; 徐欢 [10%]; 吕奎 [10%] | 8h | 8h | 400 | 400 | 400 |
| 223 | 1.6.3.5 | 配置基线创建 | 1d | 2018-10-22 A | 2018-10-22 A | 100% | 2018-09-13 | 2018-09-13 | 1d | start no earlier than 2018-09-13 | 李婷 [10%] | 0.8h | 0.8h | 40 | 40 | 40 |
| 224 | 1.6.3.6 | QA审计 | 1d | 2018-10-19 A | 2018-10-19 A | 100% | 2018-09-14 | 2018-09-14 | 1d | start no earlier than 2018-09-14 | 金灼 [10%]; 罗媛 [10%] | 0.8h | 0.8h | 40 | 40 | 40 |
