Schedule from MS Project, 2018-06-20 to 2018-07-09, status date 2019-01-25, scheduled back from the finish, costs in ¥, A marks actual dates.

## Calendars

- 标准: Mon-Fri 08:00-12:00, 13:00-17:00; Sat-Sun off.

## Resources

| Resource | Rate |
| --- | --- |
| 张倩倩 | 50 |
| 王璐欣 | 50 |
| 周开杰 | 50 |
| 金灼 | 50 |
| 李婷 | 50 |
| 王博海 | 50 |
| 董俊豪 | 50 |
| 刘珊珊 | 50 |
| 黄琪 | 50 |
| 房雷 | 50 |
| 夏丽 | 50 |
| 邓建博 | 50 |
| 徐玲 | 50 |
| 唐倩 | 50 |
| 李燃 | 50 |
| 罗媛 | 50 |
| 徐欢 | 50 |
| 吕奎 | 50 |
| 操绍平 | 50 |
| 夏文超 | 50 |

## Schedule

| ID | WBS | Task | Type | Duration | Start | Finish | Complete | Baseline start | Baseline finish | Baseline duration | Constraint | Resources | Work | Actual work | Cost | Baseline cost | Actual cost |
| --- | --- | --- | --- | --- | --- | --- | --- | --- | --- | --- | --- | --- | --- | --- | --- | --- | --- |
| 1 | 1 | **柔性化智能实验教学管理平台R1.1迭代二** |  | 14d | 2018-06-20 A | 2018-07-09 A | 100% | 2018-05-08 | 2018-05-31 | 18d | as late as possible |  | 647.22h | 647.22h | 32,361.05 | 30,516.09 | 32,361.05 |
| 2 | 1.1 | 目标预测 | manual | 1d | 2018-06-20 A | 2018-06-20 A | 100% |  |  |  | as late as possible | 邓建博 | 8h | 8h | 400 |  | 400 |
| 3 | 1.2 | **需求阶段** |  | 4d | 2018-06-20 A | 2018-06-25 A | 100% | 2018-05-08 | 2018-05-09 | 2d | as late as possible |  | 34.8h | 34.8h | 1,740 | 760 | 1,740 |
| 4 | 1.2.1 | 编写《客户需求列表》 |  | 1d | 2018-06-20 A | 2018-06-20 A | 100% | 2018-05-08 | 2018-05-08 | 1d | start no later than 2018-06-22 | 王璐欣 [50%]; 刘珊珊 [50%] | 8h | 8h | 400 | 400 | 400 |
| 5 | 1.2.2 | 需求评审 | manual | 1d | 2018-06-20 A | 2018-06-20 A | 100% |  |  |  | as late as possible | 周开杰 [10%]; 刘珊珊 [10%]; 王璐欣 [10%]; 邓建博 [10%]; 房雷 [10%]; 王博海 [10%]; 黄琪 [10%]; 金灼 [10%]; 张倩倩 [10%]; 夏丽 [10%]; 李燃 [10%]; 罗媛 [10%]; 徐欢 [10%]; 吕奎 [10%] | 11.2h | 11.2h | 560 |  | 560 |
| 6 | 1.2.3 | 项目预估算 |  | 1d | 2018-06-21 A | 2018-06-21 A | 100% | 2018-05-10 | 2018-05-10 | 1d | start no later than 2018-06-22 | 邓建博 [50%] | 4h | 4h | 200 | 200 | 200 |
| 7 | 1.2.4 | 确定性估算 |  | 1d | 2018-06-22 A | 2018-06-22 A | 100% | 2018-05-11 | 2018-05-11 | 1d | start no later than 2018-06-22 | 邓建博 [20%] | 1.6h | 1.6h | 80 | 80 | 80 |
| 8 | 1.2.5 | 编制《日程表》 |  | 1d | 2018-06-22 A | 2018-06-22 A | 100% | 2018-05-14 | 2018-05-14 | 1d | start no later than 2018-06-25 | 邓建博 [50%] | 6h | 6h | 300 | 300 | 300 |
| 9 | 1.2.6 | 《日程表》评审 |  | 1d | 2018-06-25 A | 2018-06-25 A | 100% | 2018-05-14 | 2018-05-14 | 1d | start no later than 2018-06-25 | 周开杰 [10%]; 刘珊珊 [10%]; 王璐欣 [10%]; 邓建博 [10%]; 房雷 [10%]; 王博海 [10%]; 黄琪 [10%]; 金灼 [10%]; 张倩倩 [10%]; 夏丽 [10%]; 李燃 [10%]; 罗媛 [10%]; 徐欢 [10%]; 吕奎 [10%] | 4h | 4h | 200 | 200 | 200 |
| 10 | 1.3 | **设计阶段** |  | 1d | 2018-06-22 A | 2018-06-22 A | 100% | 2018-05-10 | 2018-05-11 | 2d | as late as possible |  | 17.6h | 17.6h | 880 | 2,180 | 880 |
| 11 | 1.3.1 | **启动编写《测试用例》** |  | 1d | 2018-06-22 A | 2018-06-22 A | 100% | 2018-05-10 | 2018-05-11 | 2d | as late as possible |  | 17.6h | 17.6h | 880 | 1,500 | 880 |
| 12 | 1.3.1.1 | 系统测试用例 |  | 1d | 2018-06-22 A | 2018-06-22 A | 100% | 2018-05-10 | 2018-05-11 | 2d | start no later than 2018-06-25 | 黄琪 [50%]; 房雷 [50%]; 操绍平 | 10h | 10h | 500 | 800 | 500 |
| 13 | 1.3.1.2 | 准出/准入测试用例 |  | 1d | 2018-06-22 A | 2018-06-22 A | 100% | 2018-05-10 | 2018-05-11 | 2d | start no later than 2018-06-22 | 黄琪 [50%]; 房雷 [50%] | 7.6h | 7.6h | 380 | 700 | 380 |
| 14 | 1.4 | **编码阶段** |  | 7d | 2018-06-21 A | 2018-06-29 A | 100% | 2018-05-14 | 2018-05-22 | 7d | as late as possible |  | 261.5h | 261.5h | 13,075 | 10,450 | 13,075 |
| 15 | 1.4.1 | **《测试用例》评审** |  | 1d | 2018-06-25 A | 2018-06-25 A | 100% | 2018-05-14 | 2018-05-14 | 1d | as late as possible |  | 24.8h | 24.8h | 1,240 | 1,200 | 1,240 |
| 16 | 1.4.1.1 | 系统测试用例评审 |  | 1d | 2018-06-25 A | 2018-06-25 A | 100% | 2018-05-14 | 2018-05-14 | 1d | start no later than 2018-06-25 | 周开杰 [10%]; 王博海 [10%]; 黄琪 [10%]; 房雷 [10%]; 王璐欣 [10%]; 刘珊珊 [10%]; 邓建博 [10%]; 金灼 [10%]; 张倩倩 [10%]; 夏丽 [10%]; 李燃 [10%]; 罗媛 [10%]; 徐欢 [10%] | 8h | 8h | 400 | 400 | 400 |
| 17 | 1.4.1.2 | 准出/准入测试用例评审 |  | 1d | 2018-06-25 A | 2018-06-25 A | 100% | 2018-05-14 | 2018-05-14 | 1d | start no later than 2018-06-25 | 周开杰 [10%]; 王博海 [10%]; 黄琪 [10%]; 房雷 [10%]; 王璐欣 [10%]; 刘珊珊 [10%]; 邓建博 [10%]; 金灼 [10%]; 张倩倩 [10%]; 夏丽 [10%]; 李燃 [10%]; 罗媛 [10%]; 徐欢 [10%] | 8h | 8h | 400 | 400 | 400 |
| 18 | 1.4.1.3 | 修改用例 |  | 1d | 2018-06-25 A | 2018-06-25 A | 100% | 2018-05-14 | 2018-05-14 | 1d | start no later than 2018-06-25 | 房雷 [50%]; 黄琪 [50%]; 操绍平 | 8.8h | 8.8h | 440 | 400 | 440 |
| 19 | 1.4.2 | **功能实现** |  | 7d | 2018-06-21 A | 2018-06-29 A | 100% | 2018-05-14 | 2018-05-22 | 7d | as late as possible |  | 212.6h | 212.6h | 10,630 | 8,210 | 10,630 |
| 20 | 1.4.2.1 | **平台端** |  | 5d | 2018-06-25 A | 2018-06-29 A | 100% |  |  |  | as late as possible |  | 26h | 26h | 1,300 |  | 1,300 |
| 21 | 1.4.2.1.1 | 查看成绩响应时间优化 | manual | 5d | 2018-06-25 A | 2018-06-29 A | 100% |  |  |  | as late as possible | 王博海 | 26h | 26h | 1,300 |  | 1,300 |
| 22 | 1.4.2.2 | **柜面** |  | 6d | 2018-06-22 A | 2018-06-29 A | 100% |  |  |  | as late as possible |  | 130.6h | 130.6h | 6,530 |  | 6,530 |
| 23 | 1.4.2.2.1 | 弹窗修改 | manual | 5d | 2018-06-25 A | 2018-06-29 A | 100% |  |  |  | as late as possible | 吕奎; 徐欢; 张倩倩 | 83.4h | 83.4h | 4,170 |  | 4,170 |
| 24 | 1.4.2.2.2 | 客户账户信息查询 | manual | 1d | 2018-06-22 A | 2018-06-22 A | 100% |  |  |  | as late as possible | 夏文超 | 8h | 8h | 400 |  | 400 |
| 25 | 1.4.2.2.3 | 柜面进入练习 | manual | 5d | 2018-06-25 A | 2018-06-29 A | 100% |  |  |  | as late as possible | 李燃 | 20.6h | 20.6h | 1,030 |  | 1,030 |
| 26 | 1.4.2.2.4 | 柜面进入考核 | manual | 5d | 2018-06-25 A | 2018-06-29 A | 100% |  |  |  | as late as possible | 夏丽 | 18.6h | 18.6h | 930 |  | 930 |

| ID | WBS | Task | Type | Duration | Start | Finish | Complete | Baseline start | Baseline finish | Baseline duration | Constraint | Resources | Work | Actual work | Cost | Baseline cost | Actual cost |
| --- | --- | --- | --- | --- | --- | --- | --- | --- | --- | --- | --- | --- | --- | --- | --- | --- | --- |
| 27 | 1.4.2.3 | **支付结算** |  | 3d | 2018-06-25 A | 2018-06-27 A | 100% |  |  |  | as late as possible |  | 14h | 14h | 700 |  | 700 |
| 28 | 1.4.2.3.1 | 案例面板首展开 | manual | 1d | 2018-06-25 A | 2018-06-25 A | 100% |  |  |  | as late as possible | 夏文超 | 2h | 2h | 100 |  | 100 |
| 29 | 1.4.2.3.2 | 公司客户信息建立 | manual | 1d | 2018-06-25 A | 2018-06-25 A | 100% |  |  |  | as late as possible | 夏文超 | 2h | 2h | 100 |  | 100 |
| 30 | 1.4.2.3.3 | 票据查询 | manual | 1d | 2018-06-26 A | 2018-06-26 A | 100% |  |  |  | as late as possible | 夏文超 | 8h | 8h | 400 |  | 400 |
| 31 | 1.4.2.3.4 | 三级菜单 | manual | 1d | 2018-06-27 A | 2018-06-27 A | 100% |  |  |  | as late as possible | 夏文超 | 2h | 2h | 100 |  | 100 |
| 32 | 1.4.2.4 | **国际业务** |  | 5d | 2018-06-22 A | 2018-06-28 A | 100% |  |  |  | as late as possible |  | 25h | 25h | 1,250 |  | 1,250 |
| 33 | 1.4.2.4.1 | 公司客户信息建立 | manual | 1d | 2018-06-25 A | 2018-06-25 A | 100% |  |  |  | as late as possible | 夏文超 | 2h | 2h | 100 |  | 100 |
| 34 | 1.4.2.4.2 | 查询按钮添加 | manual | 2d | 2018-06-22 A | 2018-06-26 A | 100% |  |  |  | finish no later than 2018-06-25 | 李燃; 夏丽; 徐欢 | 16h | 16h | 800 |  | 800 |
| 35 | 1.4.2.4.3 | 跟单托收申请 | manual | 1d | 2018-06-28 A | 2018-06-28 A | 100% |  |  |  | as late as possible | 夏文超 | 4h | 4h | 200 |  | 200 |
| 36 | 1.4.2.4.4 | 三级菜单 | manual | 1d | 2018-06-27 A | 2018-06-27 A | 100% |  |  |  | as late as possible | 夏文超 | 2h | 2h | 100 |  | 100 |
| 37 | 1.4.2.4.5 | 案例面板首展开 | manual | 1d | 2018-06-25 A | 2018-06-25 A | 100% |  |  |  | as late as possible | 夏文超 | 1h | 1h | 50 |  | 50 |
| 38 | 1.4.2.5 | **信贷** |  | 4d | 2018-06-25 A | 2018-06-28 A | 100% |  |  |  | as late as possible |  | 9h | 9h | 450 |  | 450 |
| 39 | 1.4.2.5.1 | 客户管理 | manual | 1d | 2018-06-28 A | 2018-06-28 A | 100% |  |  |  | as late as possible | 夏文超 | 4h | 4h | 200 |  | 200 |
| 40 | 1.4.2.5.2 | 三级菜单 | manual | 1d | 2018-06-27 A | 2018-06-27 A | 100% |  |  |  | as late as possible | 夏文超 | 4h | 4h | 200 |  | 200 |
| 41 | 1.4.2.5.3 | 案例面板首展开 | manual | 1d | 2018-06-25 A | 2018-06-25 A | 100% |  |  |  | as late as possible | 夏文超 | 1h | 1h | 50 |  | 50 |
| 42 | 1.4.2.6 | **代码走查** |  | 1d | 2018-06-21 A | 2018-06-21 A | 100% |  |  |  | as late as possible |  | 8h | 8h | 400 |  | 400 |
| 43 | 1.4.2.6.1 | 代码走查 | manual | 1d | 2018-06-21 A | 2018-06-21 A | 100% |  |  |  | as late as possible | 邓建博 | 8h | 8h | 400 |  | 400 |
| 44 | 1.4.3 | **测试申请与准出测试** |  | 2d | 2018-06-25 A | 2018-06-26 A | 100% | 2018-05-18 | 2018-05-18 | 1d | as late as possible |  | 2.5h | 2.5h | 125 | 240 | 125 |
| 45 | 1.4.3.1 | 测试准出 |  | 1d | 2018-06-25 A | 2018-06-26 A | 100% | 2018-05-18 | 2018-05-18 | 1d | start no later than 2018-06-26 | 李燃 [30%]; 张倩倩 [30%]; 夏丽 [30%]; 徐欢 [30%] | 2.5h | 2.5h | 125 | 240 | 125 |
| 46 | 1.4.4 | **建立测试版本基线** |  | 1d | 2018-06-26 A | 2018-06-26 A | 100% | 2018-05-18 | 2018-05-21 | 2d | as late as possible |  | 0.8h | 0.8h | 40 | 80 | 40 |
| 47 | 1.4.4.1 | 建立测试基线 |  | 1d | 2018-06-26 A | 2018-06-26 A | 100% | 2018-05-18 | 2018-05-21 | 2d | start no later than 2018-06-26 | 李婷 [10%] | 0.8h | 0.8h | 40 | 80 | 40 |
| 48 | 1.4.5 | **项目管理与过程监控** |  | 1d | 2018-06-29 A | 2018-06-29 A | 100% | 2018-05-18 | 2018-05-18 | 1d | as late as possible |  | 20.8h | 20.8h | 1,040 | 720 | 1,040 |
| 49 | 1.4.5.1 | 风险管理及项目周报 |  | 1d | 2018-06-29 A | 2018-06-29 A | 100% | 2018-05-18 | 2018-05-18 | 1d | start no later than 2018-06-29 | 邓建博 [20%] | 1.6h | 1.6h | 80 | 80 | 80 |
| 50 | 1.4.5.2 | 需求跟踪矩阵更新 |  | 1d | 2018-06-29 A | 2018-06-29 A | 100% | 2018-05-18 | 2018-05-18 | 1d | finish no later than 2018-06-29 | 王璐欣 | 8h | 8h | 400 | 80 | 400 |
| 51 | 1.4.5.3 | 进度计划更新及度量分析 |  | 1d | 2018-06-29 A | 2018-06-29 A | 100% | 2018-05-18 | 2018-05-18 | 1d | finish no later than 2018-06-29 | 邓建博 [20%] | 1.6h | 1.6h | 80 | 80 | 80 |
| 52 | 1.4.5.4 | 项目例会 |  | 1d | 2018-06-29 A | 2018-06-29 A | 100% | 2018-05-18 | 2018-05-18 | 1d | start no later than 2018-06-29 | 周开杰 [10%]; 王博海 [10%]; 黄琪 [10%]; 房雷 [10%]; 王璐欣 [10%]; 刘珊珊 [10%]; 邓建博 [10%]; 金灼 [10%]; 张倩倩 [10%]; 夏丽 [10%]; 李燃 [10%]; 罗媛 [10%]; 徐欢 [10%]; 吕奎 [10%] | 8.8h | 8.8h | 440 | 440 | 440 |
| 53 | 1.4.5.5 | QA审计 |  | 1d | 2018-06-29 A | 2018-06-29 A | 100% | 2018-05-18 | 2018-05-18 | 1d | start no later than 2018-06-29 | 金灼 [10%]; 罗媛 [10%] | 0.8h | 0.8h | 40 | 40 | 40 |

| ID | WBS | Task | Duration | Start | Finish | Complete | Baseline start | Baseline finish | Baseline duration | Constraint | Resources | Work | Actual work | Cost | Baseline cost | Actual cost |
| --- | --- | --- | --- | --- | --- | --- | --- | --- | --- | --- | --- | --- | --- | --- | --- | --- |
| 54 | 1.5 | **测试阶段** | 9d | 2018-06-25 A | 2018-07-05 A | 100% | 2018-05-18 | 2018-05-30 | 9d | as late as possible |  | 289.72h | 289.72h | 14,486.05 | 15,126.09 | 14,486.05 |
| 55 | 1.5.1 | 测试环境搭建 | 1d | 2018-06-25 A | 2018-06-25 A | 100% | 2018-05-18 | 2018-05-18 | 1d | start no later than 2018-06-25 | 徐欢 | 4h | 4h | 200 | 120 | 200 |
| 56 | 1.5.2 | **功能测试** | 8d | 2018-06-26 A | 2018-07-05 A | 100% | 2018-05-21 | 2018-05-30 | 8d | as late as possible |  | 121.12h | 121.12h | 6,056.05 | 3,696.09 | 6,056.05 |
| 57 | 1.5.2.1 | 第一轮测试(含准入) | 5d | 2018-06-26 A | 2018-07-02 A | 100% | 2018-05-21 | 2018-05-24 | 4d | finish no later than 2018-07-02 | 房雷 [70%]; 黄琪 [70%]; 操绍平 | 82.72h | 82.72h | 4,136.04 | 1,776.04 | 4,136.04 |
| 58 | 1.5.2.2 | 回归测试 | 2d | 2018-07-04 A | 2018-07-05 A | 100% | 2018-05-30 | 2018-05-30 | 1d | start no later than 2018-07-04 | 房雷 [70%]; 黄琪 [70%]; 操绍平 | 38.4h | 38.4h | 1,920.01 | 560.01 | 1,920.01 |
| 59 | 1.5.3 | **缺陷处理** | 8d | 2018-06-26 A | 2018-07-05 A | 100% | 2018-05-21 | 2018-05-29 | 7d | as late as possible |  | 164.6h | 164.6h | 8,230 | 9,110 | 8,230 |
| 60 | 1.5.3.1 | 第一轮缺陷处理 | 6d | 2018-06-26 A | 2018-07-03 A | 100% | 2018-05-21 | 2018-05-24 | 4d | start no later than 2018-06-26 | 李燃 [30%]; 周开杰 [30%]; 张倩倩 [30%]; 夏丽 [30%]; 王博海 [30%]; 徐欢 [30%] | 82.8h | 82.8h | 4,140 | 2,700 | 4,140 |
| 61 | 1.5.3.2 | 第二轮缺陷处理 | 2d | 2018-07-04 A | 2018-07-05 A | 100% | 2018-05-25 | 2018-05-29 | 3d | start no later than 2018-07-04 | 李燃; 周开杰; 张倩倩; 夏丽; 王博海; 徐欢 | 81.8h | 81.8h | 4,090 | 6,410 | 4,090 |
| 62 | 1.6 | **验收阶段** | 2d | 2018-07-06 A | 2018-07-09 A | 100% | 2018-05-18 | 2018-05-31 | 10d | as late as possible |  | 35.6h | 35.6h | 1,780 | 1,220 | 1,780 |
| 63 | 1.6.1 | **测试结论** | 1d | 2018-07-06 A | 2018-07-06 A | 100% | 2018-05-30 | 2018-05-30 | 1d | as late as possible |  | 0.4h | 0.4h | 20 | 20 | 20 |
| 64 | 1.6.1.1 | 测试结论输出 | 1d | 2018-07-06 A | 2018-07-06 A | 100% | 2018-05-30 | 2018-05-30 | 1d | start no later than 2018-07-06 | 黄琪 [5%] | 0.4h | 0.4h | 20 | 20 | 20 |
| 65 | 1.6.2 | **组织产品验收** | 2d | 2018-07-06 A | 2018-07-09 A | 100% | 2018-05-31 | 2018-05-31 | 0.5d | as late as possible |  | 15.2h | 15.2h | 760 | 200 | 760 |
| 66 | 1.6.2.1 | 产品验收测试 | 2d | 2018-07-06 A | 2018-07-09 A | 100% | 2018-05-31 | 2018-05-31 | 0.5d | finish no later than 2018-07-09 | 王璐欣 | 15.2h | 15.2h | 760 | 200 | 760 |
| 67 | 1.6.3 | **项目管理与过程监控** | 1d | 2018-07-06 A | 2018-07-06 A | 100% | 2018-05-18 | 2018-05-31 | 10d | as late as possible |  | 20h | 20h | 1,000 | 1,000 | 1,000 |
| 68 | 1.6.3.1 | 风险管理及项目周报 | 1d | 2018-07-06 A | 2018-07-06 A | 100% | 2018-05-31 | 2018-05-31 | 1d | start no later than 2018-07-06 | 邓建博 [10%] | 0.8h | 0.8h | 40 | 40 | 40 |
| 69 | 1.6.3.2 | 需求跟踪矩阵更新 | 1d | 2018-07-06 A | 2018-07-06 A | 100% | 2018-05-31 | 2018-05-31 | 1d | finish no later than 2018-07-06 | 王璐欣 | 8h | 8h | 400 | 40 | 400 |
| 70 | 1.6.3.3 | 进度计划更新及度量分析 | 1d | 2018-07-06 A | 2018-07-06 A | 100% | 2018-05-31 | 2018-05-31 | 1d | finish no later than 2018-07-06 | 邓建博 [10%] | 0.8h | 0.8h | 40 | 40 | 40 |
| 71 | 1.6.3.4 | 项目例会 | 1d | 2018-07-06 A | 2018-07-06 A | 100% | 2018-05-31 | 2018-05-31 | 1d | finish no later than 2018-07-06 | 金灼 [10%]; 周开杰 [10%]; 王博海 [10%]; 黄琪 [10%]; 房雷 [10%]; 王璐欣 [10%]; 刘珊珊 [10%]; 邓建博 [10%]; 张倩倩 [10%]; 夏丽 [10%]; 李燃 [10%]; 罗媛 [10%]; 徐欢 [10%]; 吕奎 [10%] | 8.8h | 8.8h | 440 | 440 | 440 |
| 72 | 1.6.3.5 | 配置基线创建 | 1d | 2018-07-06 A | 2018-07-06 A | 100% | 2018-05-18 | 2018-05-31 | 10d | finish no later than 2018-07-06 | 李婷 [10%] | 0.8h | 0.8h | 40 | 400 | 40 |
| 73 | 1.6.3.6 | QA审计 | 1d | 2018-07-06 A | 2018-07-06 A | 100% | 2018-05-31 | 2018-05-31 | 1d | finish no later than 2018-07-06 | 金灼 [10%]; 罗媛 [10%] | 0.8h | 0.8h | 40 | 40 | 40 |
