Schedule from MS Project, 2018-08-13 to 2018-11-22, status date 2018-09-14, costs in ¥, A marks actual dates.
Microsoft

## Calendars

- 标准: Mon-Fri 08:00-12:00, 13:00-17:00; Sat-Sun off. Exceptions (off unless hours are given): 2018-09-24 (中秋), 2018-09-29 to 2018-09-30 08:00-12:00, 13:00-17:00 (工作日), 2018-10-01 to 2018-10-07 (国庆节).

## Resources

| Resource | Rate |
| --- | --- |
| 罗政斌 | 50 |
| 聂欢欢 | 50 |
| 桂燕 | 50 |
| 郭微 | 50 |
| 黄超 | 50 |
| 李洋 | 50 |
| 李月 | 50 |
| 罗彬 | 50 |
| 盛成龙 | 50 |
| 吴杰 | 50 |
| 赵斌 | 50 |
| 王璐欣 | 50 |
| 苗家杭 | 50 |
| 宋丽华 | 50 |
| 周开杰 | 50 |
| 唐倩 | 50 |
| 邓建博 | 50 |
| 严燕 | 50 |
| 罗媛 | 50 |
| 徐玲 | 50 |
| 丁儒 | 50 |
| 高雅倩 | 50 |
| 胡文峰 | 50 |
| 李婷 | 50 |
| 陈春 | 50 |
| 黄琪 | 50 |
| 翟平平 | 50 |
| 柯楠 | 50 |
| 王博海 |  |
| 操邵平 |  |
| 刘珊珊 |  |
| 金灼 |  |
| 张倩倩 |  |
| 夏丽 |  |
| 李燃 |  |
| 徐欢 |  |
| 吕奎 |  |
| 房雷 |  |
| 李奕霏 |  |
| 刘燕燕 |  |
| 夏文超 |  |

## Schedule

| ID | WBS | Task | Type | Duration | Start | Finish | Predecessors | Complete | Remaining | Baseline start | Baseline finish | Baseline duration | Total slack | Constraint | Resources | Work | Actual work | Cost | Baseline cost | Actual cost |
| --- | --- | --- | --- | --- | --- | --- | --- | --- | --- | --- | --- | --- | --- | --- | --- | --- | --- | --- | --- | --- |
| 1 | 1 | **柔性化智能实验教学管理平台R1.1迭代四** |  | 70d? | 2018-08-13 A | 2018-11-22 |  | 91% | 6.21d? | 2018-07-30 | 2018-11-06 | 68d | 0d |  |  | 5883.89h | 4676.36h | 287,114.25 | 248,710 | 229,098 |
| 2 | 1.1 | 目标预测 | manual | 1d | 2018-08-13 A | 2018-08-13 A |  | 100% |  |  |  |  |  |  | 邓建博 | 8h | 8h | 400 |  | 400 |
| 3 | 1.2 | **需求阶段** |  | 9.88d | 2018-08-13 A | 2018-08-24 A |  | 100% |  | 2018-07-30 | 2018-08-24 | 20d |  |  |  | 233.76h | 233.76h | 11,688 | 17,380 | 11,688 |
| 4 | 1.2.1 | **电子报税和审计综合** |  | 6d | 2018-08-13 A | 2018-08-21 A |  | 100% |  | 2018-07-31 | 2018-08-20 | 15d |  |  |  | 125h | 125h | 6,250 | 10,000 | 6,250 |
| 5 | 1.2.1.1 | 编写《客户需求列表》 |  | 0.88d | 2018-08-13 A | 2018-08-13 A |  | 100% |  | 2018-07-31 | 2018-08-01 | 2d |  | finish no earlier than 2018-08-01 | 罗政斌 [50%]; 聂欢欢 [50%] | 7h | 7h | 350 | 800 | 350 |
| 6 | 1.2.1.2 | 输出产品原型 |  | 2.88d | 2018-08-14 A | 2018-08-16 A | 5 | 100% |  | 2018-08-02 | 2018-08-07 | 4d |  | finish no earlier than 2018-08-07 | 罗政斌 [50%]; 聂欢欢 [50%] | 23h | 23h | 1,150 | 1,600 | 1,150 |
| 7 | 1.2.1.3 | 编写《客户需求说明书》 |  | 0.88d | 2018-08-17 A | 2018-08-17 A | 6 | 100% |  | 2018-08-08 | 2018-08-17 | 8d |  | finish no earlier than 2018-08-17 | 罗政斌 [50%]; 聂欢欢 [50%] | 7h | 7h | 350 | 3,200 | 350 |
| 8 | 1.2.1.4 | 原型及客户说明书评审 |  | 1d | 2018-08-20 A | 2018-08-21 A | 7 | 100% |  | 2018-08-20 | 2018-08-20 | 1d |  | finish no earlier than 2018-08-20 | 桂燕; 郭微; 黄超; 李洋; 李月; 罗彬; 罗政斌; 聂欢欢; 盛成龙; 吴杰; 赵斌 | 88h | 88h | 4,400 | 4,400 | 4,400 |
| 9 | 1.2.2 | **财务分析** |  | 9.88d | 2018-08-13 A | 2018-08-24 A |  | 100% |  | 2018-07-30 | 2018-08-24 | 20d |  |  |  | 108.76h | 108.76h | 5,438 | 7,380 | 5,438 |
| 10 | 1.2.2.1 | 编写《客户需求列表》 |  | 0.88d | 2018-08-13 A | 2018-08-13 A |  | 100% |  | 2018-07-30 | 2018-07-30 | 1d |  | finish no earlier than 2018-07-30 | 王璐欣 [50%]; 罗政斌 [50%] | 7h | 7h | 350 | 400 | 350 |
| 11 | 1.2.2.2 | 输出产品原型 |  | 2.88d | 2018-08-14 A | 2018-08-16 A | 10 | 100% |  | 2018-07-31 | 2018-08-03 | 4d |  | finish no earlier than 2018-08-03 | 王璐欣 [50%]; 罗政斌 [50%] | 23h | 23h | 1,150 | 1,600 | 1,150 |
| 12 | 1.2.2.3 | 编写《客户需求说明书》 |  | 0.88d | 2018-08-17 A | 2018-08-17 A | 11 | 100% |  | 2018-08-07 | 2018-08-10 | 4d |  | finish no earlier than 2018-08-10 | 王璐欣 [50%]; 罗政斌 [50%] | 7h | 7h | 350 | 1,600 | 350 |
| 13 | 1.2.2.4 | 原型及客户说明书评审 |  | 0.88d | 2018-08-20 A | 2018-08-22 A |  | 100% |  | 2018-08-22 | 2018-08-22 | 1d |  | finish no earlier than 2018-08-22 | 王璐欣 [50%]; 罗政斌 [50%]; 苗家杭; 宋丽华; 周开杰 | 28.16h | 28.16h | 1,408 | 1,600 | 1,408 |
| 14 | 1.2.2.5 | 性能需求列表 |  | 1d | 2018-08-24 A | 2018-08-24 A |  | 100% |  | 2018-08-24 | 2018-08-24 | 1d |  | finish no earlier than 2018-08-24 | 罗政斌 [10%]; 王璐欣 [10%] | 1.6h | 1.6h | 80 | 80 | 80 |
| 15 | 1.2.2.6 | 性能需求列表评审 |  | 1d | 2018-08-24 A | 2018-08-24 A |  | 100% |  | 2018-08-24 | 2018-08-24 | 1d |  | finish no earlier than 2018-08-24 | 周开杰; 苗家杭; 唐倩; 邓建博; 宋丽华; 严燕 | 42h | 42h | 2,100 | 2,100 | 2,100 |
| 16 | 1.3 | **设计阶段** |  | 29d | 2018-08-13 A | 2018-09-20 A |  | 100% |  | 2018-08-07 | 2018-09-20 | 33d |  |  |  | 694.4h | 694.4h | 34,720 | 33,360 | 34,720 |
| 17 | 1.3.1 | 项目预估算 |  | 1d | 2018-08-20 A | 2018-08-23 A |  | 100% |  | 2018-08-23 | 2018-08-23 | 1d |  | finish no earlier than 2018-08-23 | 邓建博 [50%]; 周开杰 [50%]; 郭微 [50%] | 12h | 12h | 600 | 800 | 600 |
| 18 | 1.3.2 | 确定性估算 |  | 1d | 2018-08-24 A | 2018-08-24 A |  | 100% |  | 2018-08-24 | 2018-08-24 | 1d |  | finish no earlier than 2018-08-24 | 郭微 [20%] | 1.6h | 1.6h | 80 | 80 | 80 |
| 19 | 1.3.3 | 编制《日程表》 |  | 2d | 2018-08-27 A | 2018-08-28 A | 18 | 100% |  | 2018-08-27 | 2018-08-28 | 2d |  | finish no earlier than 2018-08-28 | 邓建博 [20%] | 3.2h | 3.2h | 160 | 160 | 160 |
| 20 | 1.3.4 | 《日程表》评审 |  | 1d | 2018-08-29 A | 2018-08-29 A |  | 100% |  | 2018-08-29 | 2018-08-29 | 1d |  | finish no earlier than 2018-08-29 | 周开杰 [10%]; 罗政斌 [10%]; 王璐欣 [10%]; 邓建博 | 10.4h | 10.4h | 520 | 5,040 | 520 |
| 21 | 1.3.5 | **视觉与交互设计** |  | 22d | 2018-08-13 A | 2018-09-11 A |  | 100% |  | 2018-08-07 | 2018-09-11 | 26d |  |  |  | 243.6h | 243.6h | 12,180 | 12,180 | 12,180 |
| 22 | 1.3.5.1 | **审计综合** |  | 15d | 2018-08-20 A | 2018-09-10 A |  | 100% |  | 2018-08-07 | 2018-09-07 | 24d |  |  |  | 110.4h | 110.4h | 5,520 | 5,520 | 5,520 |
| 23 | 1.3.5.1.1 | UI界面设计 |  | 5d | 2018-08-20 A | 2018-08-27 A |  | 100% |  | 2018-08-07 | 2018-08-13 | 5d |  | finish no earlier than 2018-08-13 | 徐玲 | 36h | 36h | 1,800 | 1,800 | 1,800 |
| 24 | 1.3.5.1.2 | 前端设计 |  | 10d | 2018-08-27 A | 2018-09-10 A |  | 100% |  | 2018-08-27 | 2018-09-07 | 10d |  | finish no earlier than 2018-09-07 | 丁儒 | 62.4h | 62.4h | 3,120 | 3,120 | 3,120 |
| 25 | 1.3.5.1.3 | 前端测试 |  | 1d | 2018-09-07 A | 2018-09-07 A |  | 100% |  | 2018-09-07 | 2018-09-07 | 1d |  | finish no earlier than 2018-09-07 | 陈春; 黄琪 | 12h | 12h | 600 | 600 | 600 |

| ID | WBS | Task | Duration | Start | Finish | Predecessors | Complete | Baseline start | Baseline finish | Baseline duration | Constraint | Resources | Work | Actual work | Cost | Baseline cost | Actual cost |
| --- | --- | --- | --- | --- | --- | --- | --- | --- | --- | --- | --- | --- | --- | --- | --- | --- | --- |
| 26 | 1.3.5.2 | **电子报税** | 20d | 2018-08-13 A | 2018-09-07 A |  | 100% | 2018-08-13 | 2018-09-07 | 20d |  |  | 117.2h | 117.2h | 5,860 | 5,860 | 5,860 |
| 27 | 1.3.5.2.1 | UI界面设计 | 5d | 2018-08-13 A | 2018-08-17 A |  | 100% | 2018-08-13 | 2018-08-17 | 5d | finish no earlier than 2018-08-17 | 徐玲 | 36h | 36h | 1,800 | 1,800 | 1,800 |
| 28 | 1.3.5.2.2 | 前端设计 | 10d | 2018-08-27 A | 2018-09-07 A |  | 100% | 2018-08-27 | 2018-09-07 | 10d | finish no earlier than 2018-09-07 | 高雅倩 | 71.2h | 71.2h | 3,560 | 3,560 | 3,560 |
| 29 | 1.3.5.2.3 | 前端测试 | 1d | 2018-09-07 A | 2018-09-07 A |  | 100% | 2018-09-07 | 2018-09-07 | 1d | finish no earlier than 2018-09-07 | 唐倩; 翟平平 | 10h | 10h | 500 | 500 | 500 |
| 30 | 1.3.5.3 | **财务分析** | 2d | 2018-09-10 A | 2018-09-11 A |  | 100% | 2018-09-10 | 2018-09-11 | 2d |  |  | 8h | 8h | 400 | 400 | 400 |
| 31 | 1.3.5.3.1 | 前端修改 | 2d | 2018-09-10 A | 2018-09-11 A |  | 100% | 2018-09-10 | 2018-09-11 | 2d | finish no earlier than 2018-09-11 | 丁儒 | 8h | 8h | 400 | 400 | 400 |
| 32 | 1.3.5.4 | **P2P系统** | 2d | 2018-09-10 A | 2018-09-11 A |  | 100% | 2018-09-10 | 2018-09-11 | 2d |  |  | 8h | 8h | 400 | 400 | 400 |
| 33 | 1.3.5.4.1 | 前端修改 | 2d | 2018-09-10 A | 2018-09-11 A |  | 100% | 2018-09-10 | 2018-09-11 | 2d | finish no earlier than 2018-09-11 | 丁儒 | 8h | 8h | 400 | 400 | 400 |
| 34 | 1.3.6 | **编写《测试用例》** | 24d | 2018-08-20 A | 2018-09-20 A |  | 100% | 2018-08-20 | 2018-09-20 | 24d |  |  | 375.6h | 375.6h | 18,780 | 18,780 | 18,780 |
| 35 | 1.3.6.1 | **审计综合和电子报税** | 18d | 2018-08-28 A | 2018-09-20 A |  | 100% | 2018-08-28 | 2018-09-20 | 18d |  |  | 267h | 267h | 13,350 | 13,350 | 13,350 |
| 36 | 1.3.6.1.1 | 系统测试用例编写 | 14d | 2018-08-28 A | 2018-09-14 A |  | 100% | 2018-08-28 | 2018-09-14 | 14d | finish no earlier than 2018-09-14 | 唐倩; 陈春 | 190h | 190h | 9,500 | 9,500 | 9,500 |
| 37 | 1.3.6.1.2 | 系统测试用例评审 | 1d | 2018-09-19 A | 2018-09-19 A |  | 100% | 2018-09-19 | 2018-09-19 | 1d | finish no earlier than 2018-09-19 | 唐倩; 陈春; 桂燕; 郭微; 黄超; 李婷; 李洋; 李月; 罗彬; 盛成龙; 吴杰; 赵斌 | 61h | 61h | 3,050 | 3,050 | 3,050 |
| 38 | 1.3.6.1.3 | 测试用例修改 | 1d | 2018-09-20 A | 2018-09-20 A | 37 | 100% | 2018-09-20 | 2018-09-20 | 1d | finish no earlier than 2018-09-20 | 唐倩; 陈春 | 16h | 16h | 800 | 800 | 800 |
| 39 | 1.3.6.2 | **财务分析** | 13d | 2018-08-20 A | 2018-09-05 A |  | 100% | 2018-08-20 | 2018-09-05 | 13d |  |  | 77.4h | 77.4h | 3,870 | 3,870 | 3,870 |
| 40 | 1.3.6.2.1 | 系统测试用例编写 | 5d | 2018-08-20 A | 2018-08-24 A |  | 100% | 2018-08-20 | 2018-08-24 | 5d | finish no earlier than 2018-08-24 | 严燕 | 36h | 36h | 1,800 | 1,800 | 1,800 |
| 41 | 1.3.6.2.2 | 系统测试用例评审 | 1d | 2018-09-04 A | 2018-09-04 A |  | 100% | 2018-09-04 | 2018-09-04 | 1d | finish no earlier than 2018-09-04 | 郭微; 胡文峰; 苗家杭; 宋丽华; 王璐欣; 严燕; 周开杰 | 39.2h | 39.2h | 1,960 | 1,960 | 1,960 |
| 42 | 1.3.6.2.3 | 测试用例修改 | 1d | 2018-09-05 A | 2018-09-05 A | 41 | 100% | 2018-09-05 | 2018-09-05 | 1d | finish no earlier than 2018-09-05 | 严燕 | 2.2h | 2.2h | 110 | 110 | 110 |
| 43 | 1.3.6.3 | **P2P系统** | 5d | 2018-09-03 A | 2018-09-07 A |  | 100% | 2018-09-03 | 2018-09-07 | 5d |  |  | 31.2h | 31.2h | 1,560 | 1,560 | 1,560 |
| 44 | 1.3.6.3.1 | 系统测试用例编写 | 4d | 2018-09-03 A | 2018-09-06 A |  | 100% | 2018-09-03 | 2018-09-06 | 4d | finish no earlier than 2018-09-06 | 严燕 | 11.2h | 11.2h | 560 | 560 | 560 |
| 45 | 1.3.6.3.2 | 系统测试用例评审 | 1d | 2018-09-07 A | 2018-09-07 A | 44 | 100% | 2018-09-07 | 2018-09-07 | 1d | finish no earlier than 2018-09-07 | 邓建博; 胡文峰; 严燕; 柯楠 | 16h | 16h | 800 | 800 | 800 |
| 46 | 1.3.6.3.3 | 测试用例修改 | 1d | 2018-09-07 A | 2018-09-07 A |  | 100% | 2018-09-07 | 2018-09-07 | 1d | finish no earlier than 2018-09-07 | 严燕 | 4h | 4h | 200 | 200 | 200 |
| 47 | 1.3.7 | **项目管理与过程监控** | 6d | 2018-08-31 A | 2018-09-07 A |  | 100% | 2018-08-31 | 2018-09-07 | 6d |  |  | 48h | 48h | 2,400 | 2,400 | 2,400 |
| 48 | 1.3.7.1 | 风险管理 | 1d | 2018-08-31 A | 2018-08-31 A |  | 100% | 2018-08-31 | 2018-08-31 | 1d | finish no earlier than 2018-08-31 | 邓建博 [20%] | 1.6h | 1.6h | 80 | 80 | 80 |
| 49 | 1.3.7.2 | 项目周报 | 1d | 2018-08-31 A | 2018-08-31 A |  | 100% | 2018-08-31 | 2018-08-31 | 1d | finish no earlier than 2018-08-31 | 邓建博 [20%] | 1.6h | 1.6h | 80 | 80 | 80 |
| 50 | 1.3.7.3 | 进度计划更新 | 1d | 2018-08-31 A | 2018-08-31 A |  | 100% | 2018-08-31 | 2018-08-31 | 1d | finish no earlier than 2018-08-31 | 邓建博 [20%] | 1.6h | 1.6h | 80 | 80 | 80 |
| 51 | 1.3.7.4 | 项目例会 | 1d | 2018-08-31 A | 2018-08-31 A |  | 100% | 2018-08-31 | 2018-08-31 | 1d | finish no earlier than 2018-08-31 | 周开杰 [10%]; 罗彬 [10%]; 苗家杭 [10%]; 唐倩; 王璐欣 [10%]; 罗政斌 [10%]; 邓建博 [10%]; 陈春 [10%]; 宋丽华 [10%]; 罗媛 [10%]; 郭微 [10%]; 胡文峰; 聂欢欢 | 16.8h | 16.8h | 840 | 840 | 840 |
| 52 | 1.3.7.5 | QA审计 | 1d | 2018-08-31 A | 2018-08-31 A |  | 100% | 2018-08-31 | 2018-08-31 | 1d | finish no earlier than 2018-08-31 | 罗媛 [10%] | 0.8h | 0.8h | 40 | 40 | 40 |
| 53 | 1.3.7.6 | 风险管理 | 1d | 2018-09-07 A | 2018-09-07 A |  | 100% | 2018-09-07 | 2018-09-07 | 1d | finish no earlier than 2018-09-07 | 邓建博 [20%] | 1.6h | 1.6h | 80 | 80 | 80 |
| 54 | 1.3.7.7 | 项目周报 | 1d | 2018-09-07 A | 2018-09-07 A |  | 100% | 2018-09-07 | 2018-09-07 | 1d | finish no earlier than 2018-09-07 | 邓建博 [20%] | 1.6h | 1.6h | 80 | 80 | 80 |
| 55 | 1.3.7.8 | 进度计划更新 | 1d | 2018-09-07 A | 2018-09-07 A |  | 100% | 2018-09-07 | 2018-09-07 | 1d | finish no earlier than 2018-09-07 | 邓建博 [20%] | 1.6h | 1.6h | 80 | 80 | 80 |
| 56 | 1.3.7.9 | 项目例会 | 1d | 2018-09-07 A | 2018-09-07 A |  | 100% | 2018-09-07 | 2018-09-07 | 1d | finish no earlier than 2018-09-07 | 周开杰 [10%]; 罗彬 [10%]; 苗家杭 [10%]; 唐倩; 王璐欣 [10%]; 罗政斌 [10%]; 邓建博 [10%]; 陈春 [10%]; 宋丽华 [10%]; 罗媛 [10%]; 郭微 [10%]; 胡文峰; 聂欢欢 | 20h | 20h | 1,000 | 1,000 | 1,000 |
| 57 | 1.3.7.10 | QA审计 | 1d | 2018-09-07 A | 2018-09-07 A |  | 100% | 2018-09-07 | 2018-09-07 | 1d | finish no earlier than 2018-09-07 | 罗媛 [10%] | 0.8h | 0.8h | 40 | 40 | 40 |

| ID | WBS | Task | Duration | Start | Finish | Predecessors | Complete | Baseline start | Baseline finish | Baseline duration | Constraint | Resources | Work | Actual work | Cost | Baseline cost | Actual cost |
| --- | --- | --- | --- | --- | --- | --- | --- | --- | --- | --- | --- | --- | --- | --- | --- | --- | --- |
| 58 | 1.4 | **编码阶段** | 24d | 2018-08-27 A | 2018-09-28 A |  | 100% | 2018-08-27 | 2018-09-28 | 24d |  |  | 1312.1h | 1312.1h | 65,605 | 65,605 | 65,605 |
| 59 | 1.4.1 | **功能实现** | 20d | 2018-08-27 A | 2018-09-21 A |  | 100% | 2018-08-27 | 2018-09-21 | 20d |  |  | 1210.3h | 1210.3h | 60,515 | 60,515 | 60,515 |
| 60 | 1.4.1.1 | **审计综合和电子报税** | 20d | 2018-08-27 A | 2018-09-21 A |  | 100% | 2018-08-27 | 2018-09-21 | 20d |  |  | 985.6h | 985.6h | 49,280 | 49,280 | 49,280 |
| 61 | 1.4.1.1.1 | **审计综合** | 19d | 2018-08-27 A | 2018-09-20 A |  | 100% | 2018-08-27 | 2018-09-20 | 19d |  |  | 565h | 565h | 28,250 | 28,250 | 28,250 |
| 62 | 1.4.1.1.1.1 | **教师端** | 15d | 2018-08-27 A | 2018-09-14 A |  | 100% | 2018-08-27 | 2018-09-14 | 15d |  |  | 232h | 232h | 11,600 | 11,600 | 11,600 |
| 63 | 1.4.1.1.1.1.1 | 添加案例 | 2d | 2018-08-27 A | 2018-08-28 A |  | 100% | 2018-08-27 | 2018-08-28 | 2d | finish no earlier than 2018-08-28 | 桂燕; 李月 | 32h | 32h | 1,600 | 1,600 | 1,600 |
| 64 | 1.4.1.1.1.1.2 | 编辑案例 | 2d | 2018-08-29 A | 2018-08-30 A | 63 | 100% | 2018-08-29 | 2018-08-30 | 2d | finish no earlier than 2018-08-30 | 桂燕; 李月 | 24h | 24h | 1,200 | 1,200 | 1,200 |
| 65 | 1.4.1.1.1.1.3 | 删除案例 | 2d | 2018-08-31 A | 2018-09-03 A | 64 | 100% | 2018-08-31 | 2018-09-03 | 2d | finish no earlier than 2018-09-03 | 桂燕; 李月 | 32h | 32h | 1,600 | 1,600 | 1,600 |
| 66 | 1.4.1.1.1.1.4 | 练习管理 | 1d | 2018-09-04 A | 2018-09-04 A | 65 | 100% | 2018-09-04 | 2018-09-04 | 1d | finish no earlier than 2018-09-04 | 桂燕; 李月 | 16h | 16h | 800 | 800 | 800 |
| 67 | 1.4.1.1.1.1.5 | 考核管理 | 2d | 2018-09-05 A | 2018-09-06 A | 66 | 100% | 2018-09-05 | 2018-09-06 | 2d | finish no earlier than 2018-09-06 | 桂燕; 李月 | 32h | 32h | 1,600 | 1,600 | 1,600 |
| 68 | 1.4.1.1.1.1.6 | 成绩单 | 2d | 2018-09-07 A | 2018-09-10 A | 67 | 100% | 2018-09-07 | 2018-09-10 | 2d | finish no earlier than 2018-09-10 | 桂燕; 李月 | 32h | 32h | 1,600 | 1,600 | 1,600 |
| 69 | 1.4.1.1.1.1.7 | 发布考核 | 2d | 2018-09-11 A | 2018-09-12 A | 68 | 100% | 2018-09-11 | 2018-09-12 | 2d | finish no earlier than 2018-09-12 | 桂燕; 李月 | 32h | 32h | 1,600 | 1,600 | 1,600 |
| 70 | 1.4.1.1.1.1.8 | 考核列表 | 2d | 2018-09-13 A | 2018-09-14 A | 69 | 100% | 2018-09-13 | 2018-09-14 | 2d | finish no earlier than 2018-09-14 | 桂燕; 李月 | 32h | 32h | 1,600 | 1,600 | 1,600 |
| 71 | 1.4.1.1.1.2 | **学生端** | 14d | 2018-08-27 A | 2018-09-14 A |  | 100% | 2018-08-27 | 2018-09-14 | 14d |  |  | 108h | 108h | 5,400 | 5,400 | 5,400 |
| 72 | 1.4.1.1.1.2.1 | 进行练习 | 2d | 2018-08-27 A | 2018-08-29 A |  | 100% | 2018-08-27 | 2018-08-29 | 2d | finish no earlier than 2018-08-27 | 黄超 | 16h | 16h | 800 | 800 | 800 |
| 73 | 1.4.1.1.1.2.2 | 进行考核 | 4d | 2018-08-29 A | 2018-09-04 A | 72 | 100% | 2018-08-29 | 2018-09-04 | 4d | finish no earlier than 2018-09-03 | 黄超 | 28h | 28h | 1,400 | 1,400 | 1,400 |
| 74 | 1.4.1.1.1.2.3 | 成绩管理 | 4d | 2018-09-04 A | 2018-09-10 A | 73 | 100% | 2018-09-04 | 2018-09-10 | 4d | finish no earlier than 2018-09-07 | 黄超 | 32h | 32h | 1,600 | 1,600 | 1,600 |
| 75 | 1.4.1.1.1.2.4 | 考核打分 | 4d | 2018-09-10 A | 2018-09-14 A | 74 | 100% | 2018-09-10 | 2018-09-14 | 4d | finish no earlier than 2018-09-13 | 黄超 | 32h | 32h | 1,600 | 1,600 | 1,600 |
| 76 | 1.4.1.1.1.3 | **管理端** | 14.88d | 2018-08-27 A | 2018-09-14 A |  | 100% | 2018-08-27 | 2018-09-14 | 14.88d |  |  | 112h | 112h | 5,600 | 5,600 | 5,600 |
| 77 | 1.4.1.1.1.3.1 | 案例管理 | 2d | 2018-08-27 A | 2018-08-29 A |  | 100% | 2018-08-27 | 2018-08-29 | 2d | start no earlier than 2018-08-27 | 李洋 | 16h | 16h | 800 | 800 | 800 |
| 78 | 1.4.1.1.1.3.2 | 练习管理 | 4d | 2018-08-30 A | 2018-09-04 A | 77 | 100% | 2018-08-30 | 2018-09-04 | 4d | finish no earlier than 2018-09-04 | 李洋 | 32h | 32h | 1,600 | 1,600 | 1,600 |
| 79 | 1.4.1.1.1.3.3 | 考核管理 | 5d | 2018-09-05 A | 2018-09-11 A | 78 | 100% | 2018-09-05 | 2018-09-11 | 5d | finish no earlier than 2018-09-11 | 李洋 | 40h | 40h | 2,000 | 2,000 | 2,000 |
| 80 | 1.4.1.1.1.3.4 | 登陆 | 3d | 2018-09-12 A | 2018-09-14 A | 79 | 100% | 2018-09-12 | 2018-09-14 | 3d | finish no earlier than 2018-09-14 | 李洋 | 24h | 24h | 1,200 | 1,200 | 1,200 |
| 81 | 1.4.1.1.1.4 | **系统集成** | 3d | 2018-09-17 A | 2018-09-19 A |  | 100% | 2018-09-17 | 2018-09-19 | 3d |  |  | 73h | 73h | 3,650 | 3,650 | 3,650 |
| 82 | 1.4.1.1.1.4.1 | 浏览器兼容性 | 1d | 2018-09-17 A | 2018-09-17 A |  | 100% | 2018-09-17 | 2018-09-17 | 1d | finish no earlier than 2018-09-17 | 桂燕; 黄超; 李洋; 李月 | 32h | 32h | 1,600 | 1,600 | 1,600 |
| 83 | 1.4.1.1.1.4.2 | 平台对接 | 1d | 2018-09-18 A | 2018-09-18 A | 82 | 100% | 2018-09-18 | 2018-09-18 | 1d | finish no earlier than 2018-09-18 | 桂燕; 黄超; 李洋; 李月 | 32h | 32h | 1,600 | 1,600 | 1,600 |
| 84 | 1.4.1.1.1.4.3 | 缓存优化 | 1d | 2018-09-19 A | 2018-09-19 A | 83 | 100% | 2018-09-19 | 2018-09-19 | 1d | finish no earlier than 2018-09-17 | 桂燕; 黄超; 李洋; 李月 | 9h | 9h | 450 | 450 | 450 |

| ID | WBS | Task | Duration | Start | Finish | Predecessors | Complete | Baseline start | Baseline finish | Baseline duration | Constraint | Resources | Work | Actual work | Cost | Baseline cost | Actual cost |
| --- | --- | --- | --- | --- | --- | --- | --- | --- | --- | --- | --- | --- | --- | --- | --- | --- | --- |
| 85 | 1.4.1.1.1.5 | **系统联调** | 2d | 2018-09-19 A | 2018-09-20 A |  | 100% | 2018-09-19 | 2018-09-20 | 2d |  |  | 40h | 40h | 2,000 | 2,000 | 2,000 |
| 86 | 1.4.1.1.1.5.1 | 系统联调 | 2d | 2018-09-19 A | 2018-09-20 A |  | 100% | 2018-09-19 | 2018-09-20 | 2d | finish no earlier than 2018-09-20 | 李月; 桂燕; 李洋; 黄超 | 40h | 40h | 2,000 | 2,000 | 2,000 |
| 87 | 1.4.1.1.2 | **电子报税** | 19d | 2018-08-27 A | 2018-09-20 A |  | 100% | 2018-08-27 | 2018-09-20 | 19d |  |  | 356h | 356h | 17,800 | 17,800 | 17,800 |
| 88 | 1.4.1.1.2.1 | **教师端** | 15d | 2018-08-27 A | 2018-09-14 A |  | 100% | 2018-08-27 | 2018-09-14 | 15d |  |  | 89h | 89h | 4,450 | 4,450 | 4,450 |
| 89 | 1.4.1.1.2.1.1 | 添加案例 | 1d | 2018-08-27 A | 2018-08-27 A |  | 100% | 2018-08-27 | 2018-08-27 | 1d | finish no earlier than 2018-08-27 | 罗彬 | 2h | 2h | 100 | 100 | 100 |
| 90 | 1.4.1.1.2.1.2 | 编辑案例 | 1d | 2018-08-29 A | 2018-08-29 A | 89 | 100% | 2018-08-29 | 2018-08-29 | 1d | finish no earlier than 2018-08-29 | 罗彬 | 2h | 2h | 100 | 100 | 100 |
| 91 | 1.4.1.1.2.1.3 | 查看案例 | 2d | 2018-08-31 A | 2018-09-03 A | 90 | 100% | 2018-08-31 | 2018-09-03 | 2d | finish no earlier than 2018-09-03 | 罗彬 | 15h | 15h | 750 | 750 | 750 |
| 92 | 1.4.1.1.2.1.4 | 删除案例 | 2d | 2018-09-04 A | 2018-09-05 A | 91 | 100% | 2018-09-04 | 2018-09-05 | 2d | finish no earlier than 2018-09-05 | 罗彬 | 16h | 16h | 800 | 800 | 800 |
| 93 | 1.4.1.1.2.1.5 | 练习管理 | 2d | 2018-09-06 A | 2018-09-07 A | 92 | 100% | 2018-09-06 | 2018-09-07 | 2d | finish no earlier than 2018-09-07 | 罗彬 | 15h | 15h | 750 | 750 | 750 |
| 94 | 1.4.1.1.2.1.6 | 考核管理 | 2d | 2018-09-10 A | 2018-09-11 A | 93 | 100% | 2018-09-10 | 2018-09-11 | 2d | finish no earlier than 2018-09-11 | 罗彬 | 16h | 16h | 800 | 800 | 800 |
| 95 | 1.4.1.1.2.1.7 | 成绩单 | 2d | 2018-09-12 A | 2018-09-13 A | 94 | 100% | 2018-09-12 | 2018-09-13 | 2d | finish no earlier than 2018-09-13 | 罗彬 | 16h | 16h | 800 | 800 | 800 |
| 96 | 1.4.1.1.2.1.8 | 发布考核 | 1d | 2018-09-14 A | 2018-09-14 A | 95 | 100% | 2018-09-14 | 2018-09-14 | 1d | finish no earlier than 2018-09-14 | 罗彬 | 7h | 7h | 350 | 350 | 350 |
| 97 | 1.4.1.1.2.2 | **学生端** | 11d | 2018-08-27 A | 2018-09-10 A |  | 100% | 2018-08-27 | 2018-09-10 | 11d |  |  | 79h | 79h | 3,950 | 3,950 | 3,950 |
| 98 | 1.4.1.1.2.2.1 | 进行练习 | 1d | 2018-08-27 A | 2018-08-27 A |  | 100% | 2018-08-27 | 2018-08-27 | 1d | finish no earlier than 2018-08-27 | 吴杰 | 8h | 8h | 400 | 400 | 400 |
| 99 | 1.4.1.1.2.2.2 | 进行考核 | 5d | 2018-08-28 A | 2018-09-03 A | 98 | 100% | 2018-08-28 | 2018-09-03 | 5d | finish no earlier than 2018-08-31 | 吴杰 | 31h | 31h | 1,550 | 1,550 | 1,550 |
| 100 | 1.4.1.1.2.2.3 | 成绩管理 | 5d | 2018-09-04 A | 2018-09-10 A | 99 | 100% | 2018-09-04 | 2018-09-10 | 5d | finish no earlier than 2018-09-07 | 吴杰 | 40h | 40h | 2,000 | 2,000 | 2,000 |
| 101 | 1.4.1.1.2.3 | **管理端** | 15d | 2018-08-27 A | 2018-09-14 A |  | 100% | 2018-08-27 | 2018-09-14 | 15d |  |  | 104h | 104h | 5,200 | 5,200 | 5,200 |
| 102 | 1.4.1.1.2.3.1 | 案例管理 | 1d | 2018-08-27 A | 2018-08-27 A |  | 100% | 2018-08-27 | 2018-08-27 | 1d | finish no earlier than 2018-08-27 | 赵斌 | 8h | 8h | 400 | 400 | 400 |
| 103 | 1.4.1.1.2.3.2 | 练习管理 | 5d | 2018-08-30 A | 2018-09-05 A | 102 | 100% | 2018-08-30 | 2018-09-05 | 5d | finish no earlier than 2018-09-05 | 赵斌 | 40h | 40h | 2,000 | 2,000 | 2,000 |
| 104 | 1.4.1.1.2.3.3 | 考核管理 | 4d | 2018-09-06 A | 2018-09-11 A | 103 | 100% | 2018-09-06 | 2018-09-11 | 4d | finish no earlier than 2018-09-11 | 赵斌 | 32h | 32h | 1,600 | 1,600 | 1,600 |
| 105 | 1.4.1.1.2.3.4 | 登陆对接 | 3d | 2018-09-12 A | 2018-09-14 A | 104 | 100% | 2018-09-12 | 2018-09-14 | 3d | finish no earlier than 2018-09-14 | 赵斌 | 24h | 24h | 1,200 | 1,200 | 1,200 |
| 106 | 1.4.1.1.2.4 | **系统集成** | 2d | 2018-09-17 A | 2018-09-18 A |  | 100% | 2018-09-17 | 2018-09-18 | 2d |  |  | 48h | 48h | 2,400 | 2,400 | 2,400 |
| 107 | 1.4.1.1.2.4.1 | 系统集成 | 2d | 2018-09-17 A | 2018-09-18 A |  | 100% | 2018-09-17 | 2018-09-18 | 2d | finish no earlier than 2018-09-18 | 罗彬; 吴杰; 赵斌 | 48h | 48h | 2,400 | 2,400 | 2,400 |
| 108 | 1.4.1.1.2.5 | **系统联调** | 2d | 2018-09-19 A | 2018-09-20 A |  | 100% | 2018-09-19 | 2018-09-20 | 2d |  |  | 36h | 36h | 1,800 | 1,800 | 1,800 |
| 109 | 1.4.1.1.2.5.1 | 系统联调 | 2d | 2018-09-19 A | 2018-09-20 A |  | 100% | 2018-09-19 | 2018-09-20 | 2d | finish no earlier than 2018-09-20 | 罗彬; 赵斌; 吴杰 | 36h | 36h | 1,800 | 1,800 | 1,800 |

| ID | WBS | Task | Duration | Start | Finish | Predecessors | Complete | Baseline start | Baseline finish | Baseline duration | Constraint | Resources | Work | Actual work | Cost | Baseline cost | Actual cost |
| --- | --- | --- | --- | --- | --- | --- | --- | --- | --- | --- | --- | --- | --- | --- | --- | --- | --- |
| 110 | 1.4.1.1.3 | **测试申请与准出测试** | 1d | 2018-09-21 A | 2018-09-21 A |  | 100% | 2018-09-21 | 2018-09-21 | 1d |  |  | 63.8h | 63.8h | 3,190 | 3,190 | 3,190 |
| 111 | 1.4.1.1.3.1 | 测试准出 | 1d | 2018-09-21 A | 2018-09-21 A |  | 100% | 2018-09-21 | 2018-09-21 | 1d | finish no earlier than 2018-09-21 | 盛成龙; 李月; 李洋; 郭微 [80%]; 罗彬 [80%]; 桂燕 [80%]; 黄超; 吴杰; 赵斌 | 63.8h | 63.8h | 3,190 | 3,190 | 3,190 |
| 112 | 1.4.1.1.4 | **建立测试版本基线** | 1d | 2018-09-21 A | 2018-09-21 A |  | 100% | 2018-09-21 | 2018-09-21 | 1d |  |  | 0.8h | 0.8h | 40 | 40 | 40 |
| 113 | 1.4.1.1.4.1 | 建立测试基线 | 1d | 2018-09-21 A | 2018-09-21 A |  | 100% | 2018-09-21 | 2018-09-21 | 1d | finish no earlier than 2018-09-21 | 李婷 [10%] | 0.8h | 0.8h | 40 | 40 | 40 |
| 114 | 1.4.1.2 | **P2P系统** | 5d | 2018-09-03 A | 2018-09-07 A |  | 100% | 2018-09-03 | 2018-09-07 | 5d |  |  | 26h | 26h | 1,300 | 1,300 | 1,300 |
| 115 | 1.4.1.2.1 | 获取银行案例数据 | 1d | 2018-09-03 A | 2018-09-03 A |  | 100% | 2018-09-03 | 2018-09-03 | 1d | finish no earlier than 2018-09-03 | 胡文峰 | 4h | 4h | 200 | 200 | 200 |
| 116 | 1.4.1.2.2 | 登录子系统进行练习 | 1d | 2018-09-03 A | 2018-09-03 A |  | 100% | 2018-09-03 | 2018-09-03 | 1d | finish no earlier than 2018-09-03 | 胡文峰 | 4h | 4h | 200 | 200 | 200 |
| 117 | 1.4.1.2.3 | 登陆子系统 自由练习（学生） | 1d | 2018-09-04 A | 2018-09-04 A | 116 | 100% | 2018-09-04 | 2018-09-04 | 1d | finish no earlier than 2018-09-04 | 胡文峰 | 2h | 2h | 100 | 100 | 100 |
| 118 | 1.4.1.2.4 | 登录子系统进行练习(教师) | 1d | 2018-09-04 A | 2018-09-04 A |  | 100% | 2018-09-04 | 2018-09-04 | 1d | finish no earlier than 2018-09-04 | 胡文峰 | 2h | 2h | 100 | 100 | 100 |
| 119 | 1.4.1.2.5 | 学生登录考核 | 1d | 2018-09-05 A | 2018-09-05 A | 118 | 100% | 2018-09-05 | 2018-09-05 | 1d | finish no earlier than 2018-09-05 | 胡文峰 | 2h | 2h | 100 | 100 | 100 |
| 120 | 1.4.1.2.6 | 管理员登录后台 | 1d | 2018-09-05 A | 2018-09-05 A |  | 100% | 2018-09-05 | 2018-09-05 | 1d | finish no earlier than 2018-09-05 | 胡文峰 | 2h | 2h | 100 | 100 | 100 |
| 121 | 1.4.1.2.7 | 登录子系统进行案例管理 | 1d | 2018-09-05 A | 2018-09-05 A |  | 100% | 2018-09-05 | 2018-09-05 | 1d | finish no earlier than 2018-09-05 | 胡文峰 | 2h | 2h | 100 | 100 | 100 |
| 122 | 1.4.1.2.8 | 用户在线积分 | 1d | 2018-09-05 A | 2018-09-05 A |  | 100% | 2018-09-05 | 2018-09-05 | 1d | finish no earlier than 2018-09-05 | 胡文峰 | 2h | 2h | 100 | 100 | 100 |
| 123 | 1.4.1.2.9 | 成绩同步 | 1d | 2018-09-06 A | 2018-09-06 A | 122 | 100% | 2018-09-06 | 2018-09-06 | 1d | finish no earlier than 2018-09-06 | 胡文峰 | 1h | 1h | 50 | 50 | 50 |
| 124 | 1.4.1.2.10 | 案例新增 | 1d | 2018-09-06 A | 2018-09-06 A |  | 100% | 2018-09-06 | 2018-09-06 | 1d | finish no earlier than 2018-09-06 | 胡文峰 | 1h | 1h | 50 | 50 | 50 |
| 125 | 1.4.1.2.11 | 案例修改 | 1d | 2018-09-07 A | 2018-09-07 A | 124 | 100% | 2018-09-07 | 2018-09-07 | 1d | finish no earlier than 2018-09-07 | 胡文峰 | 2h | 2h | 100 | 100 | 100 |
| 126 | 1.4.1.2.12 | 案例删除 | 1d | 2018-09-07 A | 2018-09-07 A |  | 100% | 2018-09-07 | 2018-09-07 | 1d | finish no earlier than 2018-09-07 | 胡文峰 | 2h | 2h | 100 | 100 | 100 |
| 127 | 1.4.1.3 | **财务分析集成** | 16.12d | 2018-08-27 A | 2018-09-18 A |  | 100% | 2018-08-27 | 2018-09-18 | 16.12d |  |  | 198.7h | 198.7h | 9,935 | 9,935 | 9,935 |
| 128 | 1.4.1.3.1 | **功能开发** | 16.12d | 2018-08-27 A | 2018-09-18 A |  | 100% | 2018-08-27 | 2018-09-18 | 16.12d |  |  | 133.7h | 133.7h | 6,685 | 6,685 | 6,685 |
| 129 | 1.4.1.3.1.1 | 子系统后台管理权限拆分（超管&教师） | 5d | 2018-08-27 A | 2018-08-31 A |  | 100% | 2018-08-27 | 2018-08-31 | 5d | finish no earlier than 2018-08-31 | 苗家杭; 宋丽华 | 65h | 65h | 3,250 | 3,250 | 3,250 |
| 130 | 1.4.1.3.1.2 | 超管端-应用后台 | 1d | 2018-09-03 A | 2018-09-03 A |  | 100% | 2018-09-03 | 2018-09-03 | 1d | finish no earlier than 2018-09-03 | 周开杰 | 2h | 2h | 100 | 100 | 100 |
| 131 | 1.4.1.3.1.3 | 超管端-配置应用内容 | 1d | 2018-09-03 A | 2018-09-03 A |  | 100% | 2018-09-03 | 2018-09-03 | 1d | finish no earlier than 2018-09-03 | 周开杰 | 3h | 3h | 150 | 150 | 150 |
| 132 | 1.4.1.3.1.4 | 教师端-后台 | 1d | 2018-09-03 A | 2018-09-03 A |  | 100% | 2018-09-03 | 2018-09-03 | 1d | finish no earlier than 2018-09-03 | 周开杰 | 3h | 3h | 150 | 150 | 150 |
| 133 | 1.4.1.3.1.5 | 教师端-发布个人考核 | 1d | 2018-09-04 A | 2018-09-04 A |  | 100% | 2018-09-04 | 2018-09-04 | 1d | finish no earlier than 2018-09-04 | 周开杰 | 3.5h | 3.5h | 175 | 175 | 175 |
| 134 | 1.4.1.3.1.6 | 教师端-考核列表 | 1d | 2018-09-04 A | 2018-09-04 A |  | 100% | 2018-09-04 | 2018-09-04 | 1d | finish no earlier than 2018-09-04 | 周开杰 | 1.5h | 1.5h | 75 | 75 | 75 |
| 135 | 1.4.1.3.1.7 | 教师端-查看考核成绩 | 1d | 2018-09-04 A | 2018-09-04 A |  | 100% | 2018-09-04 | 2018-09-04 | 1d | finish no earlier than 2018-09-04 | 周开杰 | 2h | 2h | 100 | 100 | 100 |
| 136 | 1.4.1.3.1.8 | 教师端-进入练习 | 1d | 2018-09-05 A | 2018-09-05 A |  | 100% | 2018-09-05 | 2018-09-05 | 1d | finish no earlier than 2018-09-05 | 周开杰 | 1.5h | 1.5h | 75 | 75 | 75 |
| 137 | 1.4.1.3.1.9 | 学生端-考核成绩 | 1d | 2018-09-05 A | 2018-09-05 A |  | 100% | 2018-09-05 | 2018-09-05 | 1d | finish no earlier than 2018-09-05 | 周开杰 | 1.5h | 1.5h | 75 | 75 | 75 |
| 138 | 1.4.1.3.1.10 | 学生端-个人练习 | 1d | 2018-09-06 A | 2018-09-06 A | 137 | 100% | 2018-09-06 | 2018-09-06 | 1d | finish no earlier than 2018-09-06 | 周开杰 | 0.5h | 0.5h | 25 | 25 | 25 |
| 139 | 1.4.1.3.1.11 | 学生端-练习-查看历史成绩 | 1d | 2018-09-07 A | 2018-09-07 A |  | 100% | 2018-09-07 | 2018-09-07 | 1d | finish no earlier than 2018-09-07 | 周开杰 | 4h | 4h | 200 | 200 | 200 |
| 140 | 1.4.1.3.1.12 | 学生端-案例学习 | 1d | 2018-09-07 A | 2018-09-07 A |  | 100% | 2018-09-07 | 2018-09-07 | 1d | finish no earlier than 2018-09-07 | 周开杰 | 3h | 3h | 150 | 150 | 150 |
| 141 | 1.4.1.3.1.13 | 学生端-个人考核 | 1d | 2018-09-10 A | 2018-09-10 A |  | 100% | 2018-09-10 | 2018-09-10 | 1d | finish no earlier than 2018-09-10 | 周开杰 [20%] | 1.6h | 1.6h | 80 | 80 | 80 |
| 142 | 1.4.1.3.1.14 | 学生端-查看实训成绩中的案例内容展示要求 | 1d | 2018-09-10 A | 2018-09-11 A |  | 100% | 2018-09-10 | 2018-09-11 | 1d | start no earlier than 2018-09-10 | 周开杰 [20%] | 1.6h | 1.6h | 80 | 80 | 80 |
| 143 | 1.4.1.3.1.15 | 内置项目接口 | 1d | 2018-09-11 A | 2018-09-12 A | 142 | 100% | 2018-09-11 | 2018-09-12 | 1d | start no earlier than 2018-09-10 | 苗家杭; 宋丽华 | 10h | 10h | 500 | 500 | 500 |
| 144 | 1.4.1.3.1.16 | 应用练习/考核成绩同步接口 | 1d | 2018-09-12 A | 2018-09-13 A | 143 | 100% | 2018-09-12 | 2018-09-13 | 1d | start no earlier than 2018-09-10 | 苗家杭; 宋丽华 | 8h | 8h | 400 | 400 | 400 |
| 145 | 1.4.1.3.1.17 | 进入练习/考核登录接口 | 1d | 2018-09-13 A | 2018-09-14 A | 144 | 100% | 2018-09-13 | 2018-09-14 | 1d | start no earlier than 2018-09-10 | 苗家杭; 宋丽华 | 8h | 8h | 400 | 400 | 400 |
| 146 | 1.4.1.3.1.18 | 创建应用考核接口 | 1d | 2018-09-14 A | 2018-09-17 A | 145 | 100% | 2018-09-14 | 2018-09-17 | 1d | start no earlier than 2018-09-10 | 苗家杭; 宋丽华 | 6h | 6h | 300 | 300 | 300 |
| 147 | 1.4.1.3.1.19 | 考核时间同步接口 | 1d | 2018-09-17 A | 2018-09-18 A | 146 | 100% | 2018-09-17 | 2018-09-18 | 1d | start no earlier than 2018-09-10 | 苗家杭; 宋丽华 | 8h | 8h | 400 | 400 | 400 |

| ID | WBS | Task | Duration | Start | Finish | Predecessors | Complete | Remaining | Baseline start | Baseline finish | Baseline duration | Total slack | Constraint | Resources | Work | Actual work | Cost | Baseline cost | Actual cost |
| --- | --- | --- | --- | --- | --- | --- | --- | --- | --- | --- | --- | --- | --- | --- | --- | --- | --- | --- | --- |
| 148 | 1.4.1.3.2 | **系统联调** | 5d | 2018-09-11 A | 2018-09-17 A |  | 100% |  | 2018-09-11 | 2018-09-17 | 5d |  |  |  | 65h | 65h | 3,250 | 3,250 | 3,250 |
| 149 | 1.4.1.3.2.1 | 系统联调 | 5d | 2018-09-11 A | 2018-09-17 A |  | 100% |  | 2018-09-11 | 2018-09-17 | 5d |  | finish no earlier than 2018-09-17 | 宋丽华; 苗家杭; 周开杰 | 65h | 65h | 3,250 | 3,250 | 3,250 |
| 150 | 1.4.2 | **项目管理与过程监控** | 10d | 2018-09-14 A | 2018-09-28 A |  | 100% |  | 2018-09-14 | 2018-09-28 | 10d |  |  |  | 101.8h | 101.8h | 5,090 | 5,090 | 5,090 |
| 151 | 1.4.2.1 | 风险管理 | 1d | 2018-09-14 A | 2018-09-14 A |  | 100% |  | 2018-09-14 | 2018-09-14 | 1d |  | finish no earlier than 2018-09-14 | 邓建博 [20%] | 1.6h | 1.6h | 80 | 80 | 80 |
| 152 | 1.4.2.2 | 项目周报 | 1d | 2018-09-14 A | 2018-09-14 A |  | 100% |  | 2018-09-14 | 2018-09-14 | 1d |  | finish no earlier than 2018-09-14 | 邓建博 [20%] | 1.6h | 1.6h | 80 | 80 | 80 |
| 153 | 1.4.2.3 | 进度计划更新 | 1d | 2018-09-14 A | 2018-09-14 A |  | 100% |  | 2018-09-14 | 2018-09-14 | 1d |  | finish no earlier than 2018-09-14 | 邓建博 [20%] | 1.6h | 1.6h | 80 | 80 | 80 |
| 154 | 1.4.2.4 | 项目例会 | 1d | 2018-09-14 A | 2018-09-14 A |  | 100% |  | 2018-09-14 | 2018-09-14 | 1d |  | finish no earlier than 2018-09-14 | 周开杰 [10%]; 罗彬 [10%]; 苗家杭 [10%]; 王璐欣 [10%]; 罗政斌 [10%]; 邓建博 [10%]; 陈春 [10%]; 宋丽华 [10%]; 罗媛 [10%]; 郭微 [10%]; 唐倩; 胡文峰; 聂欢欢 | 24h | 24h | 1,200 | 1,200 | 1,200 |
| 155 | 1.4.2.5 | QA审计 | 1d | 2018-09-14 A | 2018-09-14 A |  | 100% |  | 2018-09-14 | 2018-09-14 | 1d |  | finish no earlier than 2018-09-14 | 罗媛 [10%] | 0.8h | 0.8h | 40 | 40 | 40 |
| 156 | 1.4.2.6 | 风险管理 | 1d | 2018-09-21 A | 2018-09-21 A |  | 100% |  | 2018-09-21 | 2018-09-21 | 1d |  | finish no earlier than 2018-09-21 | 邓建博 [20%] | 1.6h | 1.6h | 80 | 80 | 80 |
| 157 | 1.4.2.7 | 项目周报 | 1d | 2018-09-21 A | 2018-09-21 A |  | 100% |  | 2018-09-21 | 2018-09-21 | 1d |  | finish no earlier than 2018-09-21 | 邓建博 [20%] | 1.6h | 1.6h | 80 | 80 | 80 |
| 158 | 1.4.2.8 | 进度计划更新 | 1d | 2018-09-21 A | 2018-09-21 A |  | 100% |  | 2018-09-21 | 2018-09-21 | 1d |  | finish no earlier than 2018-09-21 | 邓建博 [20%] | 1.6h | 1.6h | 80 | 80 | 80 |
| 159 | 1.4.2.9 | 项目例会 | 1d | 2018-09-21 A | 2018-09-21 A |  | 100% |  | 2018-09-21 | 2018-09-21 | 1d |  | finish no earlier than 2018-09-21 | 周开杰 [10%]; 罗彬 [10%]; 苗家杭 [10%]; 王璐欣 [10%]; 罗政斌 [10%]; 邓建博 [10%]; 陈春 [10%]; 宋丽华 [10%]; 罗媛 [10%]; 郭微 [10%]; 唐倩; 胡文峰; 聂欢欢 | 32h | 32h | 1,600 | 1,600 | 1,600 |
| 160 | 1.4.2.10 | QA审计 | 1d | 2018-09-21 A | 2018-09-21 A |  | 100% |  | 2018-09-21 | 2018-09-21 | 1d |  | finish no earlier than 2018-09-21 | 罗媛 [10%] | 0.8h | 0.8h | 40 | 40 | 40 |
| 161 | 1.4.2.11 | 风险管理 | 1d | 2018-09-28 A | 2018-09-28 A |  | 100% |  | 2018-09-28 | 2018-09-28 | 1d |  | finish no earlier than 2018-09-28 | 邓建博 [20%] | 1.6h | 1.6h | 80 | 80 | 80 |
| 162 | 1.4.2.12 | 项目周报 | 1d | 2018-09-28 A | 2018-09-28 A |  | 100% |  | 2018-09-28 | 2018-09-28 | 1d |  | finish no earlier than 2018-09-28 | 邓建博 [20%] | 1.6h | 1.6h | 80 | 80 | 80 |
| 163 | 1.4.2.13 | 进度计划更新 | 1d | 2018-09-28 A | 2018-09-28 A |  | 100% |  | 2018-09-28 | 2018-09-28 | 1d |  | finish no earlier than 2018-09-28 | 邓建博 [20%] | 1.6h | 1.6h | 80 | 80 | 80 |
| 164 | 1.4.2.14 | 项目例会 | 1d | 2018-09-28 A | 2018-09-28 A |  | 100% |  | 2018-09-28 | 2018-09-28 | 1d |  | finish no earlier than 2018-09-28 | 周开杰 [10%]; 罗彬 [10%]; 苗家杭 [10%]; 唐倩; 王璐欣 [10%]; 罗政斌 [10%]; 邓建博 [10%]; 陈春 [10%]; 宋丽华 [10%]; 罗媛 [10%]; 郭微 [10%]; 胡文峰; 聂欢欢 | 29h | 29h | 1,450 | 1,450 | 1,450 |
| 165 | 1.4.2.15 | QA审计 | 1d | 2018-09-28 A | 2018-09-28 A |  | 100% |  | 2018-09-28 | 2018-09-28 | 1d |  | finish no earlier than 2018-09-28 | 罗媛 [10%] | 0.8h | 0.8h | 40 | 40 | 40 |
| 166 | 1.5 | **测试阶段** | 52.12d? | 2018-08-31 A | 2018-11-19 |  | 82% | 9.47d? | 2018-08-31 | 2018-11-02 | 41.12d | 3.88d |  |  | 3594.6h | 2428.1h | 172,650 | 124,535 | 116,685 |
| 167 | 1.5.1 | **审计综合和电子报税** | 35d | 2018-09-26 A | 2018-11-19 |  | 68% | 11.24d | 2018-09-21 | 2018-11-02 | 26.12d | 3.88d |  |  | 2964h | 1869h | 148,200 | 104,500 | 93,450 |
| 168 | 1.5.1.1 | **环境搭建** | 1d | 2018-09-26 A | 2018-09-27 A |  | 100% |  | 2018-09-21 | 2018-09-21 | 1d |  |  |  | 3h | 3h | 150 | 150 | 150 |
| 169 | 1.5.1.1.1 | 测试环境搭建 | 1d | 2018-09-26 A | 2018-09-27 A |  | 100% |  | 2018-09-21 | 2018-09-21 | 1d |  | finish no earlier than 2018-09-21 | 郭微 | 3h | 3h | 150 | 150 | 150 |
| 170 | 1.5.1.2 | **功能测试** | 34d | 2018-09-27 A | 2018-11-19 |  | 82% | 6.07d | 2018-09-25 | 2018-11-02 | 25.12d | 3.88d |  |  | 866h | 720h | 43,300 | 31,200 | 36,000 |
| 171 | 1.5.1.2.1 | 第一轮测试(含准入) | 8d | 2018-09-27 A | 2018-10-12 A |  | 100% |  | 2018-09-25 | 2018-10-08 | 7d |  | finish no earlier than 2018-10-08 | 唐倩; 陈春; 黄琪; 翟平平 | 241h | 241h | 12,050 | 10,450 | 12,050 |
| 172 | 1.5.1.2.2 | 第二轮测试(含准入) | 8d | 2018-10-15 A | 2018-10-25 A | 171 | 100% |  | 2018-10-12 | 2018-10-18 | 5d |  | start no earlier than 2018-10-15 | 唐倩; 陈春; 黄琪; 翟平平 | 255h | 255h | 12,750 | 7,950 | 12,750 |
| 173 | 1.5.1.2.3 | 第三轮测试(含准入) | 7d | 2018-10-29 A | 2018-11-07 A | 172 | 100% |  | 2018-10-22 | 2018-10-25 | 4d |  | start no earlier than 2018-10-29 | 唐倩; 陈春; 黄琪; 翟平平 | 224h | 224h | 11,200 | 6,400 | 11,200 |
| 174 | 1.5.1.2.4 | 第四轮测试(含准入) | 5d | 2018-11-12 | 2018-11-19 | 173 |  |  | 2018-10-29 | 2018-11-02 | 4d | 3.88d | start no earlier than 2018-11-12 | 唐倩; 陈春; 黄琪; 翟平平 | 146h |  | 7,300 | 6,400 |  |

| ID | WBS | Task | Duration | Start | Finish | Predecessors | Complete | Remaining | Baseline start | Baseline finish | Baseline duration | Total slack | Free slack | Constraint | Resources | Work | Actual work | Cost | Baseline cost | Actual cost |
| --- | --- | --- | --- | --- | --- | --- | --- | --- | --- | --- | --- | --- | --- | --- | --- | --- | --- | --- | --- | --- |
| 175 | 1.5.1.3 | **缺陷处理** | 34d | 2018-09-27 A | 2018-11-19 |  | 55% | 15.38d | 2018-09-25 | 2018-11-02 | 25d | 3.88d |  |  |  | 2095h | 1146h | 104,750 | 73,150 | 57,300 |
| 176 | 1.5.1.3.1 | 第一轮缺陷处理 | 9d | 2018-09-27 A | 2018-10-15 A |  | 100% |  | 2018-09-25 | 2018-10-10 | 8d |  |  | start no earlier than 2018-09-25 | 李月; 李洋; 黄超; 罗彬; 郭微; 桂燕; 盛成龙; 吴杰 | 574h | 574h | 28,700 | 25,500 | 28,700 |
| 177 | 1.5.1.3.2 | 第二轮缺陷处理 | 9d | 2018-10-15 A | 2018-10-26 A | 176 | 100% |  | 2018-10-12 | 2018-10-19 | 6d |  |  | start no earlier than 2018-10-15 | 黄超; 李洋; 李月; 罗彬; 郭微; 桂燕; 盛成龙; 吴杰 | 572h | 572h | 28,600 | 19,000 | 28,600 |
| 178 | 1.5.1.3.3 | 第三轮缺陷处理 | 9.88d | 2018-10-29 | 2018-11-09 | 177 |  |  | 2018-10-22 | 2018-10-26 | 5d | 4d | 0.12d | finish no earlier than 2018-11-09 | 黄超; 李洋; 李月; 罗彬; 郭微; 桂燕; 盛成龙; 吴杰 | 629h |  | 31,450 | 15,850 |  |
| 179 | 1.5.1.3.4 | 第四轮缺陷处理 | 5d | 2018-11-12 | 2018-11-19 | 178 |  |  | 2018-10-29 | 2018-11-02 | 4d | 3.88d |  | start no earlier than 2018-11-12 | 黄超; 李洋; 李月; 罗彬; 郭微; 桂燕; 盛成龙; 吴杰 | 320h |  | 16,000 | 12,800 |  |
| 180 | 1.5.2 | **财务分析** | 12d | 2018-09-14 A | 2018-09-30 A |  | 100% |  | 2018-09-14 | 2018-09-30 | 12d |  |  |  |  | 270.9h | 270.9h | 13,545 | 13,545 | 13,545 |
| 181 | 1.5.2.1 | **环境搭建** | 1d | 2018-09-14 A | 2018-09-14 A |  | 100% |  | 2018-09-14 | 2018-09-14 | 1d |  |  |  |  | 3.4h | 3.4h | 170 | 170 | 170 |
| 182 | 1.5.2.1.1 | 测试环境搭建 | 1d | 2018-09-14 A | 2018-09-14 A |  | 100% |  | 2018-09-14 | 2018-09-14 | 1d |  |  | finish no earlier than 2018-09-14 | 周开杰 [30%]; 苗家杭 | 3.4h | 3.4h | 170 | 170 | 170 |
| 183 | 1.5.2.2 | **功能测试** | 10d | 2018-09-18 A | 2018-09-30 A |  | 100% |  | 2018-09-18 | 2018-09-30 | 10d |  |  |  |  | 33h | 33h | 1,650 | 1,650 | 1,650 |
| 184 | 1.5.2.2.1 | 第一轮测试(含准入) | 3d | 2018-09-18 A | 2018-09-20 A |  | 100% |  | 2018-09-18 | 2018-09-20 | 3d |  |  | finish no earlier than 2018-09-20 | 严燕 | 24h | 24h | 1,200 | 1,200 | 1,200 |
| 185 | 1.5.2.2.2 | 第二轮测试(含准入) | 3d | 2018-09-25 A | 2018-09-27 A |  | 100% |  | 2018-09-25 | 2018-09-27 | 3d |  |  | finish no earlier than 2018-09-27 | 严燕 | 8.6h | 8.6h | 430 | 430 | 430 |
| 186 | 1.5.2.2.3 | 回归测试 | 1d | 2018-09-30 A | 2018-09-30 A |  | 100% |  | 2018-09-30 | 2018-09-30 | 1d |  |  | finish no earlier than 2018-09-30 | 严燕 | 0.4h | 0.4h | 20 | 20 | 20 |
| 187 | 1.5.2.3 | **缺陷处理** | 10d | 2018-09-18 A | 2018-09-30 A |  | 100% |  | 2018-09-18 | 2018-09-30 | 10d |  |  |  |  | 156.4h | 156.4h | 7,820 | 7,820 | 7,820 |
| 188 | 1.5.2.3.1 | 第一轮缺陷处理 | 4d | 2018-09-18 A | 2018-09-21 A |  | 100% |  | 2018-09-18 | 2018-09-21 | 4d |  |  | finish no earlier than 2018-09-21 | 宋丽华; 周开杰; 苗家杭 | 79h | 79h | 3,950 | 3,950 | 3,950 |
| 189 | 1.5.2.3.2 | 第二轮缺陷处理 | 4d | 2018-09-25 A | 2018-09-28 A |  | 100% |  | 2018-09-25 | 2018-09-28 | 4d |  |  | finish no earlier than 2018-09-28 | 宋丽华; 周开杰; 苗家杭 | 54.2h | 54.2h | 2,710 | 2,710 | 2,710 |
| 190 | 1.5.2.3.3 | 回归测试问题处理 | 2d | 2018-09-29 A | 2018-09-30 A | 189 | 100% |  | 2018-09-29 | 2018-09-30 | 2d |  |  | finish no earlier than 2018-09-30 | 宋丽华; 周开杰; 苗家杭 | 23.2h | 23.2h | 1,160 | 1,160 | 1,160 |
| 191 | 1.5.2.4 | **性能测试** | 7d | 2018-09-21 A | 2018-09-30 A |  | 100% |  | 2018-09-21 | 2018-09-30 | 7d |  |  |  |  | 78.1h | 78.1h | 3,905 | 3,905 | 3,905 |
| 192 | 1.5.2.4.1 | **财务分析** | 7d | 2018-09-21 A | 2018-09-30 A |  | 100% |  | 2018-09-21 | 2018-09-30 | 7d |  |  |  |  | 78.1h | 78.1h | 3,905 | 3,905 | 3,905 |
| 193 | 1.5.2.4.1.1 | 性能测试 | 7d | 2018-09-21 A | 2018-09-30 A |  | 100% |  | 2018-09-21 | 2018-09-30 | 7d |  |  | finish no earlier than 2018-09-30 | 严燕 | 33.4h | 33.4h | 1,670 | 1,670 | 1,670 |
| 194 | 1.5.2.4.1.2 | 系统调优 | 7d | 2018-09-21 A | 2018-09-30 A |  | 100% |  | 2018-09-21 | 2018-09-30 | 7d |  |  | finish no earlier than 2018-09-30 | 苗家杭; 周开杰 | 44.7h | 44.7h | 2,235 | 2,235 | 2,235 |
| 195 | 1.5.3 | **P2P系统** | 12d | 2018-08-31 A | 2018-09-17 A |  | 100% |  | 2018-08-31 | 2018-09-17 | 12d |  |  |  |  | 96.2h | 96.2h | 4,810 | 4,810 | 4,810 |
| 196 | 1.5.3.1 | **环境搭建** | 1d | 2018-08-31 A | 2018-08-31 A |  | 100% |  | 2018-08-31 | 2018-08-31 | 1d |  |  |  |  | 4.2h | 4.2h | 210 | 210 | 210 |
| 197 | 1.5.3.1.1 | 测试环境搭建 | 1d | 2018-08-31 A | 2018-08-31 A |  | 100% |  | 2018-08-31 | 2018-08-31 | 1d |  |  | finish no earlier than 2018-08-31 | 胡文峰 | 4.2h | 4.2h | 210 | 210 | 210 |
| 198 | 1.5.3.2 | **功能测试** | 6d | 2018-09-10 A | 2018-09-17 A |  | 100% |  | 2018-09-10 | 2018-09-17 | 6d |  |  |  |  | 48h | 48h | 2,400 | 2,400 | 2,400 |
| 199 | 1.5.3.2.1 | 第一轮测试(含准入) | 3d | 2018-09-10 A | 2018-09-12 A |  | 100% |  | 2018-09-10 | 2018-09-12 | 3d |  |  | finish no earlier than 2018-09-12 | 严燕 | 24h | 24h | 1,200 | 1,200 | 1,200 |
| 200 | 1.5.3.2.2 | 第二轮测试(含准入) | 2d | 2018-09-13 A | 2018-09-14 A | 199 | 100% |  | 2018-09-13 | 2018-09-14 | 2d |  |  | finish no earlier than 2018-09-14 | 严燕 | 16h | 16h | 800 | 800 | 800 |
| 201 | 1.5.3.2.3 | 回归测试 | 1d | 2018-09-17 A | 2018-09-17 A | 200 | 100% |  | 2018-09-17 | 2018-09-17 | 1d |  |  | finish no earlier than 2018-09-17 | 严燕 | 8h | 8h | 400 | 400 | 400 |

| ID | WBS | Task | Type | Duration | Start | Finish | Complete | Remaining | Baseline start | Baseline finish | Baseline duration | Total slack | Constraint | Resources | Work | Actual work | Cost | Baseline cost | Actual cost |
| --- | --- | --- | --- | --- | --- | --- | --- | --- | --- | --- | --- | --- | --- | --- | --- | --- | --- | --- | --- |
| 202 | 1.5.3.3 | **缺陷处理** |  | 6d | 2018-09-10 A | 2018-09-17 A | 100% |  | 2018-09-10 | 2018-09-17 | 6d |  |  |  | 44h | 44h | 2,200 | 2,200 | 2,200 |
| 203 | 1.5.3.3.1 | 第一轮缺陷处理 |  | 3d | 2018-09-10 A | 2018-09-12 A | 100% |  | 2018-09-10 | 2018-09-12 | 3d |  | finish no earlier than 2018-09-12 | 胡文峰 | 24h | 24h | 1,200 | 1,200 | 1,200 |
| 204 | 1.5.3.3.2 | 第二轮缺陷处理 |  | 2d | 2018-09-13 A | 2018-09-14 A | 100% |  | 2018-09-13 | 2018-09-14 | 2d |  | finish no earlier than 2018-09-14 | 胡文峰 | 12h | 12h | 600 | 600 | 600 |
| 205 | 1.5.3.3.3 | 回归测试问题处理 |  | 1d | 2018-09-17 A | 2018-09-17 A | 100% |  | 2018-09-17 | 2018-09-17 | 1d |  | finish no earlier than 2018-09-17 | 胡文峰 | 8h | 8h | 400 | 400 | 400 |
| 206 | 1.5.4 | **项目管理与过程监控** |  | 26d? | 2018-10-12 A | 2018-11-16 | 83% | 4.33d? | 2018-10-12 | 2018-10-26 | 11d | 0d |  |  | 263.5h | 192h | 6,095 | 1,680 | 4,880 |
| 207 | 1.5.4.1 | 风险管理 |  | 1d | 2018-10-12 A | 2018-10-12 A | 100% |  | 2018-10-12 | 2018-10-12 | 1d |  | finish no earlier than 2018-10-12 | 邓建博 [10%] | 0.8h | 0.8h | 40 | 40 | 40 |
| 208 | 1.5.4.2 | 项目周报 |  | 1d | 2018-10-12 A | 2018-10-12 A | 100% |  | 2018-10-12 | 2018-10-12 | 1d |  | finish no earlier than 2018-10-12 | 邓建博 [10%] | 0.8h | 0.8h | 40 | 40 | 40 |
| 209 | 1.5.4.3 | 进度计划更新 |  | 1d | 2018-10-12 A | 2018-10-12 A | 100% |  | 2018-10-12 | 2018-10-12 | 1d |  | finish no earlier than 2018-10-12 | 邓建博 [10%] | 0.8h | 0.8h | 40 | 40 | 40 |
| 210 | 1.5.4.4 | 项目例会 |  | 1d | 2018-10-12 A | 2018-10-12 A | 100% |  | 2018-10-12 | 2018-10-12 | 1d |  | finish no earlier than 2018-10-12 | 周开杰 [10%]; 罗彬 [10%]; 苗家杭 [10%]; 王璐欣 [10%]; 罗政斌 [10%]; 邓建博 [10%]; 陈春 [10%]; 宋丽华 [10%]; 罗媛 [10%]; 郭微 [10%] | 8h | 8h | 400 | 400 | 400 |
| 211 | 1.5.4.5 | QA审计 |  | 1d | 2018-10-12 A | 2018-10-12 A | 100% |  | 2018-10-12 | 2018-10-12 | 1d |  | finish no earlier than 2018-10-12 | 罗媛 [10%] | 0.8h | 0.8h | 40 | 40 | 40 |
| 212 | 1.5.4.6 | 风险管理 |  | 1d | 2018-10-19 A | 2018-10-19 A | 100% |  | 2018-10-19 | 2018-10-19 | 1d |  | finish no earlier than 2018-10-19 | 邓建博 [10%] | 0.8h | 0.8h | 40 | 40 | 40 |
| 213 | 1.5.4.7 | 项目周报 |  | 1d | 2018-10-19 A | 2018-10-19 A | 100% |  | 2018-10-19 | 2018-10-19 | 1d |  | finish no earlier than 2018-10-19 | 邓建博 [10%] | 0.8h | 0.8h | 40 | 40 | 40 |
| 214 | 1.5.4.8 | 进度计划更新 |  | 1d | 2018-10-19 A | 2018-10-19 A | 100% |  | 2018-10-19 | 2018-10-19 | 1d |  | finish no earlier than 2018-10-19 | 邓建博 [10%] | 0.8h | 0.8h | 40 | 40 | 40 |
| 215 | 1.5.4.9 | 项目例会 |  | 1d | 2018-10-19 A | 2018-10-19 A | 100% |  | 2018-10-19 | 2018-10-19 | 1d |  | finish no earlier than 2018-10-19 | 周开杰 [10%]; 罗彬 [10%]; 苗家杭 [10%]; 王璐欣 [10%]; 罗政斌 [10%]; 邓建博 [10%]; 陈春 [10%]; 宋丽华 [10%]; 罗媛 [10%]; 郭微 [10%] | 8h | 8h | 400 | 400 | 400 |
| 216 | 1.5.4.10 | QA审计 |  | 1d | 2018-10-19 A | 2018-10-19 A | 100% |  | 2018-10-19 | 2018-10-19 | 1d |  | finish no earlier than 2018-10-19 | 罗媛 [10%] | 0.8h | 0.8h | 40 | 40 | 40 |
| 217 | 1.5.4.11 | 风险管理 |  | 1d | 2018-10-26 A | 2018-10-26 A | 100% |  | 2018-10-26 | 2018-10-26 | 1d |  | finish no earlier than 2018-10-26 | 邓建博 [10%] | 0.8h | 0.8h | 40 | 40 | 40 |
| 218 | 1.5.4.12 | 项目周报 |  | 1d | 2018-10-26 A | 2018-10-26 A | 100% |  | 2018-10-26 | 2018-10-26 | 1d |  | finish no earlier than 2018-10-26 | 邓建博 [10%] | 0.8h | 0.8h | 40 | 40 | 40 |
| 219 | 1.5.4.13 | 进度计划更新 |  | 1d | 2018-10-26 A | 2018-10-26 A | 100% |  | 2018-10-26 | 2018-10-26 | 1d |  | finish no earlier than 2018-10-26 | 邓建博 [10%] | 0.8h | 0.8h | 40 | 40 | 40 |
| 220 | 1.5.4.14 | 项目例会 |  | 1d | 2018-10-26 A | 2018-10-26 A | 100% |  | 2018-10-26 | 2018-10-26 | 1d |  | finish no earlier than 2018-10-26 | 周开杰 [10%]; 罗彬 [10%]; 苗家杭 [10%]; 王璐欣 [10%]; 罗政斌 [10%]; 邓建博 [10%]; 陈春 [10%]; 宋丽华 [10%]; 罗媛 [10%]; 郭微 [10%] | 8h | 8h | 400 | 400 | 400 |
| 221 | 1.5.4.15 | QA审计 |  | 1d | 2018-10-26 A | 2018-10-26 A | 100% |  | 2018-10-26 | 2018-10-26 | 1d |  | finish no earlier than 2018-10-26 | 罗媛 [10%] | 0.8h | 0.8h | 40 | 40 | 40 |
| 222 | 1.5.4.16 | 风险管理及项目周报 | manual | 1d | 2018-11-02 A | 2018-11-02 A | 100% |  |  |  |  |  |  | 邓建博 [20%] | 1.6h | 1.6h | 80 |  | 80 |
| 223 | 1.5.4.17 | 需求跟踪矩阵更新 | manual | 1d | 2018-11-02 A | 2018-11-02 A | 100% |  |  |  |  |  |  | 王璐欣 | 8h | 8h | 400 |  | 400 |
| 224 | 1.5.4.18 | 进度计划更新及度量分析 | manual | 1d | 2018-11-02 A | 2018-11-02 A | 100% |  |  |  |  |  |  | 邓建博 [20%] | 1.6h | 1.6h | 80 |  | 80 |
| 225 | 1.5.4.19 | 项目例会 | manual | 1d | 2018-11-02 A | 2018-11-02 A | 100% |  |  |  |  |  |  | 周开杰 [10%]; 王博海 [10%]; 黄琪 [10%]; 操邵平; 王璐欣 [10%]; 刘珊珊 [10%]; 邓建博 [10%]; 金灼 [10%]; 张倩倩 [10%]; 夏丽 [10%]; 李燃 [10%]; 罗媛 [10%]; 徐欢 [10%]; 吕奎 [10%]; 房雷; 胡文峰; 李奕霏; 刘燕燕; 唐倩; 夏文超 | 66.4h | 66.4h | 1,000 |  | 1,000 |
| 226 | 1.5.4.20 | QA审计 | manual | 1d | 2018-11-02 A | 2018-11-02 A | 100% |  |  |  |  |  |  | 罗媛 [10%]; 金灼 [10%] | 1.6h | 1.6h | 40 |  | 40 |
| 227 | 1.5.4.21 | 风险管理及项目周报 | manual | 1d | 2018-11-09 A | 2018-11-09 A | 100% |  |  |  |  |  |  | 邓建博 [20%] | 1.6h | 1.6h | 80 |  | 80 |
| 228 | 1.5.4.22 | 需求跟踪矩阵更新 | manual | 1d | 2018-11-09 A | 2018-11-09 A | 100% |  |  |  |  |  |  | 王璐欣 | 8h | 8h | 400 |  | 400 |
| 229 | 1.5.4.23 | 进度计划更新及度量分析 | manual | 1d | 2018-11-09 A | 2018-11-09 A | 100% |  |  |  |  |  |  | 邓建博 [20%] | 1.6h | 1.6h | 80 |  | 80 |
| 230 | 1.5.4.24 | 项目例会 | manual | 1d | 2018-11-09 A | 2018-11-09 A | 100% |  |  |  |  |  |  | 周开杰 [10%]; 王博海 [10%]; 黄琪 [10%]; 操邵平; 王璐欣 [10%]; 刘珊珊 [10%]; 邓建博 [10%]; 金灼 [10%]; 张倩倩 [10%]; 夏丽 [10%]; 李燃 [10%]; 罗媛 [10%]; 徐欢 [10%]; 吕奎 [10%]; 房雷; 胡文峰; 李奕霏; 刘燕燕; 唐倩; 夏文超 | 66.4h | 66.4h | 1,000 |  | 1,000 |
| 231 | 1.5.4.25 | QA审计 | manual | 1d | 2018-11-09 A | 2018-11-09 A | 100% |  |  |  |  |  |  | 罗媛 [10%]; 金灼 [10%] | 1.6h | 1.6h | 40 |  | 40 |
| 232 | 1.5.4.26 | 风险管理及项目周报 | manual | 1d? | 2018-11-16 | 2018-11-16 |  |  |  |  |  |  |  | 邓建博 [20%] | 1.6h |  | 80 |  |  |
| 233 | 1.5.4.27 | 需求跟踪矩阵更新 | manual | 1d | 2018-11-16 | 2018-11-16 |  |  |  |  |  |  |  | 王璐欣 [20%] | 1.1h |  | 55 |  |  |
| 234 | 1.5.4.28 | 进度计划更新及度量分析 | manual | 1d | 2018-11-16 | 2018-11-16 |  |  |  |  |  |  |  | 邓建博 [20%] | 1.6h |  | 80 |  |  |
| 235 | 1.5.4.29 | 项目例会 | manual | 1d | 2018-11-16 | 2018-11-16 |  |  |  |  |  |  |  | 周开杰 [10%]; 王博海 [10%]; 黄琪 [10%]; 操邵平; 刘珊珊 [10%]; 邓建博 [10%]; 金灼 [10%]; 张倩倩 [10%]; 夏丽 [10%]; 李燃 [10%]; 罗媛 [10%]; 徐欢 [10%]; 吕奎 [10%]; 房雷; 胡文峰; 李奕霏; 刘燕燕; 唐倩; 夏文超 | 65.6h |  | 960 |  |  |
| 236 | 1.5.4.30 | QA审计 | manual | 1d | 2018-11-16 | 2018-11-16 |  |  |  |  |  |  |  | 罗媛 [10%]; 金灼 [10%] | 1.6h |  | 40 |  |  |

| ID | WBS | Task | Duration | Start | Finish | Baseline start | Baseline finish | Baseline duration | Total slack | Constraint | Resources | Work | Cost | Baseline cost |
| --- | --- | --- | --- | --- | --- | --- | --- | --- | --- | --- | --- | --- | --- | --- |
| 237 | 1.6 | **验收阶段** | 2.88d | 2018-11-20 | 2018-11-22 | 2018-11-02 | 2018-11-06 | 3d | 0d |  |  | 41.02h | 2,051.25 | 1,750 |
| 238 | 1.6.1 | **测试结论** | 2d | 2018-11-20 | 2018-11-22 | 2018-11-02 | 2018-11-02 | 1d | 0.88d |  |  | 15.12h | 756.25 | 350 |
| 239 | 1.6.1.1 | 测试结论输出 | 2d | 2018-11-20 | 2018-11-22 | 2018-11-02 | 2018-11-02 | 1d | 0.88d | start no earlier than 2018-11-20 | 唐倩 | 15.12h | 756.25 | 350 |
| 240 | 1.6.2 | **组织产品验收** | 2d | 2018-11-20 | 2018-11-22 | 2018-11-05 | 2018-11-06 | 2d | 0.88d |  |  | 16h | 800 | 800 |
| 241 | 1.6.2.1 | 产品验收测试 | 2d | 2018-11-20 | 2018-11-22 | 2018-11-05 | 2018-11-06 | 2d | 0.88d | start no earlier than 2018-11-20 | 王璐欣 | 16h | 800 | 800 |
| 242 | 1.6.3 | **项目管理与过程监控** | 1d | 2018-11-22 | 2018-11-22 | 2018-11-02 | 2018-11-02 | 1d | 0d |  |  | 9.9h | 495 | 600 |
| 243 | 1.6.3.1 | 风险管理 | 1d | 2018-11-22 | 2018-11-22 | 2018-11-02 | 2018-11-02 | 1d | 0d | finish no earlier than 2018-11-22 | 邓建博 [10%] | 0.8h | 40 | 40 |
| 244 | 1.6.3.2 | 项目周报 | 0.88d | 2018-11-22 | 2018-11-22 | 2018-11-02 | 2018-11-02 | 1d | 0d | finish no earlier than 2018-11-22 | 邓建博 [10%] | 0.7h | 35 | 40 |
| 245 | 1.6.3.3 | 进度计划更新 | 0.88d | 2018-11-22 | 2018-11-22 | 2018-11-02 | 2018-11-02 | 1d | 0d | finish no earlier than 2018-11-22 | 邓建博 [10%] | 0.7h | 35 | 40 |
| 246 | 1.6.3.4 | 项目例会 | 0.88d | 2018-11-22 | 2018-11-22 | 2018-11-02 | 2018-11-02 | 1d | 0d | finish no earlier than 2018-11-22 | 周开杰 [10%]; 罗彬 [10%]; 苗家杭 [10%]; 罗政斌 [10%]; 邓建博 [10%]; 陈春 [10%]; 宋丽华 [10%]; 罗媛 [10%]; 郭微 [10%] | 6.3h | 315 | 400 |
| 247 | 1.6.3.5 | 配置基线创建 | 0.88d | 2018-11-22 | 2018-11-22 | 2018-11-02 | 2018-11-02 | 1d | 0d | finish no earlier than 2018-11-22 | 李婷 [10%] | 0.7h | 35 | 40 |
| 248 | 1.6.3.6 | QA审计 | 0.88d | 2018-11-22 | 2018-11-22 | 2018-11-02 | 2018-11-02 | 1d | 0d | finish no earlier than 2018-11-22 | 罗媛 [10%] | 0.7h | 35 | 40 |
