# XX项目日程表（迭代）

Schedule from MS Project, 2014-11-28 to 2018-10-31, status date 2018-10-31, costs in ¥, A marks actual dates.

## Calendars

- 标准: Mon-Fri 08:00-12:00, 13:00-17:00; Sat-Sun off. Exceptions (off unless hours are given): 2018-09-24 (中秋), 2018-09-29 to 2018-09-30 08:00-12:00, 13:00-17:00 (国庆补班), 2018-10-01 to 2018-10-05 (国庆), 2018-10-20 08:00-12:00, 13:00-17:00 (加班).

## Resources

| Resource | Rate |
| --- | --- |
| 赵俊1 | 50 |
| 产品人员 |  |
| 所有项目成员 |  |
| 客户代表 |  |
| 吴赛清 | 50 |
| 周小军 | 50 |
| 商务BD |  |
| 市场营销 |  |
| 事业部领导 |  |
| 测试经理 |  |
| UED人员 |  |
| 李婷 | 50 |
| 技术专家 |  |
| PMO | 50 |
| 叶苏莲 | 50 |
| 吴佳红 | 50 |
| EPG |  |
| 吴可帆 | 50 |
| 内部客户代表 |  |
| 事业部总经理 |  |
| 运维人员 |  |
| 外部客户代表 |  |
| 严晓婷 | 50 |
| 骆宣霏 | 50 |
| 张涵 | 50 |
| 司乾义 | 50 |
| 刘艳玲 | 50 |
| 陈都 | 50 |

## Schedule

| ID | WBS | Task | Type | Duration | Start | Finish | Predecessors | Complete | Actual start | Baseline start | Baseline finish | Baseline duration | Constraint | Resources | Work | Actual work | Cost | Baseline cost | Actual cost |
| --- | --- | --- | --- | --- | --- | --- | --- | --- | --- | --- | --- | --- | --- | --- | --- | --- | --- | --- | --- |
| 1 | 1 | **国泰安机械基础VR智慧课堂软件V1.2项目日程表** |  | 27d | 2018-09-20 | 2018-10-31 A |  | 100% | 2014-11-28 | 2018-09-20 | 2018-10-31 | 27d |  |  | 1596.8h | 1596.8h | 79,840 | 79,840 | 79,840 |
| 2 | 1.1 | **产品立项阶段** |  | 4d | 2018-09-20 A | 2018-09-26 A |  | 100% |  | 2018-09-20 | 2018-09-26 | 4d |  |  | 251.2h | 251.2h | 12,560 | 12,560 | 12,560 |
| 3 | 1.1.1 | 产品立项审批 |  | 1d | 2018-09-20 A | 2018-09-20 A |  | 100% |  | 2018-09-20 | 2018-09-20 | 1d | start no earlier than 2018-09-20 | 赵俊1 [30%] | 8h | 8h | 400 | 400 | 400 |
| 4 | 1.1.2 | 需求分析与调研 |  | 3d | 2018-09-20 A | 2018-09-25 A |  | 100% |  | 2018-09-20 | 2018-09-25 | 3d | start no earlier than 2018-09-20 | 赵俊1 | 24h | 24h | 1,200 | 1,200 | 1,200 |
| 5 | 1.1.3 | 编写《客户需求列表》 |  | 2d | 2018-09-20 A | 2018-09-21 A |  | 100% |  | 2018-09-20 | 2018-09-21 | 2d |  | 赵俊1 | 16h | 16h | 800 | 800 | 800 |
| 6 | 1.1.4 | 《客户需求列表》评审 |  | 1d | 2018-09-25 A | 2018-09-25 A |  | 100% |  | 2018-09-25 | 2018-09-25 | 1d | start no earlier than 2018-09-24 | 吴佳红 [20%]; 吴可帆 [20%]; 吴赛清 [20%]; 严晓婷 [20%]; 张涵 [20%]; 赵俊1 [20%]; 周小军 [20%]; 李婷 [20%]; 刘艳玲 [20%]; 骆宣霏 [20%]; 司乾义 [20%]; 叶苏莲 [20%]; 陈都 [20%] | 20.8h | 20.8h | 1,040 | 1,040 | 1,040 |
| 7 | 1.1.5 | 原型评审 |  | 1d | 2018-09-25 A | 2018-09-25 A |  | 100% |  | 2018-09-25 | 2018-09-25 | 1d | start no earlier than 2018-09-24 | 吴佳红 [20%]; 吴可帆 [20%]; 吴赛清 [20%]; 严晓婷 [20%]; 张涵 [20%]; 赵俊1 [20%]; 周小军 [20%]; 李婷 [20%]; 刘艳玲 [20%]; 骆宣霏 [20%]; 司乾义 [20%]; 叶苏莲 [20%]; 陈都 [20%] | 20.8h | 20.8h | 1,040 | 1,040 | 1,040 |
| 8 | 1.1.6 | 配置《产品流程配置表》 |  | 1d | 2018-09-25 A | 2018-09-25 A | 5 | 100% |  | 2018-09-25 | 2018-09-25 | 1d |  | 赵俊1; 吴赛清 | 16h | 16h | 800 | 800 | 800 |
| 9 | 1.1.7 | 工作量估算及分配 | manual | 1d | 2018-09-25 A | 2018-09-25 A |  | 100% |  | 2018-09-25 | 2018-09-25 | 1d |  | 吴可帆 [80%]; 吴佳红 [80%]; 骆宣霏 [80%]; 严晓婷 [80%]; 张涵 [80%]; 周小军 [80%] | 48h | 48h | 2,400 | 2,400 | 2,400 |
| 10 | 1.1.8 | 编写《项目计划说明书》 | manual | 1d | 2018-09-25 A | 2018-09-25 A |  | 100% |  | 2018-09-25 | 2018-09-25 | 1d |  | 叶苏莲 | 8h | 8h | 400 | 400 | 400 |
| 11 | 1.1.9 | 评审《项目计划说明书》 | manual | 1d | 2018-09-26 A | 2018-09-26 A |  | 100% |  | 2018-09-26 | 2018-09-26 | 1d |  | 叶苏莲 [20%]; 吴佳红 [20%]; 吴可帆 [20%]; 吴赛清 [20%]; 严晓婷 [20%]; 张涵 [20%]; 赵俊1 [20%]; 周小军 [20%]; 李婷 [20%]; 刘艳玲 [20%]; 骆宣霏 [20%]; 司乾义 [20%]; 陈都 [20%] | 20.8h | 20.8h | 1,040 | 1,040 | 1,040 |
| 12 | 1.1.10 | 度量预测 | manual | 1d | 2018-09-26 A | 2018-09-26 A |  | 100% |  | 2018-09-26 | 2018-09-26 | 1d |  | 叶苏莲 [80%] | 8h | 8h | 400 | 400 | 400 |
| 13 | 1.1.11 | 初始化配置库 | manual | 1d | 2018-09-24 A | 2018-09-24 A |  | 100% |  | 2018-09-24 | 2018-09-24 | 1d |  | 李婷 [20%] | 1.6h | 1.6h | 80 | 80 | 80 |
| 14 | 1.1.12 | 建立《QA检查计划》 | manual | 1d | 2018-09-24 A | 2018-09-24 A |  | 100% |  | 2018-09-24 | 2018-09-24 | 1d |  | 吴赛清 [20%] | 1.6h | 1.6h | 80 | 80 | 80 |
| 15 | 1.1.13 | 编制《流程配置表》 | manual | 1d | 2018-09-25 A | 2018-09-25 A |  | 100% |  | 2018-09-25 | 2018-09-25 | 1d |  | 叶苏莲 [50%]; 吴赛清 [50%] | 16h | 16h | 800 | 800 | 800 |
| 16 | 1.1.14 | 《流程配置表》评审与审批 | manual | 1d | 2018-09-26 A | 2018-09-26 A |  | 100% |  | 2018-09-26 | 2018-09-26 | 1d |  | 吴赛清 [30%]; 叶苏莲 [30%]; 赵俊1 [30%]; 吴可帆 [30%] | 24h | 24h | 1,200 | 1,200 | 1,200 |
| 17 | 1.1.15 | 组件项目团队 | manual | 1d | 2018-09-26 A | 2018-09-26 A |  | 100% |  | 2018-09-26 | 2018-09-26 | 1d |  | 叶苏莲 [80%] | 8h | 8h | 400 | 400 | 400 |
| 18 | 1.1.16 | 构建《工作环境标准》 | manual | 1d | 2018-09-26 A | 2018-09-26 A |  | 100% |  | 2018-09-26 | 2018-09-26 | 1d |  | 叶苏莲 [20%] | 8h | 8h | 400 | 400 | 400 |
| 19 | 1.1.17 | 编写《配置项识别表》 | manual | 1d | 2018-09-26 A | 2018-09-26 A |  | 100% |  | 2018-09-26 | 2018-09-26 | 1d |  | 李婷 [20%] | 1.6h | 1.6h | 80 | 80 | 80 |
| 20 | 1.2 | **迭代阶段(多轮迭代请复制此阶段)** |  | 27d | 2018-09-20 A | 2018-10-31 A |  | 100% |  | 2018-09-20 | 2018-10-31 | 27d |  |  | 1223.2h | 1223.2h | 61,160 | 61,160 | 61,160 |
| 21 | 1.2.1 | 度量分析与预测 | manual | 1d | 2018-09-27 A | 2018-09-27 A |  | 100% |  | 2018-09-27 | 2018-09-27 | 1d |  | 叶苏莲 [80%] | 8h | 8h | 400 | 400 | 400 |
| 22 | 1.2.2 | 项目量化管理培训 | manual | 1d | 2018-09-28 A | 2018-09-28 A |  | 100% |  | 2018-09-28 | 2018-09-28 | 1d |  | 叶苏莲 [20%]; 吴佳红 [20%]; 吴可帆 [20%]; 吴赛清 [20%]; 严晓婷 [20%]; 张涵 [20%]; 赵俊1 [20%]; 周小军 [20%]; 李婷 [20%]; 刘艳玲 [20%]; 骆宣霏 [20%]; 司乾义 [20%]; 陈都 [20%] | 20.8h | 20.8h | 1,040 | 1,040 | 1,040 |
| 23 | 1.2.3 | 编制《日程表》 |  | 1d? | 2018-09-26 A | 2018-09-26 A |  | 100% |  | 2018-09-26 | 2018-09-26 | 1d? | start no earlier than 2018-09-26 | 叶苏莲 | 8h | 8h | 400 | 400 | 400 |
| 24 | 1.2.4 | 《日程表》评审 |  | 1d | 2018-09-27 A | 2018-09-27 A |  | 100% |  | 2018-09-27 | 2018-09-27 | 1d | start no earlier than 2018-09-27 | 陈都 [20%]; 李婷 [20%]; 刘艳玲 [20%]; 骆宣霏 [20%]; 司乾义 [20%]; 吴佳红 [20%]; 吴可帆 [20%]; 吴赛清 [20%]; 严晓婷 [20%]; 叶苏莲 [20%]; 张涵 [20%]; 赵俊1 [20%]; 周小军 [20%] | 20.8h | 20.8h | 1,040 | 1,040 | 1,040 |
| 25 | 1.2.5 | 编写系统设计说明书 |  | 1d? | 2018-09-27 A | 2018-09-27 A |  | 100% |  | 2018-09-27 | 2018-09-27 | 1d? | start no earlier than 2018-09-26 | 周小军 | 8h | 8h | 400 | 400 | 400 |
| 26 | 1.2.6 | 评审系统设计说明书 |  | 1d | 2018-09-28 A | 2018-09-28 A |  | 100% |  | 2018-09-28 | 2018-09-28 | 1d | start no earlier than 2018-09-27 | 陈都 [20%]; 李婷 [20%]; 刘艳玲 [20%]; 骆宣霏 [20%]; 司乾义 [20%]; 吴佳红 [20%]; 吴可帆 [20%]; 吴赛清 [20%]; 严晓婷 [20%]; 叶苏莲 [20%]; 张涵 [20%]; 赵俊1 [20%]; 周小军 [20%] | 20.8h | 20.8h | 1,040 | 1,040 | 1,040 |
| 27 | 1.2.7 | 编写《测试需求分析报告》 | manual | 2d | 2018-10-08 A | 2018-10-09 A |  | 100% |  | 2018-10-08 | 2018-10-09 | 2d |  | 吴可帆 | 16h | 16h | 800 | 800 | 800 |
| 28 | 1.2.8 | 评审《测试需求分析报告》 | manual | 1d | 2018-10-10 A | 2018-10-10 A |  | 100% |  | 2018-10-10 | 2018-10-10 | 1d |  | 吴可帆 [20%]; 陈都 [20%]; 李婷 [20%]; 刘艳玲 [20%]; 骆宣霏 [20%]; 司乾义 [20%]; 吴佳红 [20%]; 吴赛清 [20%]; 严晓婷 [20%]; 叶苏莲 [20%]; 张涵 [20%]; 赵俊1 [20%]; 周小军 [20%] | 20.8h | 20.8h | 1,040 | 1,040 | 1,040 |
| 29 | 1.2.9 | 编写《测试计划说明书》 | manual | 2d | 2018-10-11 A | 2018-10-12 A |  | 100% |  | 2018-10-11 | 2018-10-12 | 2d |  | 吴可帆 | 16h | 16h | 800 | 800 | 800 |
| 30 | 1.2.10 | 评审《测试计划说明书》 | manual | 1d | 2018-10-15 A | 2018-10-15 A |  | 100% |  | 2018-10-15 | 2018-10-15 | 1d |  | 陈都 [20%]; 李婷 [20%]; 刘艳玲 [20%]; 骆宣霏 [20%]; 司乾义 [20%]; 吴佳红 [20%]; 吴可帆 [20%]; 吴赛清 [20%]; 严晓婷 [20%]; 叶苏莲 [20%]; 张涵 [20%]; 赵俊1 [20%]; 周小军 [20%] | 20.8h | 20.8h | 1,040 | 1,040 | 1,040 |
| 31 | 1.2.11 | 编写系统测试用例 | manual | 2d | 2018-10-16 A | 2018-10-17 A |  | 100% |  | 2018-10-16 | 2018-10-17 | 2d |  | 吴可帆 | 16h | 16h | 800 | 800 | 800 |
| 32 | 1.2.12 | 评审测试用例 | manual | 1d | 2018-10-18 A | 2018-10-18 A |  | 100% |  | 2018-10-18 | 2018-10-18 | 1d |  | 吴佳红 [30%]; 叶苏莲 [30%]; 周小军 [30%] | 24h | 24h | 1,200 | 1,200 | 1,200 |

| ID | WBS | Task | Type | Duration | Start | Finish | Predecessors | Complete | Actual start | Actual finish | Baseline start | Baseline finish | Baseline duration | Resources | Work | Actual work | Cost | Baseline cost | Actual cost |
| --- | --- | --- | --- | --- | --- | --- | --- | --- | --- | --- | --- | --- | --- | --- | --- | --- | --- | --- | --- |
| 33 | 1.2.13 | **UI** |  | 1d | 2018-09-26 A | 2018-09-26 A |  | 100% |  |  | 2018-09-26 | 2018-09-26 | 1d |  | 8h | 8h | 400 | 400 | 400 |
| 34 | 1.2.13.1 | 零件表单 | manual | 1d | 2018-09-26 A | 2018-09-26 A |  | 100% |  |  | 2018-09-26 | 2018-09-26 | 1d | 骆宣霏 | 8h | 8h | 400 | 400 | 400 |
| 35 | 1.2.14 | **模型** |  | 15d | 2018-09-20 A | 2018-10-16 A |  | 100% |  |  | 2018-09-20 | 2018-10-16 | 15d |  | 296h | 296h | 14,800 | 14,800 | 14,800 |
| 36 | 1.2.14.1 | 皮带流水线 | manual | 3d | 2018-09-20 A | 2018-09-25 A |  | 100% |  |  | 2018-09-20 | 2018-09-25 | 3d | 张涵 | 24h | 24h | 1,200 | 1,200 | 1,200 |
| 37 | 1.2.14.2 | 离心风机 | manual | 3d | 2018-09-26 A | 2018-09-28 A |  | 100% |  |  | 2018-09-26 | 2018-09-28 | 3d | 张涵 | 24h | 24h | 1,200 | 1,200 | 1,200 |
| 38 | 1.2.14.3 | 减速箱 | manual | 3d | 2018-09-29 A | 2018-10-08 A |  | 100% |  |  | 2018-09-29 | 2018-10-08 | 3d | 张涵 | 24h | 24h | 1,200 | 1,200 | 1,200 |
| 39 | 1.2.14.4 | 直齿轮 | manual | 3d | 2018-10-09 A | 2018-10-11 A |  | 100% |  |  | 2018-10-09 | 2018-10-11 | 3d | 张涵 | 24h | 24h | 1,200 | 1,200 | 1,200 |
| 40 | 1.2.14.5 | 斜齿轮减速机 | manual | 3d | 2018-10-12 A | 2018-10-16 A |  | 100% |  |  | 2018-10-12 | 2018-10-16 | 3d | 张涵 | 24h | 24h | 1,200 | 1,200 | 1,200 |
| 41 | 1.2.14.6 | 行星齿轮传动 | manual | 3d | 2018-09-20 A | 2018-09-25 A |  | 100% |  |  | 2018-09-20 | 2018-09-25 | 3d | 司乾义 | 24h | 24h | 1,200 | 1,200 | 1,200 |
| 42 | 1.2.14.7 | 行星减速机机架 | manual | 1d | 2018-09-26 A | 2018-09-26 A |  | 100% |  |  | 2018-09-26 | 2018-09-26 | 1d | 司乾义 | 8h | 8h | 400 | 400 | 400 |
| 43 | 1.2.14.8 | 内啮合齿轮 | manual | 3d | 2018-09-27 A | 2018-09-29 A |  | 100% |  |  | 2018-09-27 | 2018-09-29 | 3d | 司乾义 | 24h | 24h | 1,200 | 1,200 | 1,200 |
| 44 | 1.2.14.9 | 同步带传动 | manual | 3d | 2018-09-30 A | 2018-10-09 A |  | 100% |  |  | 2018-09-30 | 2018-10-09 | 3d | 司乾义 | 24h | 24h | 1,200 | 1,200 | 1,200 |
| 45 | 1.2.14.10 | 滚子链传动 | manual | 3d | 2018-10-10 A | 2018-10-12 A |  | 100% |  |  | 2018-10-10 | 2018-10-12 | 3d | 司乾义 | 24h | 24h | 1,200 | 1,200 | 1,200 |
| 46 | 1.2.14.11 | 齿轮齿条传动 | manual | 2d | 2018-10-12 A | 2018-10-15 A |  | 100% |  |  | 2018-10-12 | 2018-10-15 | 2d | 司乾义 | 16h | 16h | 800 | 800 | 800 |
| 47 | 1.2.14.12 | 桁架机械手 | manual | 2d | 2018-09-20 A | 2018-09-21 A |  | 100% |  |  | 2018-09-20 | 2018-09-21 | 2d | 刘艳玲 | 16h | 16h | 800 | 800 | 800 |
| 48 | 1.2.14.13 | 锥齿轮传动 | manual | 3d | 2018-09-25 A | 2018-09-27 A |  | 100% |  |  | 2018-09-25 | 2018-09-27 | 3d | 刘艳玲 | 24h | 24h | 1,200 | 1,200 | 1,200 |
| 49 | 1.2.14.14 | 蜗轮蜗杆减速机 | manual | 1d | 2018-09-28 A | 2018-09-28 A |  | 100% |  |  | 2018-09-28 | 2018-09-28 | 1d | 刘艳玲 | 8h | 8h | 400 | 400 | 400 |
| 50 | 1.2.14.15 | 新增内容 | manual | 1d | 2018-09-30 A | 2018-09-30 A |  | 100% |  |  | 2018-09-30 | 2018-09-30 | 1d | 刘艳玲 | 8h | 8h | 400 | 400 | 400 |
| 51 | 1.2.15 | **动画** |  | 16d | 2018-09-26 | 2018-10-20 |  | 100% | 2018-09-25 | 2018-10-19 | 2018-09-26 | 2018-10-20 | 16d |  | 248h | 248h | 12,400 | 12,400 | 12,400 |
| 52 | 1.2.15.1 | 平带传动原理动画 | manual | 1d | 2018-09-26 A | 2018-09-26 A | 36 | 100% |  |  | 2018-09-26 | 2018-09-26 | 1d | 严晓婷 | 8h | 8h | 400 | 400 | 400 |
| 53 | 1.2.15.2 | 皮带流水线爆炸动画 | manual | 1d | 2018-09-27 A | 2018-09-27 A | 36 | 100% |  |  | 2018-09-27 | 2018-09-27 | 1d | 严晓婷 | 8h | 8h | 400 | 400 | 400 |
| 54 | 1.2.15.3 | 皮带流水线应用动画 | manual | 1d | 2018-09-28 A | 2018-09-28 A | 36 | 100% |  |  | 2018-09-28 | 2018-09-28 | 1d | 严晓婷 | 8h | 8h | 400 | 400 | 400 |
| 55 | 1.2.15.4 | V带传动原理动画 | manual | 1d | 2018-09-29 A | 2018-09-29 A | 37 | 100% |  |  | 2018-09-29 | 2018-09-29 | 1d | 严晓婷 | 8h | 8h | 400 | 400 | 400 |
| 56 | 1.2.15.5 | 离心风机爆炸动画 | manual | 1d | 2018-09-30 A | 2018-09-30 A | 37 | 100% |  |  | 2018-09-30 | 2018-09-30 | 1d | 严晓婷 | 8h | 8h | 400 | 400 | 400 |
| 57 | 1.2.15.6 | 同步带传动原理动画 | manual | 1d | 2018-10-10 A | 2018-10-10 A | 44 | 100% |  |  | 2018-10-10 | 2018-10-10 | 1d | 严晓婷 | 8h | 8h | 400 | 400 | 400 |
| 58 | 1.2.15.7 | 同步带滑台爆炸动画 | manual | 1d | 2018-10-11 A | 2018-10-11 A | 44 | 100% |  |  | 2018-10-11 | 2018-10-11 | 1d | 严晓婷 | 8h | 8h | 400 | 400 | 400 |
| 59 | 1.2.15.8 | 同步带滑台应用动画 | manual | 1d | 2018-10-12 A | 2018-10-12 A | 44 | 100% |  |  | 2018-10-12 | 2018-10-12 | 1d | 严晓婷 | 8h | 8h | 400 | 400 | 400 |
| 60 | 1.2.15.9 | 三轴同步带模组滑台爆炸动画 | manual | 1d | 2018-10-15 A | 2018-10-15 A | 44 | 100% |  |  | 2018-10-15 | 2018-10-15 | 1d | 严晓婷 | 8h | 8h | 400 | 400 | 400 |
| 61 | 1.2.15.10 | 三轴同步带模组滑台应用动画 | manual | 1d | 2018-10-16 A | 2018-10-16 A | 44 | 100% |  |  | 2018-10-16 | 2018-10-16 | 1d | 严晓婷 | 8h | 8h | 400 | 400 | 400 |
| 62 | 1.2.15.11 | 滚子链传动爆炸动画 | manual | 1d | 2018-10-17 A | 2018-10-17 A | 45 | 100% |  |  | 2018-10-17 | 2018-10-17 | 1d | 严晓婷 [50%] | 4h | 4h | 200 | 200 | 200 |
| 63 | 1.2.15.12 | 滚子链传动原理动画 | manual | 1d | 2018-10-17 A | 2018-10-17 A | 45 | 100% |  |  | 2018-10-17 | 2018-10-17 | 1d | 严晓婷 [50%] | 4h | 4h | 200 | 200 | 200 |
| 64 | 1.2.15.13 | 链传动滚筒线爆炸动画 | manual | 1d | 2018-10-18 A | 2018-10-18 A | 45 | 100% |  |  | 2018-10-18 | 2018-10-18 | 1d | 严晓婷 | 8h | 8h | 400 | 400 | 400 |
| 65 | 1.2.15.14 | 链传动滚筒线应用动画 | manual | 1d | 2018-10-19 A | 2018-10-19 A | 45 | 100% |  |  | 2018-10-19 | 2018-10-19 | 1d | 严晓婷 | 8h | 8h | 400 | 400 | 400 |
| 66 | 1.2.15.15 | 内啮合传动原理动画 | manual | 1d | 2018-09-26 A | 2018-09-26 A | 41 | 100% |  |  | 2018-09-26 | 2018-09-26 | 1d | 陈都 | 8h | 8h | 400 | 400 | 400 |
| 67 | 1.2.15.16 | 行星齿轮传动爆炸动画 | manual | 1d | 2018-09-27 A | 2018-09-27 A | 41 | 100% |  |  | 2018-09-27 | 2018-09-27 | 1d | 陈都 | 8h | 8h | 400 | 400 | 400 |
| 68 | 1.2.15.17 | 行星齿轮传动应用动画 | manual | 1d | 2018-09-28 A | 2018-09-28 A | 41 | 100% |  |  | 2018-09-28 | 2018-09-28 | 1d | 陈都 | 8h | 8h | 400 | 400 | 400 |
| 69 | 1.2.15.18 | 行星减速机爆炸动画 | manual | 1d | 2018-09-29 A | 2018-09-29 A | 42 | 100% |  |  | 2018-09-29 | 2018-09-29 | 1d | 陈都 | 8h | 8h | 400 | 400 | 400 |
| 70 | 1.2.15.19 | 行星减速机应用动画 | manual | 1d | 2018-09-30 A | 2018-09-30 A | 42 | 100% |  |  | 2018-09-30 | 2018-09-30 | 1d | 陈都 | 8h | 8h | 400 | 400 | 400 |
| 71 | 1.2.15.20 | 齿轮齿条传动原理动画 | manual | 1d | 2018-10-17 A | 2018-10-17 A | 46 | 100% |  |  | 2018-10-17 | 2018-10-17 | 1d | 陈都 | 8h | 8h | 400 | 400 | 400 |
| 72 | 1.2.15.21 | 桁架机械手爆炸动画 | manual | 1d | 2018-09-25 A | 2018-09-25 A | 47 | 100% |  |  | 2018-09-25 | 2018-09-25 | 1d | 陈都 | 8h | 8h | 400 | 400 | 400 |
| 73 | 1.2.15.22 | 桁架机械手应用动画 | manual | 1d | 2018-10-08 A | 2018-10-08 A | 47 | 100% |  |  | 2018-10-08 | 2018-10-08 | 1d | 陈都 | 8h | 8h | 400 | 400 | 400 |
| 74 | 1.2.15.23 | 直锥齿轮传动原理动画 | manual | 1d | 2018-10-09 A | 2018-10-09 A | 48 | 100% |  |  | 2018-10-09 | 2018-10-09 | 1d | 陈都 | 8h | 8h | 400 | 400 | 400 |
| 75 | 1.2.15.24 | 直锥齿轮传动输送线爆炸动画 | manual | 1d | 2018-10-10 A | 2018-10-10 A | 48 | 100% |  |  | 2018-10-10 | 2018-10-10 | 1d | 陈都 | 8h | 8h | 400 | 400 | 400 |
| 76 | 1.2.15.25 | 直锥齿轮传动输送线应用动画 | manual | 1d | 2018-10-11 A | 2018-10-11 A | 48 | 100% |  |  | 2018-10-11 | 2018-10-11 | 1d | 陈都 | 8h | 8h | 400 | 400 | 400 |
| 77 | 1.2.15.26 | 蜗轮蜗杆传动原理动画 | manual | 1d | 2018-10-12 A | 2018-10-12 A | 49 | 100% |  |  | 2018-10-12 | 2018-10-12 | 1d | 陈都 | 8h | 8h | 400 | 400 | 400 |
| 78 | 1.2.15.27 | 蜗轮蜗杆减速机爆炸动画 | manual | 1d | 2018-10-15 A | 2018-10-15 A | 49 | 100% |  |  | 2018-10-15 | 2018-10-15 | 1d | 陈都 | 8h | 8h | 400 | 400 | 400 |
| 79 | 1.2.15.28 | 蜗轮蜗杆减速机应用动画 | manual | 1d | 2018-10-16 A | 2018-10-16 A | 49 | 100% |  |  | 2018-10-16 | 2018-10-16 | 1d | 陈都 | 8h | 8h | 400 | 400 | 400 |
| 80 | 1.2.15.29 | 传动比/转柜动画 | manual | 1d | 2018-10-17 A | 2018-10-17 A | 38, 39 | 100% |  |  | 2018-10-17 | 2018-10-17 | 1d | 陈都 [50%] | 4h | 4h | 200 | 200 | 200 |
| 81 | 1.2.15.30 | 直齿轮传动原理动画 | manual | 1d | 2018-10-17 A | 2018-10-17 A | 38, 39 | 100% |  |  | 2018-10-17 | 2018-10-17 | 1d | 陈都 [50%] | 4h | 4h | 200 | 200 | 200 |
| 82 | 1.2.15.31 | 二级直齿减速机爆炸动画 | manual | 1d | 2018-10-18 A | 2018-10-18 A | 38, 39 | 100% |  |  | 2018-10-18 | 2018-10-18 | 1d | 陈都 [50%] | 4h | 4h | 200 | 200 | 200 |
| 83 | 1.2.15.32 | 二级直齿减速机应用动画 | manual | 1d | 2018-10-18 A | 2018-10-18 A | 38, 39 | 100% |  |  | 2018-10-18 | 2018-10-18 | 1d | 陈都 [50%] | 4h | 4h | 200 | 200 | 200 |
| 84 | 1.2.15.33 | 斜齿轮传动原理动画 | manual | 1d | 2018-10-19 A | 2018-10-19 A | 40 | 100% |  |  | 2018-10-19 | 2018-10-19 | 1d | 陈都 [50%] | 4h | 4h | 200 | 200 | 200 |
| 85 | 1.2.15.34 | 爆炸动画斜齿轮减速机 | manual | 1d | 2018-10-19 A | 2018-10-19 A | 40 | 100% |  |  | 2018-10-19 | 2018-10-19 | 1d | 陈都 [50%] | 4h | 4h | 200 | 200 | 200 |
| 86 | 1.2.15.35 | 斜齿轮减速机应用动画 | manual | 1d | 2018-10-19 A | 2018-10-19 A | 40 | 100% |  |  | 2018-10-19 | 2018-10-19 | 1d | 陈都 | 8h | 8h | 400 | 400 | 400 |

| ID | WBS | Task | Type | Duration | Start | Finish | Complete | Baseline start | Baseline finish | Baseline duration | Constraint | Resources | Work | Actual work | Cost | Baseline cost | Actual cost |
| --- | --- | --- | --- | --- | --- | --- | --- | --- | --- | --- | --- | --- | --- | --- | --- | --- | --- |
| 87 | 1.2.16 | **特效** |  | 1d | 2018-09-26 A | 2018-09-26 A | 100% | 2018-09-26 | 2018-09-26 | 1d |  |  | 8h | 8h | 400 | 400 | 400 |
| 88 | 1.2.16.1 | 离心风机气流特效 | manual | 1d | 2018-09-26 A | 2018-09-26 A | 100% | 2018-09-26 | 2018-09-26 | 1d |  | 张涵 | 8h | 8h | 400 | 400 | 400 |
| 89 | 1.2.17 | **编码** |  | 14d | 2018-09-27 A | 2018-10-19 A | 100% | 2018-09-27 | 2018-10-19 | 14d |  |  | 216h | 216h | 10,800 | 10,800 | 10,800 |
| 90 | 1.2.17.1 | 按钮UI搭建，数据列表配置 | manual | 1d | 2018-09-27 A | 2018-09-27 A | 100% | 2018-09-27 | 2018-09-27 | 1d |  | 吴佳红 | 8h | 8h | 400 | 400 | 400 |
| 91 | 1.2.17.2 | 模型动画验证和切片，预制体制作 | manual | 2d | 2018-09-28 A | 2018-09-29 A | 100% | 2018-09-28 | 2018-09-29 | 2d |  | 吴佳红 | 16h | 16h | 800 | 800 | 800 |
| 92 | 1.2.17.3 | 按钮切换的交互状态变化，鼠标和射线都可操作 | manual | 1d | 2018-09-27 A | 2018-09-27 A | 100% | 2018-09-27 | 2018-09-27 | 1d |  | 周小军 | 8h | 8h | 400 | 400 | 400 |
| 93 | 1.2.17.4 | 按钮状态监听与事件分发 | manual | 1d | 2018-09-28 A | 2018-09-28 A | 100% | 2018-09-28 | 2018-09-28 | 1d |  | 周小军 | 8h | 8h | 400 | 400 | 400 |
| 94 | 1.2.17.5 | 监听事件，执行剖切，原理，爆炸，单体，整体逻辑 | manual | 3d | 2018-09-30 A | 2018-10-09 A | 100% | 2018-09-30 | 2018-10-09 | 3d |  | 吴佳红 | 24h | 24h | 1,200 | 1,200 | 1,200 |
| 95 | 1.2.17.6 | 状态切换的数据，模型，动画的回复 | manual | 2d | 2018-10-10 A | 2018-10-11 A | 100% | 2018-10-10 | 2018-10-11 | 2d |  | 吴佳红 | 16h | 16h | 800 | 800 | 800 |
| 96 | 1.2.17.7 | 异常操作，特殊情况处理（播动画到某帧时放大模型） | manual | 2d | 2018-09-29 A | 2018-09-30 A | 100% | 2018-09-29 | 2018-09-30 | 2d |  | 周小军 | 16h | 16h | 800 | 800 | 800 |
| 97 | 1.2.17.8 | 悬浮时零件名配置与读取的逻辑 | manual | 2d | 2018-10-08 A | 2018-10-09 A | 100% | 2018-10-08 | 2018-10-09 | 2d |  | 周小军 | 16h | 16h | 800 | 800 | 800 |
| 98 | 1.2.17.9 | 透明及描边红色逻辑编写，及响应事件触发（有透明和半透明） | manual | 1d | 2018-10-10 A | 2018-10-10 A | 100% | 2018-10-10 | 2018-10-10 | 1d |  | 周小军 | 8h | 8h | 400 | 400 | 400 |
| 99 | 1.2.17.10 | 特效控制和uv控制 | manual | 2d | 2018-10-11 A | 2018-10-12 A | 100% | 2018-10-11 | 2018-10-12 | 2d |  | 周小军 | 16h | 16h | 800 | 800 | 800 |
| 100 | 1.2.17.11 | ppt对应节点截图和命名 | manual | 1d | 2018-10-12 A | 2018-10-12 A | 100% | 2018-10-12 | 2018-10-12 | 1d |  | 吴佳红 | 8h | 8h | 400 | 400 | 400 |
| 101 | 1.2.17.12 | 节点预制点，不同按钮状态模型的摆放 | manual | 2d | 2018-10-15 A | 2018-10-16 A | 100% | 2018-10-15 | 2018-10-16 | 2d |  | 吴佳红 | 16h | 16h | 800 | 800 | 800 |
| 102 | 1.2.17.13 | 基于单体和整体区别的通用缩放，拖拽，复位控制 | manual | 1d | 2018-10-15 A | 2018-10-15 A | 100% | 2018-10-15 | 2018-10-15 | 1d |  | 周小军 | 8h | 8h | 400 | 400 | 400 |
| 103 | 1.2.17.14 | 字符显示控制 | manual | 1d | 2018-10-16 A | 2018-10-16 A | 100% | 2018-10-16 | 2018-10-16 | 1d |  | 周小军 | 8h | 8h | 400 | 400 | 400 |
| 104 | 1.2.17.15 | 滚子链爆炸时零件和零件名列表互选高亮，剖切时可以从零件菜单名中选择 | manual | 1d | 2018-10-17 A | 2018-10-17 A | 100% | 2018-10-17 | 2018-10-17 | 1d |  | 周小军 | 8h | 8h | 400 | 400 | 400 |
| 105 | 1.2.17.16 | 整合联调 | manual | 2d | 2018-10-18 A | 2018-10-19 A | 100% | 2018-10-18 | 2018-10-19 | 2d |  | 吴佳红; 周小军 | 32h | 32h | 1,600 | 1,600 | 1,600 |
| 106 | 1.2.18 | **代码走查/代码评审** |  | 1d | 2018-10-10 A | 2018-10-10 A | 100% | 2018-10-10 | 2018-10-10 | 1d |  |  | 4.8h | 4.8h | 240 | 240 | 240 |
| 107 | 1.2.18.1 | 代码走查/代码评审 1 |  | 1d | 2018-10-10 A | 2018-10-10 A | 100% | 2018-10-10 | 2018-10-10 | 1d | start no earlier than 2018-10-10 | 周小军 [20%]; 吴佳红 [20%]; 叶苏莲 [20%] | 4.8h | 4.8h | 240 | 240 | 240 |
| 108 | 1.2.19 | 度量分析与预测 | manual | 1d | 2018-10-22 A | 2018-10-22 A | 100% | 2018-10-22 | 2018-10-22 | 1d |  | 叶苏莲 [80%] | 8h | 8h | 400 | 400 | 400 |
| 109 | 1.2.20 | **准入测试** |  | 5d | 2018-10-22 A | 2018-10-26 A | 100% | 2018-10-22 | 2018-10-26 | 5d |  |  | 2.4h | 2.4h | 120 | 120 | 120 |
| 110 | 1.2.20.1 | 第一轮 | manual | 1d | 2018-10-22 A | 2018-10-22 A | 100% | 2018-10-22 | 2018-10-22 | 1d |  | 吴可帆 [10%] | 0.8h | 0.8h | 40 | 40 | 40 |
| 111 | 1.2.20.2 | 第二轮 | manual | 1d | 2018-10-24 A | 2018-10-24 A | 100% | 2018-10-24 | 2018-10-24 | 1d |  | 吴可帆 [10%] | 0.8h | 0.8h | 40 | 40 | 40 |
| 112 | 1.2.20.3 | 第三轮 | manual | 1d | 2018-10-26 A | 2018-10-26 A | 100% | 2018-10-26 | 2018-10-26 | 1d |  | 吴可帆 [10%] | 0.8h | 0.8h | 40 | 40 | 40 |

| ID | WBS | Task | Type | Duration | Start | Finish | Predecessors | Complete | Baseline start | Baseline finish | Baseline duration | Constraint | Resources | Work | Actual work | Cost | Baseline cost | Actual cost |
| --- | --- | --- | --- | --- | --- | --- | --- | --- | --- | --- | --- | --- | --- | --- | --- | --- | --- | --- |
| 113 | 1.2.21 | **功能测试** |  | 5d | 2018-10-22 A | 2018-10-26 A |  | 100% | 2018-10-22 | 2018-10-26 | 5d |  |  | 32h | 32h | 1,600 | 1,600 | 1,600 |
| 114 | 1.2.21.1 | 第一轮 | manual | 2d | 2018-10-22 A | 2018-10-23 A |  | 100% | 2018-10-22 | 2018-10-23 | 2d |  | 吴可帆 [80%] | 12.8h | 12.8h | 640 | 640 | 640 |
| 115 | 1.2.21.2 | 第二轮 | manual | 2d | 2018-10-24 A | 2018-10-25 A |  | 100% | 2018-10-24 | 2018-10-25 | 2d |  | 吴可帆 [80%] | 12.8h | 12.8h | 640 | 640 | 640 |
| 116 | 1.2.21.3 | 第三轮 | manual | 1d | 2018-10-26 A | 2018-10-26 A |  | 100% | 2018-10-26 | 2018-10-26 | 1d |  | 吴可帆 [80%] | 6.4h | 6.4h | 320 | 320 | 320 |
| 117 | 1.2.22 | **BUG修复** |  | 5d | 2018-10-22 A | 2018-10-26 A |  | 100% | 2018-10-22 | 2018-10-26 | 5d |  |  | 80h | 80h | 4,000 | 4,000 | 4,000 |
| 118 | 1.2.22.1 | 第一轮修复 |  | 2d | 2018-10-22 A | 2018-10-23 A |  | 100% | 2018-10-22 | 2018-10-23 | 2d | start no earlier than 2018-10-22 | 吴佳红; 周小军 | 32h | 32h | 1,600 | 1,600 | 1,600 |
| 119 | 1.2.22.2 | 第二轮修复 |  | 2d | 2018-10-24 A | 2018-10-25 A | 118 | 100% | 2018-10-24 | 2018-10-25 | 2d | start no earlier than 2018-10-24 | 吴佳红; 周小军 | 32h | 32h | 1,600 | 1,600 | 1,600 |
| 120 | 1.2.22.3 | 第三轮修复 |  | 1d | 2018-10-26 A | 2018-10-26 A | 119 | 100% | 2018-10-26 | 2018-10-26 | 1d | start no earlier than 2018-10-26 | 吴佳红; 周小军 | 16h | 16h | 800 | 800 | 800 |
| 121 | 1.2.23 | **回归测试** |  | 4d | 2018-10-24 A | 2018-10-29 A |  | 100% | 2018-10-24 | 2018-10-29 | 4d |  |  | 2.4h | 2.4h | 120 | 120 | 120 |
| 122 | 1.2.23.1 | 第一轮回归 |  | 1d | 2018-10-24 A | 2018-10-24 A |  | 100% | 2018-10-24 | 2018-10-24 | 1d | start no earlier than 2018-10-24 | 吴可帆 [10%] | 0.8h | 0.8h | 40 | 40 | 40 |
| 123 | 1.2.23.2 | 第二轮回归 |  | 1d | 2018-10-26 A | 2018-10-26 A |  | 100% | 2018-10-26 | 2018-10-26 | 1d | start no earlier than 2018-10-26 | 吴可帆 [10%] | 0.8h | 0.8h | 40 | 40 | 40 |
| 124 | 1.2.23.3 | 第三轮回归 |  | 1d | 2018-10-29 A | 2018-10-29 A | 123 | 100% | 2018-10-29 | 2018-10-29 | 1d | start no earlier than 2018-10-29 | 吴可帆 [10%] | 0.8h | 0.8h | 40 | 40 | 40 |
| 125 | 1.2.24 | 编写《用户及客服手册》 | manual | 2d | 2018-10-22 A | 2018-10-23 A |  | 100% | 2018-10-22 | 2018-10-23 | 2d |  | 赵俊1 | 16h | 16h | 800 | 800 | 800 |
| 126 | 1.2.25 | 评审《用户及客服手册》 | manual | 1d | 2018-10-24 A | 2018-10-24 A |  | 100% | 2018-10-24 | 2018-10-24 | 1d |  | 吴佳红 [20%]; 陈都 [20%]; 李婷 [20%]; 刘艳玲 [20%]; 骆宣霏 [20%]; 司乾义 [20%]; 吴可帆 [20%]; 吴赛清 [20%]; 严晓婷 [20%]; 叶苏莲 [20%]; 张涵 [20%]; 赵俊1 [20%]; 周小军 [20%] | 20.8h | 20.8h | 1,040 | 1,040 | 1,040 |
| 127 | 1.2.26 | 编写《安装部署及运维手册》 | manual | 2d | 2018-10-22 A | 2018-10-23 A |  | 100% | 2018-10-22 | 2018-10-23 | 2d |  | 叶苏莲 | 16h | 16h | 800 | 800 | 800 |
| 128 | 1.2.27 | 评审《安装部署及运维手册》 | manual | 1d | 2018-10-24 A | 2018-10-24 A |  | 100% | 2018-10-24 | 2018-10-24 | 1d |  | 吴佳红 [20%]; 陈都 [20%]; 李婷 [20%]; 刘艳玲 [20%]; 骆宣霏 [20%]; 司乾义 [20%]; 吴可帆 [20%]; 吴赛清 [20%]; 严晓婷 [20%]; 叶苏莲 [20%]; 张涵 [20%]; 赵俊1 [20%]; 周小军 [20%] | 20.8h | 20.8h | 1,040 | 1,040 | 1,040 |
| 129 | 1.2.28 | 文档测试 | manual | 1d | 2018-10-29 A | 2018-10-29 A |  | 100% | 2018-10-29 | 2018-10-29 | 1d |  | 吴可帆 [10%] | 0.8h | 0.8h | 40 | 40 | 40 |
| 130 | 1.2.29 | 编写《测试报告》 | manual | 2d | 2018-10-29 A | 2018-10-30 A |  | 100% | 2018-10-29 | 2018-10-30 | 2d |  | 吴可帆 [80%] | 12.8h | 12.8h | 640 | 640 | 640 |
| 131 | 1.2.30 | 评审《测试报告》 | manual | 1d | 2018-10-30 A | 2018-10-30 A |  | 100% | 2018-10-30 | 2018-10-30 | 1d |  | 吴可帆 [10%]; 吴佳红 [10%]; 叶苏莲 [10%]; 赵俊1 [10%]; 周小军 [10%] | 4h | 4h | 200 | 200 | 200 |
| 132 | 1.2.31 | 产品验收测试 |  | 1d? | 2018-10-29 A | 2018-10-29 A |  | 100% | 2018-10-29 | 2018-10-29 | 1d? | start no earlier than 2018-10-29 | 赵俊1 | 8h | 8h | 400 | 400 | 400 |
| 133 | 1.2.32 | 编写《产品验收报告》 |  | 1d | 2018-10-30 A | 2018-10-30 A | 132 | 100% | 2018-10-30 | 2018-10-30 | 1d |  | 赵俊1 [50%] | 4h | 4h | 200 | 200 | 200 |
| 134 | 1.2.33 | 项目总结 | manual | 1d | 2018-10-30 A | 2018-10-30 A |  | 100% | 2018-10-30 | 2018-10-30 | 1d |  | 叶苏莲 [20%] | 1.6h | 1.6h | 80 | 80 | 80 |
| 135 | 1.2.34 | 编写《项目总结报告》 | manual | 1d | 2018-10-30 A | 2018-10-30 A |  | 100% | 2018-10-30 | 2018-10-30 | 1d |  | 叶苏莲 [20%] | 1.6h | 1.6h | 80 | 80 | 80 |
| 136 | 1.2.35 | 项目结项审批 | manual | 2d | 2018-10-30 A | 2018-10-31 A |  | 100% | 2018-10-30 | 2018-10-31 | 2d |  | 叶苏莲 [50%] | 8h | 8h | 400 | 400 | 400 |
| 137 | 1.2.36 | 建立变更基线 | manual | 1d | 2018-10-19 A | 2018-10-19 A |  | 100% | 2018-10-19 | 2018-10-19 | 1d |  | 李婷 [20%] | 1.6h | 1.6h | 80 | 80 | 80 |
| 138 | 1.2.37 | 建立产品发布基线 | manual | 1d | 2018-10-31 A | 2018-10-31 A |  | 100% | 2018-10-31 | 2018-10-31 | 1d |  | 李婷 [20%] | 1.6h | 1.6h | 80 | 80 | 80 |

| ID | WBS | Task | Type | Duration | Start | Finish | Complete | Actual start | Baseline start | Baseline finish | Baseline duration | Constraint | Resources | Work | Actual work | Cost | Baseline cost | Actual cost |
| --- | --- | --- | --- | --- | --- | --- | --- | --- | --- | --- | --- | --- | --- | --- | --- | --- | --- | --- |
| 139 | 1.3 | **项目管理、质量管理、监控与跟踪、度量收集** |  | 20d | 2018-09-29 | 2018-10-30 A | 100% | 2014-11-28 | 2018-09-29 | 2018-10-30 | 20d |  |  | 122.4h | 122.4h | 6,120 | 6,120 | 6,120 |
| 140 | 1.3.1 | **风险管理** |  | 17d | 2018-09-30 A | 2018-10-26 A | 100% |  | 2018-09-30 | 2018-10-26 | 17d |  |  | 6.4h | 6.4h | 320 | 320 | 320 |
| 141 | 1.3.1.1 | 风险管理 1 |  | 1d | 2018-09-30 A | 2018-09-30 A | 100% |  | 2018-09-30 | 2018-09-30 | 1d | start no earlier than 2018-09-30 | 叶苏莲 [20%] | 1.6h | 1.6h | 80 | 80 | 80 |
| 142 | 1.3.1.2 | 风险管理 2 |  | 1d | 2018-10-12 A | 2018-10-12 A | 100% |  | 2018-10-12 | 2018-10-12 | 1d | start no earlier than 2018-10-12 | 叶苏莲 [20%] | 1.6h | 1.6h | 80 | 80 | 80 |
| 143 | 1.3.1.3 | 风险管理 3 |  | 1d | 2018-10-19 A | 2018-10-19 A | 100% |  | 2018-10-19 | 2018-10-19 | 1d | start no earlier than 2018-10-19 | 叶苏莲 [20%] | 1.6h | 1.6h | 80 | 80 | 80 |
| 144 | 1.3.1.4 | 风险管理 4 |  | 1d | 2018-10-26 A | 2018-10-26 A | 100% |  | 2018-10-26 | 2018-10-26 | 1d | start no earlier than 2018-10-26 | 叶苏莲 [20%] | 1.6h | 1.6h | 80 | 80 | 80 |
| 145 | 1.3.2 | **项目周报** |  | 17d | 2018-09-30 A | 2018-10-26 A | 100% |  | 2018-09-30 | 2018-10-26 | 17d |  |  | 6.4h | 6.4h | 320 | 320 | 320 |
| 146 | 1.3.2.1 | 项目周报 1 |  | 1d | 2018-09-30 A | 2018-09-30 A | 100% |  | 2018-09-30 | 2018-09-30 | 1d | start no earlier than 2018-09-30 | 叶苏莲 [20%] | 1.6h | 1.6h | 80 | 80 | 80 |
| 147 | 1.3.2.2 | 项目周报 2 |  | 1d | 2018-10-12 A | 2018-10-12 A | 100% |  | 2018-10-12 | 2018-10-12 | 1d | start no earlier than 2018-10-12 | 叶苏莲 [20%] | 1.6h | 1.6h | 80 | 80 | 80 |
| 148 | 1.3.2.3 | 项目周报 3 |  | 1d | 2018-10-19 A | 2018-10-19 A | 100% |  | 2018-10-19 | 2018-10-19 | 1d | start no earlier than 2018-10-19 | 叶苏莲 [20%] | 1.6h | 1.6h | 80 | 80 | 80 |
| 149 | 1.3.2.4 | 项目周报 4 |  | 1d | 2018-10-26 A | 2018-10-26 A | 100% |  | 2018-10-26 | 2018-10-26 | 1d | start no earlier than 2018-10-26 | 叶苏莲 [20%] | 1.6h | 1.6h | 80 | 80 | 80 |
| 150 | 1.3.3 | **项目例会** |  | 17d | 2018-09-30 A | 2018-10-26 A | 100% |  | 2018-09-30 | 2018-10-26 | 17d |  |  | 83.2h | 83.2h | 4,160 | 4,160 | 4,160 |
| 151 | 1.3.3.1 | 项目例会 1 |  | 1d | 2018-09-30 A | 2018-09-30 A | 100% |  | 2018-09-30 | 2018-09-30 | 1d | start no earlier than 2018-09-30 | 吴佳红 [20%]; 陈都 [20%]; 李婷 [20%]; 刘艳玲 [20%]; 骆宣霏 [20%]; 司乾义 [20%]; 吴可帆 [20%]; 吴赛清 [20%]; 严晓婷 [20%]; 叶苏莲 [20%]; 张涵 [20%]; 赵俊1 [20%]; 周小军 [20%] | 20.8h | 20.8h | 1,040 | 1,040 | 1,040 |
| 152 | 1.3.3.2 | 项目例会 2 |  | 1d | 2018-10-12 A | 2018-10-12 A | 100% |  | 2018-10-12 | 2018-10-12 | 1d | start no earlier than 2018-10-12 | 吴佳红 [20%]; 陈都 [20%]; 李婷 [20%]; 刘艳玲 [20%]; 骆宣霏 [20%]; 司乾义 [20%]; 吴可帆 [20%]; 吴赛清 [20%]; 严晓婷 [20%]; 叶苏莲 [20%]; 张涵 [20%]; 赵俊1 [20%]; 周小军 [20%] | 20.8h | 20.8h | 1,040 | 1,040 | 1,040 |
| 153 | 1.3.3.3 | 项目例会 3 |  | 1d | 2018-10-19 A | 2018-10-19 A | 100% |  | 2018-10-19 | 2018-10-19 | 1d | start no earlier than 2018-10-19 | 吴佳红 [20%]; 陈都 [20%]; 李婷 [20%]; 刘艳玲 [20%]; 骆宣霏 [20%]; 司乾义 [20%]; 吴可帆 [20%]; 吴赛清 [20%]; 严晓婷 [20%]; 叶苏莲 [20%]; 张涵 [20%]; 赵俊1 [20%]; 周小军 [20%] | 20.8h | 20.8h | 1,040 | 1,040 | 1,040 |
| 154 | 1.3.3.4 | 项目例会 4 |  | 1d | 2018-10-26 A | 2018-10-26 A | 100% |  | 2018-10-26 | 2018-10-26 | 1d | start no earlier than 2018-10-26 | 吴佳红 [20%]; 陈都 [20%]; 李婷 [20%]; 刘艳玲 [20%]; 骆宣霏 [20%]; 司乾义 [20%]; 吴可帆 [20%]; 吴赛清 [20%]; 严晓婷 [20%]; 叶苏莲 [20%]; 张涵 [20%]; 赵俊1 [20%]; 周小军 [20%] | 20.8h | 20.8h | 1,040 | 1,040 | 1,040 |
| 155 | 1.3.4 | **QA审计** |  | 17d | 2018-09-30 A | 2018-10-26 A | 100% |  | 2018-09-30 | 2018-10-26 | 17d |  |  | 6.4h | 6.4h | 320 | 320 | 320 |
| 156 | 1.3.4.1 | QA审计 1 |  | 1d | 2018-09-30 A | 2018-09-30 A | 100% |  | 2018-09-30 | 2018-09-30 | 1d | start no earlier than 2018-09-30 | 吴赛清 [20%] | 1.6h | 1.6h | 80 | 80 | 80 |
| 157 | 1.3.4.2 | QA审计 2 |  | 1d | 2018-10-12 A | 2018-10-12 A | 100% |  | 2018-10-12 | 2018-10-12 | 1d | start no earlier than 2018-10-12 | 吴赛清 [20%] | 1.6h | 1.6h | 80 | 80 | 80 |
| 158 | 1.3.4.3 | QA审计 3 |  | 1d | 2018-10-19 A | 2018-10-19 A | 100% |  | 2018-10-19 | 2018-10-19 | 1d | start no earlier than 2018-10-19 | 吴赛清 [20%] | 1.6h | 1.6h | 80 | 80 | 80 |
| 159 | 1.3.4.4 | QA审计 4 |  | 1d | 2018-10-26 A | 2018-10-26 A | 100% |  | 2018-10-26 | 2018-10-26 | 1d | start no earlier than 2018-10-26 | 吴赛清 [20%] | 1.6h | 1.6h | 80 | 80 | 80 |
| 160 | 1.3.5 | **度量数据收集** |  | 20d | 2018-09-29 A | 2018-10-30 A | 100% |  | 2018-09-29 | 2018-10-30 | 20d |  |  | 12h | 12h | 600 | 600 | 600 |
| 161 | 1.3.5.1 | 度量数据收集 1 | manual | 1d | 2018-09-29 A | 2018-09-29 A | 100% |  | 2018-09-29 | 2018-09-29 | 1d | start no earlier than 2018-09-29 | 叶苏莲 [30%] | 2.4h | 2.4h | 120 | 120 | 120 |
| 162 | 1.3.5.2 | 度量数据收集 2 | manual | 1d | 2018-10-11 A | 2018-10-11 A | 100% |  | 2018-10-11 | 2018-10-11 | 1d | start no earlier than 2018-10-11 | 叶苏莲 [30%] | 2.4h | 2.4h | 120 | 120 | 120 |
| 163 | 1.3.5.3 | 度量数据收集 3 | manual | 1d | 2018-10-18 A | 2018-10-18 A | 100% |  | 2018-10-18 | 2018-10-18 | 1d | start no earlier than 2018-10-18 | 叶苏莲 [30%] | 2.4h | 2.4h | 120 | 120 | 120 |
| 164 | 1.3.5.4 | 度量数据收集 4 | manual | 1d | 2018-10-25 A | 2018-10-25 A | 100% |  | 2018-10-25 | 2018-10-25 | 1d | start no earlier than 2018-10-25 | 叶苏莲 [30%] | 2.4h | 2.4h | 120 | 120 | 120 |
| 165 | 1.3.5.5 | 度量数据收集 5 | manual | 1d | 2018-10-30 A | 2018-10-30 A | 100% |  | 2018-10-30 | 2018-10-30 | 1d | start no earlier than 2018-10-30 | 叶苏莲 [30%] | 2.4h | 2.4h | 120 | 120 | 120 |

| ID | WBS | Task | Type | Duration | Start | Finish | Complete | Actual start | Baseline start | Baseline finish | Baseline duration | Constraint | Resources | Work | Actual work | Cost | Baseline cost | Actual cost |
| --- | --- | --- | --- | --- | --- | --- | --- | --- | --- | --- | --- | --- | --- | --- | --- | --- | --- | --- |
| 166 | 1.3.6 | **更新需求跟踪矩阵** |  | 19d | 2018-09-30 | 2018-10-30 A | 100% | 2014-11-28 | 2018-09-30 | 2018-10-30 | 19d |  |  | 8h | 8h | 400 | 400 | 400 |
| 167 | 1.3.6.1 | 更新需求跟踪矩阵1 | manual | 1d | 2018-09-30 A | 2018-09-30 A | 100% |  | 2018-09-30 | 2018-09-30 | 1d | start no earlier than 2018-09-30 | 叶苏莲 [20%] | 1.6h | 1.6h | 80 | 80 | 80 |
| 168 | 1.3.6.2 | 更新需求跟踪矩阵2 | manual | 1d | 2018-10-11 A | 2018-10-11 A | 100% |  | 2018-10-11 | 2018-10-11 | 1d | start no earlier than 2018-10-11 | 叶苏莲 [20%] | 1.6h | 1.6h | 80 | 80 | 80 |
| 169 | 1.3.6.3 | 更新需求跟踪矩阵3 | manual | 1d | 2018-10-18 A | 2018-10-18 A | 100% |  | 2018-10-18 | 2018-10-18 | 1d | start no earlier than 2018-10-18 | 叶苏莲 [20%] | 1.6h | 1.6h | 80 | 80 | 80 |
| 170 | 1.3.6.4 | 更新需求跟踪矩阵4 | manual | 1d | 2018-10-25 A | 2018-10-25 A | 100% |  | 2018-10-25 | 2018-10-25 | 1d | start no earlier than 2018-10-25 | 叶苏莲 [20%] | 1.6h | 1.6h | 80 | 80 | 80 |
| 171 | 1.3.6.5 | 更新需求跟踪矩阵5 | manual | 1d | 2018-10-30 A | 2018-10-30 A | 100% |  | 2018-10-30 | 2018-10-30 | 1d | start no earlier than 2018-10-30 | 叶苏莲 [20%] | 1.6h | 1.6h | 80 | 80 | 80 |
| 172 | 1.3.6.6 | 更新需求跟踪矩阵 6 | manual | 1d | 2014-11-28 A | 2014-11-28 A | 100% |  |  |  |  | start no earlier than 2014-11-28 |  |  |  |  |  |  |
